# CREACION DEL SISTEMA DE AGUA POTABLE Y SANEAMIENTO DE CC.NN. PITOCUNA

Schedule from MS Project XML, 2026-05-01 to 2026-07-29, costs in S.

## Calendars

- CRONOGRAMA PITOCUNA: Mon-Sun 08:00-13:00, 15:00-18:00.

## Schedule

| ID | WBS | Task | Type | Duration | Start | Finish | Predecessors | Total slack | Cost |
| --- | --- | --- | --- | --- | --- | --- | --- | --- | --- |
| 1 | 1 | INICIO DE OBRA | milestone | 0d | 2026-05-01 | 2026-05-01 |  |  |  |
| 2 | 2 | **SISTEMA DE AGUA POTABLE** |  | 63d? | 2026-05-01 | 2026-07-02 |  |  | 213,646.54 |
| 3 | 2.1 | **OBRAS PROVISIONALES** |  | 1d? | 2026-05-01 | 2026-05-01 |  |  | 3,593.29 |
| 4 | 2.1.1 | CARTEL DE IDENTIFICACION DE OBRA DE 4.80m x 3.60m |  | 1d? | 2026-05-01 | 2026-05-01 | 1 |  | 1,410.29 |
| 5 | 2.1.2 | MOVILIZACION Y DESMOVILIZACION DE EQUIPOS Y MAQUINARIA PARA LA OBRA |  | 1d? | 2026-05-01 | 2026-05-01 | 4SS |  | 2,183 |
| 6 | 2.2 | **CAPTACION TIPO LADERA PROSPERO - CONTRUCCION (01 UND)** |  | 15d | 2026-05-02 | 2026-05-16 |  |  | 20,410.46 |
| 7 | 2.2.1 | **ESTRUCTURAS** |  | 12d | 2026-05-02 | 2026-05-13 |  |  | 6,037.11 |
| 8 | 2.2.1.1 | **TRABAJOS PRELIMINARES** |  | 10d | 2026-05-02 | 2026-05-11 |  |  | 192.55 |
| 9 | 2.2.1.1.1 | LIMPIEZA DE TERRENO Y DESBROCE DE TERRENO MANUAL |  | 1d | 2026-05-02 | 2026-05-02 | 5 |  | 62.6 |
| 10 | 2.2.1.1.2 | TRAZO Y REPLANTEO PRELIMINAR |  | 1d | 2026-05-03 | 2026-05-03 | 9 |  | 105.19 |
| 11 | 2.2.1.1.3 | TRAZO Y REPLANTEO DURANTE EL PROCESO |  | 9d | 2026-05-03 | 2026-05-11 | 9 | 79d | 24.76 |
| 12 | 2.2.1.2 | **MOVIMIENTO DE TIERRAS** |  | 10d | 2026-05-04 | 2026-05-13 |  |  | 1,439.18 |
| 13 | 2.2.1.2.1 | EXCAVACION MANUAL EN TERRENO NORMAL |  | 1d | 2026-05-04 | 2026-05-04 | 10 |  | 797.94 |
| 14 | 2.2.1.2.2 | NIVELACION INTERIOR Y APISONADO (MANUAL) |  | 1d | 2026-05-04 | 2026-05-04 | 13SS |  | 32.19 |
| 15 | 2.2.1.2.3 | RELLENO COMPACTADO CON MATERIAL PROPIO SELECCIONADO |  | 1d | 2026-05-06 | 2026-05-06 | 18 | 84d | 196.34 |
| 16 | 2.2.1.2.4 | ACARREO DE MAT. PARA RELLENO EN CAPTACIÓN |  | 1d | 2026-05-13 | 2026-05-13 | 25 | 77d | 412.71 |
| 17 | 2.2.1.3 | **OBRAS DE CONCRETO SIMPLE** |  | 2d | 2026-05-05 | 2026-05-06 |  |  | 828.86 |
| 18 | 2.2.1.3.1 | CONCRETO SIMPLE F'C=100 KG/CM2, PARA SOLADO e=10cm |  | 1d | 2026-05-05 | 2026-05-05 | 14 |  | 179.28 |
| 19 | 2.2.1.3.2 | CONCRETO f'c=140 kg/cm2 + 30 %PM |  | 1d | 2026-05-06 | 2026-05-06 | 18 | 84d | 640.59 |
| 20 | 2.2.1.3.3 | CONCRETO f'c=140 kg/cm2 EN DADOS |  | 1d | 2026-05-06 | 2026-05-06 | 18 | 84d | 8.99 |
| 21 | 2.2.1.4 | **OBRAS DE CONCRETO ARMADO** |  | 7d | 2026-05-06 | 2026-05-12 |  |  | 3,576.52 |
| 22 | 2.2.1.4.1 | CONCRETO F'C=210 KG/CM2 PARA CIMENTACIÓN |  | 1d | 2026-05-07 | 2026-05-07 | 28 |  | 334.55 |
| 23 | 2.2.1.4.2 | CONCRETO F'C=210 KG/CM2 PARA MUROS |  | 1d | 2026-05-11 | 2026-05-11 | 26 | 77d | 663.27 |
| 24 | 2.2.1.4.3 | CONCRETO F'C=210 KG/CM2 PARA LOSA DE FONDO |  | 1d | 2026-05-09 | 2026-05-09 | 27 | 77d | 111.52 |
| 25 | 2.2.1.4.4 | CONCRETO F'C=210 KG/CM2 PARA LOSA SUPERIOR |  | 1d | 2026-05-12 | 2026-05-12 | 23 | 77d | 384.74 |
| 26 | 2.2.1.4.5 | ENCOFRADO Y DESENCOFRADO PARA MUROS |  | 1d | 2026-05-10 | 2026-05-10 | 24 | 77d | 782.72 |
| 27 | 2.2.1.4.6 | ENCOFRADO Y DESENCOFRADO PARA LOSAS |  | 1d | 2026-05-08 | 2026-05-08 | 22 | 77d | 254.33 |
| 28 | 2.2.1.4.7 | ACERO CORRUGADO f'y=4200 kg/cm2 G-60 |  | 1d | 2026-05-06 | 2026-05-06 | 18 |  | 1,045.39 |

| ID | WBS | Task | Duration | Start | Finish | Predecessors | Total slack | Cost |
| --- | --- | --- | --- | --- | --- | --- | --- | --- |
| 29 | 2.2.2 | **ARQUITECTURA** | 6d | 2026-05-08 | 2026-05-13 |  |  | 4,682.05 |
| 30 | 2.2.2.1 | **REVOQUES Y ENLUCIDOS** | 1d | 2026-05-08 | 2026-05-08 |  |  | 1,332.92 |
| 31 | 2.2.2.1.1 | TARRAJEO INTERIOR CON IMPERMEABILIZANTE C:A 1:2, e=1.5 cm | 1d | 2026-05-08 | 2026-05-08 | 22 |  | 734.87 |
| 32 | 2.2.2.1.2 | TARRAJEO EXTERIOR C:A 1:4, e=1.5 cm | 1d | 2026-05-08 | 2026-05-08 | 31SS |  | 573.21 |
| 33 | 2.2.2.1.3 | MORTERO PARA PENDIENTE DE FONDO MEZCLA C:A 1:5 | 1d | 2026-05-08 | 2026-05-08 | 32SS |  | 24.84 |
| 34 | 2.2.2.2 | **FILTROS** | 1d | 2026-05-09 | 2026-05-09 |  |  | 339.72 |
| 35 | 2.2.2.2.1 | FILTRO DE GRAVA GRUESA TAMAÑO MAXIMO 3/4"-1", e= 0.15 m | 1d | 2026-05-09 | 2026-05-09 | 33 |  | 94.37 |
| 36 | 2.2.2.2.2 | FILTRO DE GRAVA TAMAÑO MAXIMO 2", e= 0.20 m | 1d | 2026-05-09 | 2026-05-09 | 35SS |  | 97.59 |
| 37 | 2.2.2.2.3 | FILTRO DE MATERIAL IMPERMEABLE (LECHADA DE CEMENTO), e= 0.15 m | 1d | 2026-05-09 | 2026-05-09 | 36SS |  | 147.76 |
| 38 | 2.2.2.3 | **ESTRUCTURAS METALICAS** | 1d | 2026-05-10 | 2026-05-10 |  |  | 1,311.58 |
| 39 | 2.2.2.3.1 | SUMINISTRO E INSTALACION DE TAPA METALICA DE 0.60X0.60m, E=1/8" INC. LLAVE MAESTRA | 1d | 2026-05-10 | 2026-05-10 | 37 |  | 907.72 |
| 40 | 2.2.2.3.2 | SUMINISTRO E INSTALACION DE TAPA METALICA DE 0.40X0.50m, E=1/8" INC. LLAVE MAESTRA | 1d | 2026-05-10 | 2026-05-10 | 39SS |  | 403.86 |
| 41 | 2.2.2.4 | **PINTURA** | 1d | 2026-05-11 | 2026-05-11 |  |  | 263.87 |
| 42 | 2.2.2.4.1 | PINTURA C/ESMALTE 02 MANOS EN EXTERIORES | 1d | 2026-05-11 | 2026-05-11 | 40 |  | 263.87 |
| 43 | 2.2.2.5 | **SUMINISTRO E INSTALACION DE VALVULAS Y ACCESORIOS EN CAPTACION** | 1d | 2026-05-12 | 2026-05-12 |  |  | 1,178.45 |
| 44 | 2.2.2.5.1 | SUMINISTRO E INSTALACION DE ACCESORIOS EN CAPTACION TIPO LADERA | 1d | 2026-05-12 | 2026-05-12 | 42 |  | 962.36 |
| 45 | 2.2.2.5.2 | SUMINISTRO E INSTALACION DE ACCESORIOS DE REBOSE EN CAPTACION TIPO LADERA | 1d | 2026-05-12 | 2026-05-12 | 44SS |  | 216.09 |
| 46 | 2.2.2.6 | **VARIOS** | 1d | 2026-05-13 | 2026-05-13 |  |  | 255.51 |
| 47 | 2.2.2.6.1 | SUMINISTRO E INSTALACION DE JUNTA ELASTOMERICA | 1d | 2026-05-13 | 2026-05-13 | 45 |  | 21.1 |
| 48 | 2.2.2.6.2 | SUMINISTRO E INSTALACION DE GEOMEMBRANA HDPE 1" | 1d | 2026-05-13 | 2026-05-13 | 47SS |  | 64.1 |
| 49 | 2.2.2.6.3 | PIEDRA CHANCADA DE 1/2" | 1d | 2026-05-13 | 2026-05-13 | 48SS |  | 1.53 |
| 50 | 2.2.2.6.4 | JUNTA WATER STOP NEOPRENO 6" | 1d | 2026-05-13 | 2026-05-13 | 49SS |  | 164.83 |
| 51 | 2.2.2.6.5 | PRUEBA HIDRAULICA DE ESTANQUEIDAD EN ESTRUCTURA | 1d | 2026-05-13 | 2026-05-13 | 50SS |  | 3.95 |
| 52 | 2.2.3 | **CERCO PERIMETRICO METALICO EN CAPTACION** | 7d | 2026-05-10 | 2026-05-16 |  | 74d | 9,691.3 |
| 53 | 2.2.3.1 | **TRABAJOS PRELIMINARES** | 6d | 2026-05-10 | 2026-05-15 |  | 74d | 81.72 |
| 54 | 2.2.3.1.1 | LIMPIEZA DE TERRENO MANUAL | 1d | 2026-05-10 | 2026-05-10 | 42FS-2d | 74d | 14.09 |
| 55 | 2.2.3.1.2 | TRAZO Y REPLANTEO PRELIMINAR | 1d | 2026-05-11 | 2026-05-11 | 54 | 74d | 28.37 |
| 56 | 2.2.3.1.3 | TRAZO Y REPLANTEO DURANTE EL PROCESO | 5d | 2026-05-11 | 2026-05-15 | 54 | 75d | 39.26 |

| ID | WBS | Task | Duration | Start | Finish | Predecessors | Total slack | Cost |
| --- | --- | --- | --- | --- | --- | --- | --- | --- |
| 57 | 2.2.3.2 | **MOVIMIENTO DE TIERRAS** | 5d | 2026-05-12 | 2026-05-16 |  | 74d | 102.32 |
| 58 | 2.2.3.2.1 | EXCAVACION MANUAL EN TERRENO NORMAL | 1d | 2026-05-12 | 2026-05-12 | 55 | 74d | 55.61 |
| 59 | 2.2.3.2.2 | ACARREO Y ELIMINACION DE MAT. EXCEDENTE Dmax=30 m | 1d | 2026-05-16 | 2026-05-16 | 70 | 74d | 46.71 |
| 60 | 2.2.3.3 | **CONCRETO SIMPLE** | 2d | 2026-05-12 | 2026-05-13 |  | 74d | 585.84 |
| 61 | 2.2.3.3.1 | CONCRETO f'c=175 kg/cm2 EN DADOS DE POSTES | 2d | 2026-05-12 | 2026-05-13 | 58SS | 74d | 585.84 |
| 62 | 2.2.3.4 | **SUMIN. E INST. PARANTES VERTICALES** | 3d | 2026-05-12 | 2026-05-14 |  | 76d | 1,344.9 |
| 63 | 2.2.3.4.1 | SUMIN. E INST. TUBO NEGRO DE 3''e=2.50mm PARA POSTES H=2.50 | 2d | 2026-05-12 | 2026-05-13 | 58SS | 77d | 923.16 |
| 64 | 2.2.3.4.2 | UNIÓN DE TUBO CON PERFIL DE DE 3"X2.5mm L=5cm | 2d | 2026-05-13 | 2026-05-14 | 61FS-1d | 76d | 421.74 |
| 65 | 2.2.3.5 | **SUM. E INST.PERFIL EN L 1 1/2"X1 1/2"X3/16"** | 2d | 2026-05-13 | 2026-05-14 |  | 74d | 3,331.18 |
| 66 | 2.2.3.5.1 | SUMIN. E INST. PERFIL EN L 1 1/2"X1 1/2"X3/16" PARA MALLAS | 2d | 2026-05-13 | 2026-05-14 | 61FS-1d | 74d | 3,331.18 |
| 67 | 2.2.3.6 | **SUM.E INST.MALLA OLIMPICA** | 2d | 2026-05-14 | 2026-05-15 |  | 74d | 1,643.9 |
| 68 | 2.2.3.6.1 | SUMINISTRO E INSTALACIÓN DE MALLA METÁLICA GALVANIZADA n° 12 COCADAS 2"X2" | 2d | 2026-05-14 | 2026-05-15 | 66FS-1d | 74d | 1,643.9 |
| 69 | 2.2.3.7 | **SUM.E INST.PUERTA MET.C/MALLA GALVANIZADA** | 1d | 2026-05-15 | 2026-05-15 |  | 74d | 460.38 |
| 70 | 2.2.3.7.1 | SUM.E INST.PUERTA MET.C/MALLA METALICA GALVANIZADA DE N°12 Y TUBO NEGRO 3" | 1d | 2026-05-15 | 2026-05-15 | 68FS-1d | 74d | 460.38 |
| 71 | 2.2.3.8 | **PINTURA EN CERCO PERIMETRICO** | 2d | 2026-05-15 | 2026-05-16 |  | 74d | 2,141.06 |
| 72 | 2.2.3.8.1 | PINTADO 1RA MANO C/ PINTURA EPOXICA | 2d | 2026-05-15 | 2026-05-16 | 68FS-1d | 74d | 2,141.06 |
| 73 | 2.3 | **LINEA DE CONDUCCIÓN MANGUERA HDPE, L= 139.70m** | 11d | 2026-05-14 | 2026-05-24 |  |  | 3,832.94 |
| 74 | 2.3.1 | **TRABAJOS PRELIMINARES** | 8d | 2026-05-14 | 2026-05-21 |  |  | 347.86 |
| 75 | 2.3.1.1 | LIMPIEZA Y DESBROCE DE TERRENO MANUAL | 2d | 2026-05-14 | 2026-05-15 | 51 |  | 95 |
| 76 | 2.3.1.2 | TRAZO Y REPLANTEO PRELIMINAR EN LINEAS Y REDES | 2d | 2026-05-16 | 2026-05-17 | 75 |  | 113.16 |
| 77 | 2.3.1.3 | TRAZO Y REPLANTEO DURANTE EL PROCESO EN LINEAS Y REDES | 6d | 2026-05-16 | 2026-05-21 | 75 | 69d | 139.7 |
| 78 | 2.3.2 | **MOVIMIENTO DE TIERRAS** | 8d | 2026-05-17 | 2026-05-24 |  |  | 2,051.08 |
| 79 | 2.3.2.1 | EXCAVACION MANUAL EN TERRENO SUELTO DE ZANJA DE 0.40 x 0.30 m P/MANGUERA HDPE | 4d | 2026-05-17 | 2026-05-20 | 76FS-1d |  | 1,478.03 |
| 80 | 2.3.2.2 | RELLENO DE ZANJA, CON MAT. PROPIO, E=0.40m A=0.30m P/MANGUERA HDPE | 3d | 2026-05-20 | 2026-05-22 | 83FS-1d |  | 461.01 |
| 81 | 2.3.2.3 | ACARREO Y ELIMINACION DE MAT. EXCEDENTE Dmax=30 m | 2d | 2026-05-23 | 2026-05-24 | 80 | 66d | 112.04 |

| ID | WBS | Task | Duration | Start | Finish | Predecessors | Total slack | Cost |
| --- | --- | --- | --- | --- | --- | --- | --- | --- |
| 82 | 2.3.3 | **SUMINISTRO E INSTALACION DE TUBERIAS** | 2d | 2026-05-19 | 2026-05-20 |  |  | 1,155.32 |
| 83 | 2.3.3.1 | SUMINISTRO E INSTALACION DE MANGUERA HDPE NTP - ISO 4427: 2008 PE 80, PN=10, ø=44.4mm | 2d | 2026-05-19 | 2026-05-20 | 79FS-2d |  | 1,155.32 |
| 84 | 2.3.4 | **SUMINISTRO E INSTALACION DE ACCESORIOS** | 2d | 2026-05-19 | 2026-05-20 |  | 70d | 35.6 |
| 85 | 2.3.4.1 | SUMINISTRO E INSTALACION DE UNION P/MANG. HDPE, PN-10 ø=44.4 MM | 2d | 2026-05-19 | 2026-05-20 | 83SS | 70d | 35.6 |
| 86 | 2.3.5 | **PRUEBA HIDRAULICA** | 1d | 2026-05-23 | 2026-05-23 |  | 67d | 243.08 |
| 87 | 2.3.5.1 | PRUEBA HIDRAULICA Y DESINFECCION DE LA TUBERIA | 1d | 2026-05-23 | 2026-05-23 | 81SS | 67d | 243.08 |
| 88 | 2.4 | **RESERVORIO CUADRADO DE V=5m3 - CONSTRUCCION** | 19d? | 2026-05-23 | 2026-06-10 |  |  | 36,903.66 |
| 89 | 2.4.1 | **ESTRUCTURAS** | 12d | 2026-05-23 | 2026-06-03 |  |  | 1,611.88 |
| 90 | 2.4.1.1 | **TRABAJOS PRELIMINARES** | 11d | 2026-05-23 | 2026-06-02 |  |  | 293.45 |
| 91 | 2.4.1.1.1 | LIMPIEZA DE TERRENO MANUAL | 2d | 2026-05-23 | 2026-05-24 | 80 |  | 67.51 |
| 92 | 2.4.1.1.2 | TRAZO Y REPLANTEO PRELIMINAR | 1d | 2026-05-25 | 2026-05-25 | 91 |  | 135.98 |
| 93 | 2.4.1.1.3 | TRAZO Y REPLANTEO DURANTE EL PROCESO | 9d | 2026-05-25 | 2026-06-02 | 91 | 57d | 89.96 |
| 94 | 2.4.1.2 | **MOVIMIENTO DE TIERRAS** | 9d | 2026-05-26 | 2026-06-03 |  |  | 1,318.43 |
| 95 | 2.4.1.2.1 | EXCAVACION MANUAL EN TERRENO NORMAL | 1d | 2026-05-26 | 2026-05-26 | 92 |  | 646.57 |
| 96 | 2.4.1.2.2 | NIVELACION INTERIOR Y APISONADO (MANUAL) | 1d | 2026-05-26 | 2026-05-26 | 95FS-1d |  | 116.97 |
| 97 | 2.4.1.2.3 | RELLENO COMPACTADO CON MATERIAL PROPIO SELECCIONADO | 1d | 2026-05-27 | 2026-05-27 | 96 | 63d | 112.13 |
| 98 | 2.4.1.2.4 | ACARREO Y ELIMINACION DE MAT. EXCEDENTE Dmax=30 m | 1d | 2026-06-03 | 2026-06-03 | 105FS-1d | 56d | 442.76 |
| 99 | 2.4.2 | **CÁMARA HUMEDA O ALMACENAMIENTO DE RESERVORIO** | 12d | 2026-05-27 | 2026-06-07 |  |  | 12,540.98 |
| 100 | 2.4.2.1 | **OBRAS DE CONCRETO SIMPLE** | 1d | 2026-05-27 | 2026-05-27 |  |  | 415.83 |
| 101 | 2.4.2.1.1 | SOLADO f'c=100 Kg/cm2, e=10 cm | 1d | 2026-05-27 | 2026-05-27 | 96 |  | 415.83 |
| 102 | 2.4.2.2 | **OBRAS DE CONCRETO ARMADO** | 7d | 2026-05-28 | 2026-06-03 |  |  | 6,901.71 |
| 103 | 2.4.2.2.1 | CONCRETO F'C=210 KG/CM2 PARA CIMENTACIÓN Y LOSA DE FONDO | 1d | 2026-05-29 | 2026-05-29 | 106SS |  | 1,249 |
| 104 | 2.4.2.2.2 | CONCRETO f'c=210 kg/cm2 EN MUROS | 2d | 2026-05-31 | 2026-06-01 | 107FS-1d |  | 1,105.46 |
| 105 | 2.4.2.2.3 | CONCRETO F'C=210 KG/CM2 PARA LOSA SUPERIOR | 2d | 2026-06-02 | 2026-06-03 | 108FS-1d | 52d | 390.31 |
| 106 | 2.4.2.2.4 | ENCOFRADO Y DESENCOFRADO PARA LOSA DE FONDO | 1d | 2026-05-29 | 2026-05-29 | 109FS-2d |  | 132.24 |
| 107 | 2.4.2.2.5 | ENCOFRADO Y DESENCOFRADO EN MUROS | 2d | 2026-05-30 | 2026-05-31 | 103 |  | 1,198.7 |
| 108 | 2.4.2.2.6 | ENCOFRADO Y DESENCOFRADO PARA LOSA SUPERIOR | 2d | 2026-06-01 | 2026-06-02 | 104FS-1d |  | 336.28 |
| 109 | 2.4.2.2.7 | ACERO CORRUGADO f'y=4200 kg/cm2 G-60 EN RESERVORIO | 3d | 2026-05-28 | 2026-05-30 | 101 |  | 2,489.72 |

| ID | WBS | Task | Duration | Start | Finish | Predecessors | Total slack | Cost |
| --- | --- | --- | --- | --- | --- | --- | --- | --- |
| 110 | 2.4.2.3 | **REVOQUES, ENLUCIDOS Y MOLDURAS** | 2d | 2026-06-03 | 2026-06-04 |  | 52d | 2,235.68 |
| 111 | 2.4.2.3.1 | TARRAJEO CON IMPERMEABILIZANTE MEZCLA 1:2; E=1.5 CM | 2d | 2026-06-03 | 2026-06-04 | 105FS-1d | 55d | 1,286.92 |
| 112 | 2.4.2.3.2 | TARRAJEO INTERIOR Y EXTERIOR MEZCLA 1:4 E=1.5 CM | 2d | 2026-06-03 | 2026-06-04 | 105FS-1d | 52d | 779.36 |
| 113 | 2.4.2.3.3 | MORTERO PARA PENDIENTE DE FONDO MEZCLA C:A 1:5 | 1d | 2026-06-03 | 2026-06-03 | 105FS-1d | 56d | 169.4 |
| 114 | 2.4.2.4 | **PINTURA** | 2d | 2026-06-05 | 2026-06-06 |  | 52d | 441.62 |
| 115 | 2.4.2.4.1 | PINTURA LATEX EN EXTERIORES (DOS MANOS) PARA ESTRUCTURAS | 2d | 2026-06-05 | 2026-06-06 | 112 | 52d | 441.62 |
| 116 | 2.4.2.5 | **ESTRUCTURA METALICA** | 1d | 2026-06-06 | 2026-06-06 |  | 52d | 1,826.76 |
| 117 | 2.4.2.5.1 | ESCALERA INTERIOR / PELDAÑOS DE POLIPROPILENO DE 12MM | 1d | 2026-06-06 | 2026-06-06 | 115FS-1d | 52d | 910.36 |
| 118 | 2.4.2.5.2 | ESCALERA EXTERIOR/ TIPO GATO ESCALINES DE F°G° Ø=3/4" | 1d | 2026-06-06 | 2026-06-06 | 117SS | 52d | 371.87 |
| 119 | 2.4.2.5.3 | SUMINISTRO E INST. DE TAPA METALICA DE 0.60 x 0.60 m e=1/8" INC. ACCESORIOS + PINTURA | 1d | 2026-06-06 | 2026-06-06 | 118SS | 52d | 453.86 |
| 120 | 2.4.2.5.4 | SUMINISTRO E INST. DE ACCESORIOS DE TUBO DE VENTILACION F°G° Ø = 2" | 1d | 2026-06-06 | 2026-06-06 | 119SS | 52d | 90.67 |
| 121 | 2.4.2.6 | **VARIOS** | 1d | 2026-06-07 | 2026-06-07 |  | 52d | 719.38 |
| 122 | 2.4.2.6.1 | SUMINISTRO E INSTALACION DE JUNTA WATER STOP NEOPRENO 6" | 1d | 2026-06-07 | 2026-06-07 | 120 | 52d | 283.9 |
| 123 | 2.4.2.6.2 | JUNTA EPOXICA PARA UNION DE CONCRETO | 1d | 2026-06-07 | 2026-06-07 | 122SS | 52d | 352.02 |
| 124 | 2.4.2.6.3 | PRUEBA HIDRAULICA DE ESTANQUEIDAD EN ESTRUCTURA | 1d | 2026-06-07 | 2026-06-07 | 123SS | 52d | 83.46 |
| 125 | 2.4.3 | **CASETA DE VALVULAS RESERVORIO** | 6d | 2026-05-31 | 2026-06-05 |  |  | 4,241.32 |
| 126 | 2.4.3.1 | **OBRAS DE CONCRETO SIMPLE** | 1d | 2026-05-31 | 2026-05-31 |  |  | 118.81 |
| 127 | 2.4.3.1.1 | SOLADO f'c=100 Kg/cm2, e=10 cm | 1d | 2026-05-31 | 2026-05-31 | 108FS-3d |  | 118.81 |
| 128 | 2.4.3.2 | **OBRAS DE CONCRETO ARMADO** | 3d | 2026-06-01 | 2026-06-03 |  |  | 1,274.33 |
| 129 | 2.4.3.2.1 | CONCRETO F'C=210 KG/CM2 PARA CIMENTACIÓN Y LOSA DE FONDO | 1d | 2026-06-01 | 2026-06-01 | 132FS-1d |  | 122.67 |
| 130 | 2.4.3.2.2 | CONCRETO f'c=210 kg/cm2 EN MUROS | 1d | 2026-06-02 | 2026-06-02 | 133FS-1d |  | 197.82 |
| 131 | 2.4.3.2.3 | CONCRETO F'C=210 KG/CM2 PARA LOSA SUPERIOR | 1d | 2026-06-03 | 2026-06-03 | 134FS-1d |  | 89.21 |
| 132 | 2.4.3.2.4 | ENCOFRADO Y DESENCOFRADO PARA LOSA DE FONDO | 1d | 2026-06-01 | 2026-06-01 | 127 |  | 20.78 |
| 133 | 2.4.3.2.5 | ENCOFRADO Y DESENCOFRADO EN MUROS | 1d | 2026-06-02 | 2026-06-02 | 129 |  | 323.05 |
| 134 | 2.4.3.2.6 | ENCOFRADO Y DESENCOFRADO PARA LOSA SUPERIOR | 1d | 2026-06-03 | 2026-06-03 | 130 |  | 94.46 |
| 135 | 2.4.3.2.7 | ACERO CORRUGADO f'y=4200 kg/cm2 G-60 EN CASETA DE VALVULAS | 3d | 2026-06-01 | 2026-06-03 | 127 | 56d | 426.34 |

| ID | WBS | Task | Duration | Start | Finish | Predecessors | Total slack | Cost |
| --- | --- | --- | --- | --- | --- | --- | --- | --- |
| 136 | 2.4.3.3 | **REVOQUES, ENLUCIDOS Y MOLDURAS** | 1d | 2026-06-04 | 2026-06-04 |  |  | 407.48 |
| 137 | 2.4.3.3.1 | TARRAJEO INTERIOR Y EXTERIOR C:A 1:4, e=1.5 cm | 1d | 2026-06-04 | 2026-06-04 | 131 |  | 407.48 |
| 138 | 2.4.3.4 | **PINTURA** | 1d | 2026-06-05 | 2026-06-05 |  | 52d | 100.83 |
| 139 | 2.4.3.4.1 | PINTURA LATEX EN EXTERIORES (DOS MANOS) | 1d | 2026-06-05 | 2026-06-05 | 137 | 52d | 100.83 |
| 140 | 2.4.3.5 | **ESTRUCTURA METALICA** | 1d | 2026-06-05 | 2026-06-05 |  | 52d | 453.86 |
| 141 | 2.4.3.5.1 | SUMINISTRO E INST. DE TAPA METALICA DE 0.60 x 0.60 m e=1/8" INC. ACCESORIOS + PINTURA | 1d | 2026-06-05 | 2026-06-05 | 139SS | 52d | 453.86 |
| 142 | 2.4.3.6 | **VARIOS** | 1d | 2026-06-05 | 2026-06-05 |  | 52d | 1.53 |
| 143 | 2.4.3.6.1 | PIEDRA CHANCADA DE 1/2" | 1d | 2026-06-05 | 2026-06-05 | 141SS | 52d | 1.53 |
| 144 | 2.4.3.7 | **INSTALACIONES HIDRAULICAS** | 1d | 2026-06-05 | 2026-06-05 |  | 52d | 1,884.48 |
| 145 | 2.4.3.7.1 | SUMINISTRO E INST. DE ACCESORIOS DE INGRESO DEL RESERVORIO Ø = 1 1/2" | 1d | 2026-06-05 | 2026-06-05 | 143SS | 52d | 441.87 |
| 146 | 2.4.3.7.2 | SUMINISTRO E INST. DE ACCESORIOS DE SALIDA DEL RESERVORIO Ø = 1 1/2" | 1d | 2026-06-05 | 2026-06-05 | 143SS | 54d | 494.87 |
| 147 | 2.4.3.7.3 | SUMINISTRO E INST. DE ACCESORIOS DE LIMPIEZA Y REBOSE DEL RESERVORIO Ø = 2" | 1d | 2026-06-05 | 2026-06-05 | 143SS | 54d | 534.87 |
| 148 | 2.4.3.7.4 | SUMINISTRO E INST. DE ACCESORIOS DE BAY-PASS DEL RESERVORIO Ø = 1 1/2" | 1d | 2026-06-05 | 2026-06-05 | 143SS | 53d | 412.87 |
| 149 | 2.4.4 | **CASETA DE CLORACIÓN** | 5d? | 2026-06-04 | 2026-06-08 |  | 51d | 4,080.57 |
| 150 | 2.4.4.1 | **DOSIFICADOR DE CLORO** | 5d? | 2026-06-04 | 2026-06-08 |  | 51d | 4,080.57 |
| 151 | 2.4.4.1.1 | **ESTRUCTURA METALICA** | 5d? | 2026-06-04 | 2026-06-08 |  | 51d | 4,080.57 |
| 152 | 2.4.4.1.1.1 | COBERTURA METALICA DE CALAMINA ALUZINC TR4 E=0.40MM | 5d | 2026-06-04 | 2026-06-08 | 137SS | 51d | 243.58 |
| 153 | 2.4.4.1.1.2 | SUMINSTRO E INS. DE MALLA OLIMPICA N°12 CON COCADAS DE 2"x2" EN CASETA | 1d | 2026-06-05 | 2026-06-05 | 148SS | 53d | 228.58 |
| 154 | 2.4.4.1.1.3 | SUMIN. E INST. PERFIL EN L 1 1/2"X1 1/2"X1/8" PARA MALLAS | 1d | 2026-06-06 | 2026-06-06 | 153 | 53d | 779.82 |
| 155 | 2.4.4.1.1.4 | SUMINSTRO E INS. DE TUBO METALICO CUADRADO DE 2"X2" e=2.5mm , INCLUYE ANCLAJES | 1d | 2026-06-06 | 2026-06-06 | 145 | 52d | 1,048.77 |
| 156 | 2.4.4.1.1.5 | SUMINSTRO E INS. APOYOS DE TUBO METALICO RECTANGULAR DE 2"X3" e=2.5mm | 1d | 2026-06-07 | 2026-06-07 | 155 | 52d | 391.25 |
| 157 | 2.4.4.1.1.6 | SUMINSTRO E INS. DE PUERTA METALICA DE SISTEMA DE CLORACION | 1d | 2026-06-05 | 2026-06-05 | 137 | 54d | 568.5 |
| 158 | 2.4.4.1.1.7 | **ACCESORIOS** | 1d? | 2026-06-05 | 2026-06-05 |  | 54d | 820.07 |
| 159 | 2.4.4.1.1.7.1 | SUMINSTRO E INST. DE ACCESORIOS DEL SISTEMA DE CLORACION. | 1d? | 2026-06-05 | 2026-06-05 | 137 | 54d | 820.07 |

| ID | WBS | Task | Duration | Start | Finish | Predecessors | Total slack | Cost |
| --- | --- | --- | --- | --- | --- | --- | --- | --- |
| 160 | 2.4.5 | **VEREDA Y ZANJA DE CORONACIÓN** | 1d | 2026-06-05 | 2026-06-05 |  | 54d | 3,735.19 |
| 161 | 2.4.5.1 | **CONCRETO SIMPLE** | 1d | 2026-06-05 | 2026-06-05 |  | 54d | 3,292.55 |
| 162 | 2.4.5.1.1 | CONCRETO f'c=175 kg/cm2 EN VEREDA Y ZANJA DE CORONACION | 1d | 2026-06-05 | 2026-06-05 | 163SS | 54d | 1,513.01 |
| 163 | 2.4.5.1.2 | ENCOFRADO Y DESENCOFRADO EN VEREDA Y ZANJA DE CORONACION | 1d | 2026-06-05 | 2026-06-05 | 157SS | 54d | 1,779.54 |
| 164 | 2.4.5.2 | **VARIOS** | 1d | 2026-06-05 | 2026-06-05 |  | 54d | 442.64 |
| 165 | 2.4.5.2.1 | JUNTAS CON TEKNOPORT DE E=1" | 1d | 2026-06-05 | 2026-06-05 | 163SS | 54d | 142.38 |
| 166 | 2.4.5.2.2 | SELLADO DE JUNTA - RODON 1 1/4" | 1d | 2026-06-05 | 2026-06-05 | 163SS | 54d | 58.72 |
| 167 | 2.4.5.2.3 | SELLADO DE JUNTAS ELASTOMERICO DE POLIUTERANO 1"x1/2" | 1d | 2026-06-05 | 2026-06-05 | 163SS | 54d | 241.54 |
| 168 | 2.4.6 | **CERCO PERIMETRICO METALICO EN RESERVORIO** | 8d | 2026-06-03 | 2026-06-10 |  |  | 10,693.72 |
| 169 | 2.4.6.1 | **TRABAJOS PRELIMINARES** | 7d | 2026-06-03 | 2026-06-09 |  |  | 96.2 |
| 170 | 2.4.6.1.1 | LIMPIEZA DE TERRENO MANUAL | 1d | 2026-06-03 | 2026-06-03 | 137FS-2d |  | 16.58 |
| 171 | 2.4.6.1.2 | TRAZO Y REPLANTEO PRELIMINAR | 1d | 2026-06-04 | 2026-06-04 | 170 |  | 33.4 |
| 172 | 2.4.6.1.3 | TRAZO Y REPLANTEO DURANTE EL PROCESO | 6d | 2026-06-04 | 2026-06-09 | 170 | 50d | 46.22 |
| 173 | 2.4.6.2 | **MOVIMIENTO DE TIERRAS** | 6d | 2026-06-05 | 2026-06-10 |  |  | 102.32 |
| 174 | 2.4.6.2.1 | EXCAVACION MANUAL EN TERRENO NORMAL | 1d | 2026-06-05 | 2026-06-05 | 171 |  | 55.61 |
| 175 | 2.4.6.2.2 | ACARREO Y ELIMINACION DE MAT. EXCEDENTE Dmax=30 m | 1d | 2026-06-10 | 2026-06-10 | 188FS-1d | 49d | 46.71 |
| 176 | 2.4.6.3 | **CONCRETO SIMPLE** | 2d | 2026-06-06 | 2026-06-07 |  | 52d | 585.84 |
| 177 | 2.4.6.3.1 | CONCRETO f'c=175 kg/cm2 EN DADOS DE POSTES | 2d | 2026-06-06 | 2026-06-07 | 179SS | 52d | 585.84 |
| 178 | 2.4.6.4 | **SUMIN. E INST. PARANTES VERTICALES** | 3d | 2026-06-06 | 2026-06-08 |  |  | 1,344.9 |
| 179 | 2.4.6.4.1 | SUMIN. E INST. TUBO NEGRO DE 3''e=2.50mm PARA POSTES H=2.50 | 2d | 2026-06-06 | 2026-06-07 | 174 |  | 923.16 |
| 180 | 2.4.6.4.2 | UNIÓN DE TUBO CON PERFIL DE DE 3"X2.5mm L=5cm | 2d | 2026-06-07 | 2026-06-08 | 179FS-1d | 51d | 421.74 |
| 181 | 2.4.6.5 | **SUM. E INST.PERFIL EN L 1 1/2"X1 1/2"X3/16"** | 2d | 2026-06-07 | 2026-06-08 |  | 49d | 3,561.04 |
| 182 | 2.4.6.5.1 | SUMIN. E INST. PERFIL EN L 1 1/2"X1 1/2"X3/16" PARA MALLAS | 2d | 2026-06-07 | 2026-06-08 | 179FS-1d | 49d | 3,561.04 |
| 183 | 2.4.6.6 | **SUM.E INST.MALLA OLIMPICA** | 2d | 2026-06-08 | 2026-06-09 |  | 49d | 2,012.13 |
| 184 | 2.4.6.6.1 | SUMINISTRO E INSTALACIÓN DE MALLA METÁLICA GALVANIZADA n° 12 COCADAS 2"X2" | 2d | 2026-06-08 | 2026-06-09 | 182FS-1d | 49d | 2,012.13 |

| ID | WBS | Task | Duration | Start | Finish | Predecessors | Total slack | Cost |
| --- | --- | --- | --- | --- | --- | --- | --- | --- |
| 185 | 2.4.6.7 | **SUM.E INST.PUERTA MET.C/MALLA GALVANIZADA** | 1d | 2026-06-09 | 2026-06-09 |  | 50d | 460.38 |
| 186 | 2.4.6.7.1 | SUM.E INST.PUERTA MET.C/MALLA METALICA GALVANIZADA DE N°12 Y TUBO NEGRO 3" | 1d | 2026-06-09 | 2026-06-09 | 184FS-1d | 50d | 460.38 |
| 187 | 2.4.6.8 | **PINTURA EN CERCO PERIMETRICO** | 2d | 2026-06-09 | 2026-06-10 |  | 49d | 2,530.91 |
| 188 | 2.4.6.8.1 | PINTADO 1RA MANO C/ PINTURA EPOXICA | 2d | 2026-06-09 | 2026-06-10 | 184FS-1d | 49d | 2,530.91 |
| 189 | 2.5 | **LINEA DE ADUCCION MANGUERA HDPE, L= 185.94m** | 7d | 2026-06-08 | 2026-06-14 |  |  | 5,089.64 |
| 190 | 2.5.1 | **TRABAJOS PRELIMINARES** | 6d | 2026-06-08 | 2026-06-13 |  |  | 462.99 |
| 191 | 2.5.1.1 | LIMPIEZA Y DESBROCE DE TERRENO MANUAL | 2d | 2026-06-08 | 2026-06-09 | 179 |  | 126.44 |
| 192 | 2.5.1.2 | TRAZO Y REPLANTEO PRELIMINAR EN LINEAS Y REDES | 2d | 2026-06-09 | 2026-06-10 | 191FS-1d |  | 150.61 |
| 193 | 2.5.1.3 | TRAZO Y REPLANTEO DURANTE EL PROCESO EN LINEAS Y REDES | 5d | 2026-06-09 | 2026-06-13 | 191FS-1d | 46d | 185.94 |
| 194 | 2.5.2 | **MOVIMIENTO DE TIERRAS** | 5d | 2026-06-10 | 2026-06-14 |  |  | 2,729.79 |
| 195 | 2.5.2.1 | EXCAVACION MANUAL EN TERRENO SUELTO DE ZANJA DE 0.40 x 0.30 m P/MANGUERA HDPE | 3d | 2026-06-10 | 2026-06-12 | 192FS-1d |  | 1,967.25 |
| 196 | 2.5.2.2 | RELLENO DE ZANJA, CON MAT. PROPIO, E=0.40m A=0.30m P/MANGUERA HDPE | 1d | 2026-06-13 | 2026-06-13 | 199FS-1d | 46d | 613.6 |
| 197 | 2.5.2.3 | ACARREO Y ELIMINACION DE MAT. EXCEDENTE Dmax=30 m | 1d | 2026-06-14 | 2026-06-14 | 203 |  | 148.94 |
| 198 | 2.5.3 | **SUMINISTRO E INSTALACION DE TUBERIAS** | 3d | 2026-06-11 | 2026-06-13 |  |  | 1,537.72 |
| 199 | 2.5.3.1 | SUMINISTRO E INSTALACION DE MANGUERA HDPE NTP - ISO 4427: 2008 PE 80, PN=10, ø=44.4mm | 3d | 2026-06-11 | 2026-06-13 | 195FS-2d |  | 1,537.72 |
| 200 | 2.5.4 | **SUMINISTRO E INSTALACION DE ACCESORIOS** | 3d | 2026-06-11 | 2026-06-13 |  | 46d | 35.6 |
| 201 | 2.5.4.1 | SUMINISTRO E INSTALACION DE UNION P/MANG. HDPE, PN-10 ø=44.4 MM | 3d | 2026-06-11 | 2026-06-13 | 195FS-2d | 46d | 35.6 |
| 202 | 2.5.5 | **PRUEBA HIDRAULICA** | 1d | 2026-06-13 | 2026-06-13 |  |  | 323.54 |
| 203 | 2.5.5.1 | PRUEBA HIDRAULICA Y DESINFECCION DE LA TUBERIA | 1d | 2026-06-13 | 2026-06-13 | 199FS-1d |  | 323.54 |
| 204 | 2.6 | **RED DE DISTRIBUCIÓN L= 1097.16m** | 13d | 2026-06-13 | 2026-06-25 |  |  | 64,829.25 |
| 205 | 2.6.1 | **TRABAJOS PRELIMINARES** | 9d | 2026-06-13 | 2026-06-21 |  |  | 2,655.98 |
| 206 | 2.6.1.1 | LIMPIEZA Y DESBROCE DE TERRENO MANUAL | 2d | 2026-06-13 | 2026-06-14 | 197FS-2d |  | 725.33 |
| 207 | 2.6.1.2 | TRAZO Y REPLANTEO PRELIMINAR EN LINEAS Y REDES | 4d | 2026-06-14 | 2026-06-17 | 206FS-1d |  | 863.99 |
| 208 | 2.6.1.3 | TRAZO Y REPLANTEO DURANTE EL PROCESO EN LINEAS Y REDES | 8d | 2026-06-14 | 2026-06-21 | 206FS-1d | 38d | 1,066.66 |

| ID | WBS | Task | Duration | Start | Finish | Predecessors | Total slack | Cost |
| --- | --- | --- | --- | --- | --- | --- | --- | --- |
| 209 | 2.6.2 | **MOVIMIENTO DE TIERRAS** | 10d | 2026-06-15 | 2026-06-24 |  |  | 50,869.76 |
| 210 | 2.6.2.1 | EXCAVACION DE ZANJA CON MAQUINARIA EN TERRENO NORMAL DE 0.50 x 1.10 m P/TUBERIA EN CARRETERA | 2d | 2026-06-15 | 2026-06-16 | 207FS-3d |  | 9,686 |
| 211 | 2.6.2.2 | EXCAVACION MANUAL EN TERRENO NORMAL DE ZANJA DE 0.50 x 0.80 m P/TUBERIA | 4d | 2026-06-15 | 2026-06-18 | 210SS |  | 14,871.88 |
| 212 | 2.6.2.3 | EXCAVACION DE ZANJA CON MAQUINARIA EN TERRENO NORMAL DE 0.60 x 1.40 m P/TUBERIA PROFUNDIZADA | 3d | 2026-06-15 | 2026-06-17 | 211SS |  | 1,688 |
| 213 | 2.6.2.4 | REFINE Y NIVELACION DE FONDO PARA ZANJA DE 0.50 x 1.10 m P/TUBERIA EN CARRETERA | 3d | 2026-06-16 | 2026-06-18 | 210FS-1d | 34d | 361.55 |
| 214 | 2.6.2.5 | REFINE Y NIVELACION DE FONDO PARA ZANJA DE 0.50 x 0.80 m P/TUBERIA | 3d | 2026-06-16 | 2026-06-18 | 211FS-3d | 40d | 674.72 |
| 215 | 2.6.2.6 | REFINE Y NIVELACION DE FONDO PARA ZANJA DE 0.60 x 1.40 m P/TUBERIA PROFUNDIZADA | 3d | 2026-06-16 | 2026-06-18 | 212FS-2d |  | 57 |
| 216 | 2.6.2.7 | CAMA DE APOYO PARA TUBERIA CON MAT. PROPIO ZARANDEADO E=0.10m, A=0.50 m | 3d | 2026-06-17 | 2026-06-19 | 214FS-2d | 40d | 1,989.6 |
| 217 | 2.6.2.8 | CAMA DE APOYO PARA TUBERIA CON MAT. PROPIO ZARANDEADO E=0.10m, A=0.60 m TUB. PROFUNDIZADA | 3d | 2026-06-17 | 2026-06-19 | 215FS-2d |  | 103.5 |
| 218 | 2.6.2.9 | PRIMER RELLENO COMPACTADO DE ZANJA, CON MAT. PROPIO ZARANDEADO, E=0.30m, A=0.50 m | 3d | 2026-06-20 | 2026-06-22 | 225FS-4d | 35d | 8,827.56 |
| 219 | 2.6.2.10 | PRIMER RELLENO COMPACTADO DE ZANJA, CON MAT. PROPIO ZARANDEADO, E=0.30m, A=0.60 m P/TUBERIA PROFUNDIZADA | 3d | 2026-06-20 | 2026-06-22 | 218SS | 35d | 461 |
| 220 | 2.6.2.11 | SEGUNDO RELLENO COMPACTADO DE ZANJA CON MAT. PROPIO EN CARRETERA, E=0.70m, A=0.50 m | 3d | 2026-06-20 | 2026-06-22 | 218SS | 37d | 2,592.8 |
| 221 | 2.6.2.12 | SEGUNDO RELLENO COMPACTADO DE ZANJA CON MAT. PROPIO, E=0.40m, A=0.50 m | 3d | 2026-06-21 | 2026-06-23 | 218FS-2d | 36d | 3,710.94 |
| 222 | 2.6.2.13 | SEGUNDO RELLENO COMPACTADO DE ZANJA CON MAT. PROPIO EN TERRENO NORMAL, E=1.00m, A=0.60 m TUB. PROFUNDIZADA | 3d | 2026-06-21 | 2026-06-23 | 219FS-2d | 35d | 448.5 |
| 223 | 2.6.2.14 | ACARREO Y ELIMINACION DE MAT. EXCEDENTE Dmax=30 m | 1d | 2026-06-24 | 2026-06-24 | 222 | 35d | 5,396.71 |
| 224 | 2.6.3 | **SUMINISTRO E INSTALACION DE TUBERIAS** | 5d | 2026-06-19 | 2026-06-23 |  | 34d | 8,687.86 |
| 225 | 2.6.3.1 | SUMINISTRO E INSTALACION DE TUBERIA PVC NTP 399.002 SP Ø 3/4" CL-10 | 5d | 2026-06-19 | 2026-06-23 | 213 | 34d | 3,328.11 |
| 226 | 2.6.3.2 | SUMINISTRO E INSTALACION DE TUBERIA PVC NTP 399.002 SP Ø 1" CL-10 | 5d | 2026-06-19 | 2026-06-23 | 225SS | 34d | 5,359.75 |
| 227 | 2.6.4 | **SUMINISTRO E INSTALACION DE ACCESORIOS** | 3d | 2026-06-19 | 2026-06-21 |  | 38d | 706.59 |
| 228 | 2.6.4.1 | SUMINISTRO E INSTALACION DE CODO PVC SP 1" x 90º | 3d | 2026-06-19 | 2026-06-21 | 226SS | 38d | 65.44 |
| 229 | 2.6.4.2 | SUMINISTRO E INSTALACION DE CODO PVC SP 3/4" x 90º | 3d | 2026-06-19 | 2026-06-21 | 228SS | 38d | 28.72 |
| 230 | 2.6.4.3 | SUMINISTRO E INSTALACION DE CODO PVC SP 1" x 45º | 3d | 2026-06-19 | 2026-06-21 | 228SS | 38d | 130.88 |
| 231 | 2.6.4.4 | SUMINISTRO E INSTALACION DE CODO PVC SP 3/4" x 45º | 3d | 2026-06-19 | 2026-06-21 | 228SS | 38d | 71.8 |
| 232 | 2.6.4.5 | SUMINISTRO E INSTALACION DE TEE PVC C-10 Ø 1" | 3d | 2026-06-19 | 2026-06-21 | 228SS | 38d | 152.4 |
| 233 | 2.6.4.6 | SUMINISTRO E INSTALACION DE TEE PVC C-10 Ø 1 1/2" | 3d | 2026-06-19 | 2026-06-21 | 228SS | 38d | 27.55 |
| 234 | 2.6.4.7 | SUMINISTRO E INSTALACION DE REDUCCION PVC C-10 Ø 1 1/2" A Ø 1" | 3d | 2026-06-19 | 2026-06-21 | 228SS | 38d | 21.48 |
| 235 | 2.6.4.8 | SUMINISTRO E INSTALACION DE REDUCCION PVC SP 1" x 3/4" | 3d | 2026-06-19 | 2026-06-21 | 228SS | 38d | 71.68 |
| 236 | 2.6.4.9 | SUMINISTRO E INSTALACION DE REDUCCION PVC C-10 Ø 1 1/2" A Ø 3/4" | 3d | 2026-06-19 | 2026-06-21 | 228SS | 38d | 23.48 |
| 237 | 2.6.4.10 | SUMINISTRO E INSTALACION DE NIPLE PVC C-10 L=2", Ø 1 1/2" | 3d | 2026-06-19 | 2026-06-21 | 228SS | 38d | 36.88 |
| 238 | 2.6.4.11 | SUMINISTRO E INSTALACION DE ADAPTADOR UNIVERSAL HDPE A PVC Ø 1 1/2" | 3d | 2026-06-19 | 2026-06-21 | 228SS | 38d | 27.93 |
| 239 | 2.6.4.12 | SUMINISTRO E INSTALACION DE TAPON PVC SP 3/4" | 3d | 2026-06-19 | 2026-06-21 | 228SS | 38d | 48.35 |

| ID | WBS | Task | Duration | Start | Finish | Predecessors | Total slack | Cost |
| --- | --- | --- | --- | --- | --- | --- | --- | --- |
| 240 | 2.6.5 | **PRUEBA HIDRAULICA** | 2d | 2026-06-24 | 2026-06-25 |  | 34d | 1,909.06 |
| 241 | 2.6.5.1 | PRUEBA HIDRAULICA Y DESINFECCION DE LA TUBERIA | 2d | 2026-06-24 | 2026-06-25 | 226 | 34d | 1,909.06 |
| 242 | 2.7 | **VALVULA DE AIRE (01 Und.) - RED DISTRIBUCION** | 5d | 2026-06-15 | 2026-06-19 |  | 30d | 2,417.85 |
| 243 | 2.7.1 | **TRABAJOS PRELIMINARES** | 1d | 2026-06-15 | 2026-06-15 |  | 30d | 34.06 |
| 244 | 2.7.1.1 | LIMPIEZA Y DESBROCE DE TERRENO MANUAL | 1d | 2026-06-15 | 2026-06-15 | 206 | 30d | 4.6 |
| 245 | 2.7.1.2 | TRAZO Y REPLANTEO PRELIMINAR PARA ESTRUCTURAS | 1d | 2026-06-15 | 2026-06-15 | 244FS-1d | 30d | 7.97 |
| 246 | 2.7.1.3 | TRAZO Y REPLANTEO DURANTE EL PROCESO PARA ESTRUCTURAS | 1d | 2026-06-15 | 2026-06-15 | 244FS-1d | 44d | 21.49 |
| 247 | 2.7.2 | **MOVIMIENTO DE TIERRAS** | 5d | 2026-06-15 | 2026-06-19 |  | 30d | 176.64 |
| 248 | 2.7.2.1 | EXCAVACION MANUAL EN TERRENO NORMAL | 1d | 2026-06-15 | 2026-06-15 | 245SS | 30d | 91.88 |
| 249 | 2.7.2.2 | RELLENO COMPACTADO CON MATERIAL PROPIO SELECCIONADO | 1d | 2026-06-16 | 2026-06-16 | 252 | 43d | 54.97 |
| 250 | 2.7.2.3 | ACARREO Y ELIMINACION DE MAT. EXCEDENTE Dmax=30 m | 1d | 2026-06-19 | 2026-06-19 | 256 | 40d | 29.79 |
| 251 | 2.7.3 | **OBRAS DE CONCRETO SIMPLE** | 2d | 2026-06-15 | 2026-06-16 |  | 30d | 33.36 |
| 252 | 2.7.3.1 | SOLADO f´c=100 Kg/cm2, e=5 cm | 1d | 2026-06-15 | 2026-06-15 | 248SS | 30d | 28.83 |
| 253 | 2.7.3.2 | CONCRETO f'c=140 kg/cm2 EN DADOS | 1d | 2026-06-16 | 2026-06-16 | 252 | 43d | 4.53 |
| 254 | 2.7.4 | **OBRAS DE CONCRETO ARMADO** | 3d | 2026-06-16 | 2026-06-18 |  | 30d | 1,139.69 |
| 255 | 2.7.4.1 | CONCRETO f'c=175 kg/cm2 EN MUROS | 1d | 2026-06-17 | 2026-06-17 | 257SS | 40d | 110.79 |
| 256 | 2.7.4.2 | CONCRETO f'c=175 kg/cm2 EN LOSA | 1d | 2026-06-18 | 2026-06-18 | 258SS | 40d | 50.36 |
| 257 | 2.7.4.3 | ENCOFRADO Y DESENCOFRADO EN MUROS | 1d | 2026-06-17 | 2026-06-17 | 259 | 40d | 184.17 |
| 258 | 2.7.4.4 | ENCOFRADO Y DESENCOFRADO EN LOSAS | 1d | 2026-06-18 | 2026-06-18 | 255 | 40d | 17.54 |
| 259 | 2.7.4.5 | ACERO CORRUGADO f'y=4200 kg/cm2 G-60 | 1d | 2026-06-16 | 2026-06-16 | 252 | 30d | 776.83 |
| 260 | 2.7.5 | **REVOQUES, ENLUCIDOS Y MOLDURAS** | 1d | 2026-06-18 | 2026-06-18 |  | 41d | 84.87 |
| 261 | 2.7.5.1 | TARRAJEO INTERIOR MEZCLA C:A 1:4, e=1.5 cm | 1d | 2026-06-18 | 2026-06-18 | 256SS | 41d | 84.87 |
| 262 | 2.7.6 | **INSTALACIONES HIDRAULICAS** | 1d | 2026-06-18 | 2026-06-18 |  | 41d | 495.37 |
| 263 | 2.7.6.1 | SUMINISTRO Y COLOC. DE ACCESORIOS EN VALVULA DE AIRE Ø=1 1/2" X Ø=1/2" - LINEA DE CONDUCCION HDPE | 1d | 2026-06-18 | 2026-06-18 | 256FS-1d | 41d | 495.37 |

| ID | WBS | Task | Duration | Start | Finish | Predecessors | Total slack | Cost |
| --- | --- | --- | --- | --- | --- | --- | --- | --- |
| 264 | 2.7.7 | **CARPINTERIA METALICA** | 1d | 2026-06-19 | 2026-06-19 |  | 40d | 453.86 |
| 265 | 2.7.7.1 | SUMINISTRO E INST. DE TAPA METALICA DE 0.60 x 0.60 m e=1/8" INC. ACCESORIOS + PINTURA | 1d | 2026-06-19 | 2026-06-19 | 256 | 40d | 453.86 |
| 266 | 2.8 | **VALVULA DE PURGA (05 Und.)** | 7d | 2026-06-17 | 2026-06-23 |  | 30d | 9,480.19 |
| 267 | 2.8.1 | **VALVULA DE PURGA TIPO 1(02 Und.)** | 5d | 2026-06-17 | 2026-06-21 |  | 30d | 3,978.54 |
| 268 | 2.8.1.1 | **TRABAJOS PRELIMINARES** | 4d | 2026-06-17 | 2026-06-20 |  | 30d | 139.22 |
| 269 | 2.8.1.1.1 | LIMPIEZA Y DESBROCE DE TERRENO MANUAL | 1d | 2026-06-17 | 2026-06-17 | 259 | 30d | 18.79 |
| 270 | 2.8.1.1.2 | TRAZO Y REPLANTEO PRELIMINAR PARA ESTRUCTURAS | 1d | 2026-06-17 | 2026-06-17 | 269SS | 42d | 32.58 |
| 271 | 2.8.1.1.3 | TRAZO Y REPLANTEO DURANTE EL PROCESO PARA ESTRUCTURAS | 4d | 2026-06-17 | 2026-06-20 | 269SS | 39d | 87.85 |
| 272 | 2.8.1.2 | **MOVIMIENTO DE TIERRAS** | 5d | 2026-06-17 | 2026-06-21 |  | 30d | 614.47 |
| 273 | 2.8.1.2.1 | EXCAVACION MANUAL EN TERRENO NORMAL | 1d | 2026-06-17 | 2026-06-17 | 269SS | 30d | 326.91 |
| 274 | 2.8.1.2.2 | RELLENO COMPACTADO CON MATERIAL PROPIO SELECCIONADO | 1d | 2026-06-19 | 2026-06-19 | 277 | 40d | 89.88 |
| 275 | 2.8.1.2.3 | ACARREO Y ELIMINACION DE MAT. EXCEDENTE Dmax=30 m | 1d | 2026-06-21 | 2026-06-21 | 280 | 38d | 197.68 |
| 276 | 2.8.1.3 | **OBRAS DE CONCRETO SIMPLE** | 1d | 2026-06-18 | 2026-06-18 |  | 38d | 9.06 |
| 277 | 2.8.1.3.1 | CONCRETO f'c=140 kg/cm2 EN DADOS | 1d | 2026-06-18 | 2026-06-18 | 281SS | 38d | 9.06 |
| 278 | 2.8.1.4 | **OBRAS DE CONCRETO ARMADO** | 3d | 2026-06-18 | 2026-06-20 |  | 30d | 1,069.46 |
| 279 | 2.8.1.4.1 | CONCRETO f'c=175 kg/cm2 EN MUROS | 1d | 2026-06-19 | 2026-06-19 | 282SS | 40d | 196.4 |
| 280 | 2.8.1.4.2 | CONCRETO f'c=175 kg/cm2 EN LOSA | 1d | 2026-06-20 | 2026-06-20 | 283SS | 38d | 65.47 |
| 281 | 2.8.1.4.3 | ENCOFRADO Y DESENCOFRADO EN DADOS | 1d | 2026-06-18 | 2026-06-18 | 273 | 30d | 21.37 |
| 282 | 2.8.1.4.4 | ENCOFRADO Y DESENCOFRADO EN MUROS | 1d | 2026-06-19 | 2026-06-19 | 277 | 38d | 343.78 |
| 283 | 2.8.1.4.5 | ENCOFRADO Y DESENCOFRADO EN LOSAS | 1d | 2026-06-20 | 2026-06-20 | 282 | 38d | 56.13 |
| 284 | 2.8.1.4.6 | ACERO CORRUGADO f'y=4200 kg/cm2 G-60 | 3d | 2026-06-18 | 2026-06-20 | 273 | 39d | 386.31 |
| 285 | 2.8.1.5 | **REVOQUES, ENLUCIDOS Y MOLDURAS** | 1d | 2026-06-21 | 2026-06-21 |  | 38d | 150.87 |
| 286 | 2.8.1.5.1 | TARRAJEO INTERIOR MEZCLA C:A 1:4, e=1.5 cm | 1d | 2026-06-21 | 2026-06-21 | 280 | 38d | 150.87 |
| 287 | 2.8.1.6 | **ASENTADO DE PIEDRA** | 1d | 2026-06-21 | 2026-06-21 |  | 38d | 89.57 |
| 288 | 2.8.1.6.1 | EMPEDRADO, ASENTADO Y EMBOQUILLADO C/CONCRETO f´c=140kg/cm2, e=15cm | 1d | 2026-06-21 | 2026-06-21 | 280 | 38d | 89.57 |

| ID | WBS | Task | Duration | Start | Finish | Predecessors | Total slack | Cost |
| --- | --- | --- | --- | --- | --- | --- | --- | --- |
| 289 | 2.8.1.7 | **FILTROS** | 1d | 2026-06-21 | 2026-06-21 |  | 38d | 21.43 |
| 290 | 2.8.1.7.1 | PIEDRA CHANCADA DE 1/2" | 1d | 2026-06-21 | 2026-06-21 | 280 | 38d | 21.43 |
| 291 | 2.8.1.8 | **INSTALACIONES SANITARIAS** | 1d | 2026-06-21 | 2026-06-21 |  | 38d | 976.74 |
| 292 | 2.8.1.8.1 | SUMINISTRO Y COLOC. DE ACCESORIOS EN VALVULA DE PURGA Ø = 1 1/2" | 1d | 2026-06-21 | 2026-06-21 | 283 | 38d | 976.74 |
| 293 | 2.8.1.9 | **CARPINTERIA METALICA** | 1d | 2026-06-21 | 2026-06-21 |  | 38d | 907.72 |
| 294 | 2.8.1.9.1 | SUMINISTRO E INST. DE TAPA METALICA DE 0.60 x 0.60 m e=1/8" INC. ACCESORIOS + PINTURA | 1d | 2026-06-21 | 2026-06-21 | 283 | 38d | 907.72 |
| 295 | 2.8.2 | **VALVULA DE PURGA TIPO 2(03 Und.)** | 5d | 2026-06-19 | 2026-06-23 |  | 30d | 5,501.65 |
| 296 | 2.8.2.1 | **TRABAJOS PRELIMINARES** | 1d | 2026-06-19 | 2026-06-19 |  | 30d | 208.83 |
| 297 | 2.8.2.1.1 | LIMPIEZA Y DESBROCE DE TERRENO MANUAL | 1d | 2026-06-19 | 2026-06-19 | 281 | 30d | 28.19 |
| 298 | 2.8.2.1.2 | TRAZO Y REPLANTEO PRELIMINAR PARA ESTRUCTURAS | 1d | 2026-06-19 | 2026-06-19 | 297SS | 40d | 48.87 |
| 299 | 2.8.2.1.3 | TRAZO Y REPLANTEO DURANTE EL PROCESO PARA ESTRUCTURAS | 1d | 2026-06-19 | 2026-06-19 | 297SS | 40d | 131.77 |
| 300 | 2.8.2.2 | **MOVIMIENTO DE TIERRAS** | 5d | 2026-06-19 | 2026-06-23 |  | 30d | 921.72 |
| 301 | 2.8.2.2.1 | EXCAVACION MANUAL EN TERRENO NORMAL | 1d | 2026-06-19 | 2026-06-19 | 297SS | 30d | 490.37 |
| 302 | 2.8.2.2.2 | RELLENO COMPACTADO CON MATERIAL PROPIO SELECCIONADO | 1d | 2026-06-21 | 2026-06-21 | 305 | 38d | 134.82 |
| 303 | 2.8.2.2.3 | ACARREO Y ELIMINACION DE MAT. EXCEDENTE Dmax=30 m | 1d | 2026-06-23 | 2026-06-23 | 308 | 36d | 296.53 |
| 304 | 2.8.2.3 | **OBRAS DE CONCRETO SIMPLE** | 1d | 2026-06-20 | 2026-06-20 |  | 30d | 18.12 |
| 305 | 2.8.2.3.1 | CONCRETO f'c=140 kg/cm2 EN DADOS | 1d | 2026-06-20 | 2026-06-20 | 309SS | 30d | 18.12 |
| 306 | 2.8.2.4 | **OBRAS DE CONCRETO ARMADO** | 3d | 2026-06-20 | 2026-06-22 |  | 30d | 1,604.12 |
| 307 | 2.8.2.4.1 | CONCRETO f'c=175 kg/cm2 EN MUROS | 1d | 2026-06-21 | 2026-06-21 | 310SS | 30d | 297.12 |
| 308 | 2.8.2.4.2 | CONCRETO f'c=175 kg/cm2 EN LOSA | 1d | 2026-06-22 | 2026-06-22 | 311SS | 36d | 95.68 |
| 309 | 2.8.2.4.3 | ENCOFRADO Y DESENCOFRADO EN DADOS | 1d | 2026-06-20 | 2026-06-20 | 301 | 30d | 32.05 |
| 310 | 2.8.2.4.4 | ENCOFRADO Y DESENCOFRADO EN MUROS | 1d | 2026-06-21 | 2026-06-21 | 305 | 30d | 515.68 |
| 311 | 2.8.2.4.5 | ENCOFRADO Y DESENCOFRADO EN LOSAS | 1d | 2026-06-22 | 2026-06-22 | 307 | 30d | 84.19 |
| 312 | 2.8.2.4.6 | ACERO CORRUGADO f'y=4200 kg/cm2 G-60 | 3d | 2026-06-20 | 2026-06-22 | 301 | 37d | 579.4 |

| ID | WBS | Task | Duration | Start | Finish | Predecessors | Total slack | Cost |
| --- | --- | --- | --- | --- | --- | --- | --- | --- |
| 313 | 2.8.2.5 | **REVOQUES, ENLUCIDOS Y MOLDURAS** | 1d | 2026-06-23 | 2026-06-23 |  | 36d | 226.31 |
| 314 | 2.8.2.5.1 | TARRAJEO INTERIOR MEZCLA C:A 1:4, e=1.5 cm | 1d | 2026-06-23 | 2026-06-23 | 308 | 36d | 226.31 |
| 315 | 2.8.2.6 | **ASENTADO DE PIEDRA** | 1d | 2026-06-23 | 2026-06-23 |  | 36d | 67.18 |
| 316 | 2.8.2.6.1 | EMPEDRADO, ASENTADO Y EMBOQUILLADO C/CONCRETO f´c=140kg/cm2, e=15cm | 1d | 2026-06-23 | 2026-06-23 | 314SS | 36d | 67.18 |
| 317 | 2.8.2.7 | **FILTROS** | 1d | 2026-06-23 | 2026-06-23 |  | 36d | 33.68 |
| 318 | 2.8.2.7.1 | PIEDRA CHANCADA DE 1/2" COMPACTADA | 1d | 2026-06-23 | 2026-06-23 | 316SS | 36d | 33.68 |
| 319 | 2.8.2.8 | **INSTALACIONES SANITARIAS** | 1d | 2026-06-23 | 2026-06-23 |  | 36d | 1,060.11 |
| 320 | 2.8.2.8.1 | SUMINISTRO Y COLOC. DE ACCESORIOS EN VALVULA DE PURGA Ø = 1" | 1d | 2026-06-23 | 2026-06-23 | 316SS | 36d | 1,060.11 |
| 321 | 2.8.2.9 | **CARPINTERIA METALICA** | 1d | 2026-06-23 | 2026-06-23 |  | 36d | 1,361.58 |
| 322 | 2.8.2.9.1 | SUMINISTRO E INST. DE TAPA METALICA DE 0.60 x 0.60 m e=1/8" INC. ACCESORIOS + PINTURA | 1d | 2026-06-23 | 2026-06-23 | 316SS | 36d | 1,361.58 |
| 323 | 2.9 | **VALVULA DE CONTROL (06 und.)** | 7d | 2026-06-23 | 2026-06-29 |  | 30d | 9,091.16 |
| 324 | 2.9.1 | **TRABAJOS PRELIMINARES** | 6d | 2026-06-23 | 2026-06-28 |  | 30d | 175.03 |
| 325 | 2.9.1.1 | LIMPIEZA Y DESBROCE DE TERRENO MANUAL | 1d | 2026-06-23 | 2026-06-23 | 311 | 30d | 23.63 |
| 326 | 2.9.1.2 | TRAZO Y REPLANTEO PRELIMINAR PARA ESTRUCTURAS | 1d | 2026-06-23 | 2026-06-23 | 325SS | 30d | 40.96 |
| 327 | 2.9.1.3 | TRAZO Y REPLANTEO DURANTE EL PROCESO PARA ESTRUCTURAS | 6d | 2026-06-23 | 2026-06-28 | 325SS | 31d | 110.44 |
| 328 | 2.9.2 | **MOVIMIENTO DE TIERRAS** | 6d | 2026-06-24 | 2026-06-29 |  | 30d | 635.57 |
| 329 | 2.9.2.1 | EXCAVACION MANUAL EN TERRENO NORMAL | 2d | 2026-06-24 | 2026-06-25 | 326 | 30d | 351.09 |
| 330 | 2.9.2.2 | RELLENO COMPACTADO CON MATERIAL PROPIO SELECCIONADO | 2d | 2026-06-27 | 2026-06-28 | 334FS-1d | 31d | 172.77 |
| 331 | 2.9.2.3 | ACARREO Y ELIMINACION DE MAT. EXCEDENTE Dmax=30 m | 1d | 2026-06-29 | 2026-06-29 | 333 | 30d | 111.71 |
| 332 | 2.9.3 | **OBRAS DE CONCRETO ARMADO** | 4d | 2026-06-25 | 2026-06-28 |  | 30d | 3,144.05 |
| 333 | 2.9.3.1 | CONCRETO f'c=175 kg/cm2 EN MUROS | 2d | 2026-06-27 | 2026-06-28 | 335FS-2d | 30d | 594.24 |
| 334 | 2.9.3.2 | CONCRETO f'c=175 kg/cm2 EN LOSA | 2d | 2026-06-26 | 2026-06-27 | 336FS-2d | 30d | 191.36 |
| 335 | 2.9.3.3 | ENCOFRADO Y DESENCOFRADO EN MUROS | 2d | 2026-06-27 | 2026-06-28 | 334FS-1d | 30d | 1,031.35 |
| 336 | 2.9.3.4 | ENCOFRADO Y DESENCOFRADO EN LOSAS | 2d | 2026-06-26 | 2026-06-27 | 337 | 30d | 168.38 |
| 337 | 2.9.3.5 | ACERO CORRUGADO f'y=4200 kg/cm2 G-60 | 1d | 2026-06-25 | 2026-06-25 | 329FS-1d | 30d | 1,158.72 |

| ID | WBS | Task | Duration | Start | Finish | Predecessors | Total slack | Cost |
| --- | --- | --- | --- | --- | --- | --- | --- | --- |
| 338 | 2.9.4 | **REVOQUES Y ENLUCIDOS** | 2d | 2026-06-28 | 2026-06-29 |  | 30d | 452.62 |
| 339 | 2.9.4.1 | TARRAJEO INTERIOR MEZCLA C:A 1:4, e=1.5 cm | 2d | 2026-06-28 | 2026-06-29 | 333FS-1d | 30d | 452.62 |
| 340 | 2.9.5 | **FILTROS** | 1d | 2026-06-27 | 2026-06-27 |  | 32d | 65.83 |
| 341 | 2.9.5.1 | PIEDRA CHANCADA DE 1/2" | 1d | 2026-06-27 | 2026-06-27 | 333FS-2d | 32d | 65.83 |
| 342 | 2.9.6 | **INSTALACIONES SANITARIAS** | 2d | 2026-06-28 | 2026-06-29 |  | 30d | 1,894.9 |
| 343 | 2.9.6.1 | SUMINISTRO Y COLOC. DE ACCESORIOS EN VALVULA DE CONTROL Ø = 1" | 2d | 2026-06-28 | 2026-06-29 | 333FS-1d | 30d | 1,630.75 |
| 344 | 2.9.6.2 | SUMINISTRO Y COLOC. DE ACCESORIOS EN VALVULA DE CONTROL Ø = 3/4" | 2d | 2026-06-28 | 2026-06-29 | 343SS | 30d | 264.15 |
| 345 | 2.9.7 | **CARPINTERIA METALICA** | 1d | 2026-06-29 | 2026-06-29 |  | 30d | 2,723.16 |
| 346 | 2.9.7.1 | SUMINISTRO E INST. DE TAPA METALICA DE 0.60 x 0.60 m e=1/8" INC. ACCESORIOS + PINTURA | 1d | 2026-06-29 | 2026-06-29 | 344FS-1d | 30d | 2,723.16 |
| 347 | 2.10 | **CRUCE EN ZANJAS DE VIGA DE CONCRETO ARMADO (01 UND)** | 4d | 2026-06-13 | 2026-06-16 |  | 43d | 1,100.85 |
| 348 | 2.10.1 | **TRABAJOS PRELIMINARES** | 3d | 2026-06-13 | 2026-06-15 |  | 43d | 27.67 |
| 349 | 2.10.1.1 | LIMPIEZA Y DESBROCE DE TERRENO MANUAL | 1d | 2026-06-13 | 2026-06-13 | 195 | 43d | 3.73 |
| 350 | 2.10.1.2 | TRAZO Y REPLANTEO PRELIMINAR PARA ESTRUCTURAS | 1d | 2026-06-13 | 2026-06-13 | 349SS | 43d | 6.48 |
| 351 | 2.10.1.3 | TRAZO Y REPLANTEO DURANTE EL PROCESO PARA ESTRUCTURAS | 3d | 2026-06-13 | 2026-06-15 | 349SS | 44d | 17.46 |
| 352 | 2.10.2 | **MOVIMIENTO DE TIERRAS** | 3d | 2026-06-14 | 2026-06-16 |  | 43d | 118.89 |
| 353 | 2.10.2.1 | EXCAVACION MANUAL DE TERRENO NORMAL | 1d | 2026-06-14 | 2026-06-14 | 350 | 43d | 67.02 |
| 354 | 2.10.2.2 | NIVELACION INTERIOR Y APISONADO (MANUAL) | 1d | 2026-06-14 | 2026-06-14 | 353SS | 43d | 11.29 |
| 355 | 2.10.2.3 | RELLENO COMPACTADO CON MATERIAL PROPIO SELECCIONADO | 1d | 2026-06-16 | 2026-06-16 | 358 | 43d | 4.36 |
| 356 | 2.10.2.4 | ACARREO Y ELIMINACION DE MAT. EXCEDENTE Dmax=30 m | 1d | 2026-06-16 | 2026-06-16 | 358 | 43d | 36.22 |
| 357 | 2.10.3 | **OBRAS DE CONCRETO ARMADO** | 2d | 2026-06-14 | 2026-06-15 |  | 43d | 631.15 |
| 358 | 2.10.3.1 | CONCRETO f'c = 175 Kg/cm2, EN VIGAS | 1d | 2026-06-15 | 2026-06-15 | 360SS | 43d | 55.39 |
| 359 | 2.10.3.2 | CONCRETO f'c = 175 Kg/cm2, EN DADOS DE ANCLAJE | 1d | 2026-06-15 | 2026-06-15 | 360SS | 44d | 130.93 |
| 360 | 2.10.3.3 | ENCOFRADO Y DESENCOFRADO EN DADOS Y VIGAS | 1d | 2026-06-15 | 2026-06-15 | 361 | 43d | 265.57 |
| 361 | 2.10.3.4 | ACERO CORRUGADO f'y=4200 kg/cm2 G-60 | 1d | 2026-06-14 | 2026-06-14 | 354SS | 43d | 179.26 |

| ID | WBS | Task | Duration | Start | Finish | Predecessors | Total slack | Cost |
| --- | --- | --- | --- | --- | --- | --- | --- | --- |
| 362 | 2.10.4 | **SUMINISTRO E INSTALACION DE ACCESORIOS** | 1d | 2026-06-16 | 2026-06-16 |  | 43d | 323.14 |
| 363 | 2.10.4.1 | SUMINISTRO E INSTALACION DE TUBERIA HD DE Ø 2" | 1d | 2026-06-16 | 2026-06-16 | 358 | 43d | 295.02 |
| 364 | 2.10.4.2 | SUMINISTRO E INSTALACION DE MANGUERA HDPE NTP - ISO 4427: 2008 PE 80, PN=10, ø=44.4mm | 1d | 2026-06-16 | 2026-06-16 | 358 | 43d | 28.12 |
| 365 | 2.11 | **CRUCE DE TUBERIA EN PUENTE MODULAR L= 24.5 m (01 UND)** | 3d | 2026-06-18 | 2026-06-20 |  |  | 1,438.58 |
| 366 | 2.11.1 | **TRABAJOS PRELIMINARES** | 2d | 2026-06-18 | 2026-06-19 |  |  | 120.15 |
| 367 | 2.11.1.1 | LIMPIEZA Y DESBROCE DE TERRENO MANUAL | 1d | 2026-06-18 | 2026-06-18 | 217FS-2d |  | 0.69 |
| 368 | 2.11.1.2 | TRAZO Y REPLANTEO PRELIMINAR PARA ESTRUCTURAS | 1d | 2026-06-18 | 2026-06-18 | 367SS |  | 32.32 |
| 369 | 2.11.1.3 | TRAZO Y REPLANTEO DURANTE EL PROCESO PARA ESTRUCTURAS | 2d | 2026-06-18 | 2026-06-19 | 367SS | 40d | 87.14 |
| 370 | 2.11.2 | **MOVIMIENTO DE TIERRAS** | 3d | 2026-06-18 | 2026-06-20 |  |  | 39.19 |
| 371 | 2.11.2.1 | EXCAVACION MANUAL DE TERRENO NORMAL | 1d | 2026-06-18 | 2026-06-18 | 368SS |  | 21.66 |
| 372 | 2.11.2.2 | NIVELACION INTERIOR Y APISONADO (MANUAL) | 1d | 2026-06-18 | 2026-06-18 | 371SS |  | 3.68 |
| 373 | 2.11.2.3 | RELLENO COMPACTADO CON MATERIAL PROPIO SELECCIONADO | 1d | 2026-06-20 | 2026-06-20 | 376 | 39d | 7.42 |
| 374 | 2.11.2.4 | ACARREO Y ELIMINACION DE MAT. EXCEDENTE Dmax=30 m | 1d | 2026-06-20 | 2026-06-20 | 373SS | 39d | 6.43 |
| 375 | 2.11.3 | **OBRAS DE CONCRETO ARMADO** | 1d | 2026-06-19 | 2026-06-19 |  | 39d | 343.18 |
| 376 | 2.11.3.1 | CONCRETO f'c = 175 Kg/cm2, EN DADOS DE ANCLAJE | 1d | 2026-06-19 | 2026-06-19 | 377SS | 39d | 171.22 |
| 377 | 2.11.3.2 | ENCOFRADO Y DESENCOFRADO EN DADOS | 1d | 2026-06-19 | 2026-06-19 | 372 | 39d | 171.96 |
| 378 | 2.11.4 | **SUMINISTRO E INSTALACION DE ACCESORIOS** | 1d | 2026-06-20 | 2026-06-20 |  | 39d | 936.06 |
| 379 | 2.11.4.1 | SUMINISTRO E INSTALACION DE TUBERIA FºGº DE Ø 1 1/2" | 1d | 2026-06-20 | 2026-06-20 | 376 | 39d | 565.5 |
| 380 | 2.11.4.2 | SUMINISTRO E INSTALACION DE ANCLAJE DE TUBERIA A PUENTE METALICO | 1d | 2026-06-20 | 2026-06-20 | 376 | 39d | 370.56 |
| 381 | 2.12 | **CRUCE DE TUBERIA EN ALCANTARILLA (01 UND)** | 2d | 2026-06-19 | 2026-06-20 |  |  | 598.75 |
| 382 | 2.12.1 | **TRABAJOS PRELIMINARES** | 1d | 2026-06-19 | 2026-06-19 |  |  | 15.03 |
| 383 | 2.12.1.1 | LIMPIEZA Y DESBROCE DE TERRENO MANUAL | 1d | 2026-06-19 | 2026-06-19 | 372 |  | 2.03 |
| 384 | 2.12.1.2 | TRAZO Y REPLANTEO PRELIMINAR PARA ESTRUCTURAS | 1d | 2026-06-19 | 2026-06-19 | 383SS |  | 3.52 |
| 385 | 2.12.1.3 | TRAZO Y REPLANTEO DURANTE EL PROCESO PARA ESTRUCTURAS | 1d | 2026-06-19 | 2026-06-19 | 383SS | 40d | 9.48 |

| ID | WBS | Task | Duration | Start | Finish | Predecessors | Total slack | Cost |
| --- | --- | --- | --- | --- | --- | --- | --- | --- |
| 386 | 2.12.2 | **SUMINISTRO E INSTALACION DE ACCESORIOS** | 2d | 2026-06-19 | 2026-06-20 |  |  | 583.72 |
| 387 | 2.12.2.1 | SUMINISTRO E INSTALACION DE TUBERIA FºGº DE Ø 1 1/2" | 2d | 2026-06-19 | 2026-06-20 | 384SS |  | 135.72 |
| 388 | 2.12.2.2 | SUMINISTRO E INSTALACION DE CODO FºGº DE Ø 1 1/2" | 2d | 2026-06-19 | 2026-06-20 | 387SS |  | 170.08 |
| 389 | 2.12.2.3 | SUMINISTRO E INSTALACION DE ANCLAJE DE TUBERIA A PUENTE METALICO | 2d | 2026-06-19 | 2026-06-20 | 388SS | 39d | 277.92 |
| 390 | 2.13 | **CONEXIONES DOMICILIARIAS (15 Und.)** | 11d | 2026-06-21 | 2026-07-01 |  |  | 9,598.19 |
| 391 | 2.13.1 | **TRABAJOS PRELIMINARES** | 3d | 2026-06-21 | 2026-06-23 |  |  | 447 |
| 392 | 2.13.1.1 | LIMPIEZA Y DESBROCE DE TERRENO MANUAL | 1d | 2026-06-21 | 2026-06-21 | 388 |  | 195.2 |
| 393 | 2.13.1.2 | TRAZO Y REPLANTEO INICIAL PARA LINEAS DE AGUA | 1d | 2026-06-21 | 2026-06-21 | 392SS |  | 125.9 |
| 394 | 2.13.1.3 | TRAZO Y REPLANTEO FINAL PARA LINEAS DE AGUA | 3d | 2026-06-21 | 2026-06-23 | 392SS | 36d | 125.9 |
| 395 | 2.13.2 | **MOVIMIENTO DE TIERRAS** | 9d | 2026-06-22 | 2026-06-30 |  |  | 3,500.46 |
| 396 | 2.13.2.1 | EXCAVACION MANUAL EN TERRENO NORMAL DE ZANJA DE 0.50 x 0.80 m P/TUBERIA | 4d | 2026-06-22 | 2026-06-25 | 393 |  | 1,431.86 |
| 397 | 2.13.2.2 | REFINE Y NIVELACION DE FONDO PARA ZANJA DE 0.50 x 0.80 m P/TUBERIA | 4d | 2026-06-22 | 2026-06-25 | 396SS |  | 110.88 |
| 398 | 2.13.2.3 | CAMA DE APOYO PARA TUBERIA CON MAT. PROPIO ZARANDEADO E=0.10m, A=0.50 m | 4d | 2026-06-22 | 2026-06-25 | 397SS |  | 219.45 |
| 399 | 2.13.2.4 | PRIMER RELLENO COMPACTADO DE ZANJA, CON MAT. PROPIO ZARANDEADO, E=0.30m, A=0.50 m | 4d | 2026-06-26 | 2026-06-29 | 398 | 30d | 973.67 |
| 400 | 2.13.2.5 | SEGUNDO RELLENO COMPACTADO DE ZANJA CON MAT. PROPIO, E=0.40m, A=0.50 m | 4d | 2026-06-27 | 2026-06-30 | 405SS | 29d | 609.84 |
| 401 | 2.13.2.6 | RELLENO COMPACTADO CON MATERIAL PROPIO SELECCIONADO | 4d | 2026-06-26 | 2026-06-29 | 404FS-4d | 30d | 7.85 |
| 402 | 2.13.2.7 | ACARREO Y ELIMINACION DE MAT. EXCEDENTE Dmax=30 m | 4d | 2026-06-27 | 2026-06-30 | 405FS-4d | 29d | 146.91 |
| 403 | 2.13.3 | **OBRAS DE CONCRETO SIMPLE** | 5d | 2026-06-26 | 2026-06-30 |  |  | 866.23 |
| 404 | 2.13.3.1 | SOLADO f´c=100 Kg/cm2, e=5 cm | 4d | 2026-06-26 | 2026-06-29 | 398 |  | 190.28 |
| 405 | 2.13.3.2 | CONCRETO f'c=140 kg/cm2 EN LOSA | 4d | 2026-06-27 | 2026-06-30 | 406SS | 28d | 395.69 |
| 406 | 2.13.3.3 | ENCOFRADO Y DESENCOFRADO EN LOSA | 4d | 2026-06-27 | 2026-06-30 | 404FS-3d |  | 280.26 |
| 407 | 2.13.4 | **SUMINISTRO E INSTALACIÓN DE CAJA PREFABRICADA INC. ACCESORIOS** | 4d | 2026-06-28 | 2026-07-01 |  | 28d | 3,770.41 |
| 408 | 2.13.4.1 | SUMINISTRO E INSTALACION DE CAJA PREFABRICADA INC. ACCESESORIOS - TUB. MATRIZ 3/4" | 4d | 2026-06-28 | 2026-07-01 | 405FS-3d | 28d | 1,938.65 |
| 409 | 2.13.4.2 | SUMINISTRO E INSTALACION DE CAJA PREFABRICADA INC. ACCESESORIOS - TUB. MATRIZ 1" | 4d | 2026-06-28 | 2026-07-01 | 408SS | 28d | 1,831.76 |

| ID | WBS | Task | Duration | Start | Finish | Predecessors | Total slack | Cost |
| --- | --- | --- | --- | --- | --- | --- | --- | --- |
| 410 | 2.13.5 | **SUMINISTRO E INSTALACION DE TUBERIA** | 4d | 2026-06-28 | 2026-07-01 |  | 28d | 1,014.09 |
| 411 | 2.13.5.1 | SUMINISTRO E INSTALACION DE TUBERIA PVC NTP 399.022 SP Ø 1/2" CL-10 | 4d | 2026-06-28 | 2026-07-01 | 409SS | 28d | 686.07 |
| 412 | 2.13.5.2 | PRUEBA HIDRAULICA Y DESINFECCION DE LA TUBERIA | 4d | 2026-06-28 | 2026-07-01 | 411SS | 28d | 328.02 |
| 413 | 2.14 | **LAVADERO MULTIUSO PARA VIVIENDAS DOMICILIARIAS (13 Und.)** | 11d | 2026-06-22 | 2026-07-02 |  | 27d | 20,438.84 |
| 414 | 2.14.1 | **TRABAJOS PRELIMINARES** | 7d | 2026-06-22 | 2026-06-28 |  | 27d | 652.67 |
| 415 | 2.14.1.1 | LIMPIEZA Y DESBROCE DE TERRENO MANUAL | 1d | 2026-06-22 | 2026-06-22 | 392 | 27d | 88.1 |
| 416 | 2.14.1.2 | TRAZO Y REPLANTEO PRELIMINAR PARA ESTRUCTURAS | 1d | 2026-06-22 | 2026-06-22 | 415SS | 27d | 152.74 |
| 417 | 2.14.1.3 | TRAZO Y REPLANTEO DURANTE EL PROCESO PARA ESTRUCTURAS | 7d | 2026-06-22 | 2026-06-28 | 415SS | 31d | 411.83 |
| 418 | 2.14.2 | **MOVIMIENTO DE TIERRAS** | 9d | 2026-06-23 | 2026-07-01 |  | 27d | 2,938.13 |
| 419 | 2.14.2.1 | EXCAVACION MANUAL EN TERRENO NORMAL | 4d | 2026-06-23 | 2026-06-26 | 416 | 27d | 1,332.8 |
| 420 | 2.14.2.2 | RELLENO COMPACTADO CON MATERIAL PROPIO SELECCIONADO | 4d | 2026-06-24 | 2026-06-27 | 423FS-3d | 32d | 1,174.08 |
| 421 | 2.14.2.3 | ACARREO Y ELIMINACION DE MAT. EXCEDENTE Dmax=30 m | 4d | 2026-06-28 | 2026-07-01 | 425FS-2d | 28d | 431.25 |
| 422 | 2.14.3 | **OBRAS DE CONCRETO SIMPLE** | 4d | 2026-06-23 | 2026-06-26 |  | 27d | 402.37 |
| 423 | 2.14.3.1 | CONCRETO CICLOPEO 1:10 + 30% PM EN CIMIENTO | 4d | 2026-06-23 | 2026-06-26 | 419SS | 27d | 402.37 |
| 424 | 2.14.4 | **OBRAS DE CONCRETO ARMADO** | 6d | 2026-06-24 | 2026-06-29 |  | 28d | 7,681.59 |
| 425 | 2.14.4.1 | CONCRETO f'c=175 kg/cm2 EN MUROS | 4d | 2026-06-26 | 2026-06-29 | 427SS | 27d | 2,815.07 |
| 426 | 2.14.4.2 | CONCRETO f'c=175 kg/cm2 EN LOSA | 4d | 2026-06-25 | 2026-06-28 | 428SS | 27d | 523.73 |
| 427 | 2.14.4.3 | ENCOFRADO Y DESENCOFRADO / PARA LAVADEROS EN MURO | 4d | 2026-06-26 | 2026-06-29 | 426FS-3d | 27d | 2,563.55 |
| 428 | 2.14.4.4 | ENCOFRADO Y DESENCOFRADO / PARA LAVADEROS EN LOSA | 4d | 2026-06-25 | 2026-06-28 | 423FS-2d | 27d | 603.1 |
| 429 | 2.14.4.5 | ACERO CORRUGADO f'y=4200 kg/cm2 G-60 | 4d | 2026-06-24 | 2026-06-27 | 423FS-3d | 32d | 1,176.14 |
| 430 | 2.14.5 | **ALBAÑILERIA** | 5d | 2026-06-27 | 2026-07-01 |  | 27d | 1,698.11 |
| 431 | 2.14.5.1 | MURO DE LADRILLO KK 18 HUECOS INDUSTRIAL DE SOGA , C:A:1:4, e=1.50 cm | 5d | 2026-06-27 | 2026-07-01 | 425FS-3d | 27d | 1,698.11 |
| 432 | 2.14.6 | **REVOQUES Y ENLUCIDOS** | 4d | 2026-06-29 | 2026-07-02 |  | 27d | 1,946.31 |
| 433 | 2.14.6.1 | TARRAJEO CON IMPERMEABILIZANTE PULIDO C:A 1:2 / PARA LAVADEROS DOMICILIARIOS | 4d | 2026-06-29 | 2026-07-02 | 431FS-3d | 27d | 879.82 |
| 434 | 2.14.6.2 | TARRAJEO EXTERIOR MEZCLA C:A 1:4, e=1.5 cm / PARA LAVADEROS | 4d | 2026-06-29 | 2026-07-02 | 433SS | 27d | 1,066.49 |

| ID | WBS | Task | Duration | Start | Finish | Predecessors | Total slack | Cost |
| --- | --- | --- | --- | --- | --- | --- | --- | --- |
| 435 | 2.14.7 | **INSTALACIONES SANITARIAS** | 4d | 2026-06-29 | 2026-07-02 |  | 27d | 5,119.66 |
| 436 | 2.14.7.1 | SUMINISTRO Y COLOC. DE ACCESORIOS EN LAVADERO DOMICILIARIO | 4d | 2026-06-29 | 2026-07-02 | 434SS | 27d | 5,119.66 |
| 437 | 2.15 | **LAVADERO MULTIUSO PARA I.E.INICIAL (01 Und.)** | 5d | 2026-06-24 | 2026-06-28 |  | 31d | 1,483.61 |
| 438 | 2.15.1 | **TRABAJOS PRELIMINARES** | 4d | 2026-06-24 | 2026-06-27 |  | 31d | 78.25 |
| 439 | 2.15.1.1 | LIMPIEZA Y DESBROCE DE TERRENO MANUAL | 1d | 2026-06-24 | 2026-06-24 | 714FS-3d | 31d | 10.56 |
| 440 | 2.15.1.2 | TRAZO Y REPLANTEO PRELIMINAR PARA ESTRUCTURAS | 1d | 2026-06-24 | 2026-06-24 | 439SS | 31d | 18.31 |
| 441 | 2.15.1.3 | TRAZO Y REPLANTEO DURANTE EL PROCESO PARA ESTRUCTURAS | 4d | 2026-06-24 | 2026-06-27 | 439SS | 32d | 49.38 |
| 442 | 2.15.2 | **MOVIMIENTO DE TIERRAS** | 4d | 2026-06-25 | 2026-06-28 |  | 31d | 31.8 |
| 443 | 2.15.2.1 | EXCAVACION MANUAL EN TERRENO NORMAL | 1d | 2026-06-25 | 2026-06-25 | 440 | 31d | 15.96 |
| 444 | 2.15.2.2 | RELLENO COMPACTADO CON MATERIAL PROPIO SELECCIONADO | 1d | 2026-06-28 | 2026-06-28 | 449 | 31d | 6.11 |
| 445 | 2.15.2.3 | ACARREO Y ELIMINACION DE MAT. EXCEDENTE Dmax=60 m | 1d | 2026-06-28 | 2026-06-28 | 449 | 31d | 9.73 |
| 446 | 2.15.3 | **OBRAS DE CONCRETO SIMPLE** | 1d | 2026-06-25 | 2026-06-25 |  | 31d | 30.95 |
| 447 | 2.15.3.1 | CONCRETO CICLOPEO 1:10 + 30% PM | 1d | 2026-06-25 | 2026-06-25 | 443SS | 31d | 30.95 |
| 448 | 2.15.4 | **OBRAS DE CONCRETO ARMADO** | 2d | 2026-06-26 | 2026-06-27 |  | 31d | 625.09 |
| 449 | 2.15.4.1 | CONCRETO f'c=210 kg/cm2 EN MUROS | 1d | 2026-06-27 | 2026-06-27 | 450SS | 31d | 147.16 |
| 450 | 2.15.4.2 | CONCRETO f'c=210 kg/cm2 EN LOSA | 1d | 2026-06-27 | 2026-06-27 | 451 | 31d | 81.44 |
| 451 | 2.15.4.3 | ENCOFRADO Y DESENCOFRADO / PARA LAVADEROS | 1d | 2026-06-26 | 2026-06-26 | 447 | 31d | 329.43 |
| 452 | 2.15.4.4 | ACERO CORRUGADO f'y=4200 kg/cm2 G-60 | 1d | 2026-06-26 | 2026-06-26 | 447 | 33d | 67.06 |
| 453 | 2.15.5 | **REVOQUES Y ENLUCIDOS** | 1d | 2026-06-28 | 2026-06-28 |  | 31d | 267.92 |
| 454 | 2.15.5.1 | TARRAJEO CON IMPERMEABILIZANTE PULIDO C:A 1:2 / PARA LAVADEROS INST. EDUCATIVO | 1d | 2026-06-28 | 2026-06-28 | 449 | 31d | 161.47 |
| 455 | 2.15.5.2 | TARRAJEO EXTERIOR MEZCLA C:A 1:4, e=1.5 cm / PARA LAVADEROS | 1d | 2026-06-28 | 2026-06-28 | 449 | 31d | 106.45 |
| 456 | 2.15.6 | **INSTALACIONES SANITARIAS** | 1d | 2026-06-28 | 2026-06-28 |  | 31d | 449.6 |
| 457 | 2.15.6.1 | SUMINISTRO Y COLOC. DE ACCESORIOS EN LAVADERO I.E. INICIAL | 1d | 2026-06-28 | 2026-06-28 | 449 | 31d | 449.6 |
| 458 | 2.16 | **LAVADERO MULTIUSO PARA I.E.PRIMARIA (01 Und.)** | 5d | 2026-05-01 | 2026-05-05 |  | 85d | 2,455.79 |
| 459 | 2.16.1 | **TRABAJOS PRELIMINARES** | 2d | 2026-05-01 | 2026-05-02 |  | 85d | 102.67 |
| 460 | 2.16.1.1 | LIMPIEZA Y DESBROCE DE TERRENO MANUAL | 1d | 2026-05-01 | 2026-05-01 |  | 85d | 13.86 |
| 461 | 2.16.1.2 | TRAZO Y REPLANTEO PRELIMINAR PARA ESTRUCTURAS | 1d | 2026-05-01 | 2026-05-01 | 460SS | 85d | 24.03 |
| 462 | 2.16.1.3 | TRAZO Y REPLANTEO DURANTE EL PROCESO PARA ESTRUCTURAS | 2d | 2026-05-01 | 2026-05-02 | 460SS | 87d | 64.78 |

| ID | WBS | Task | Duration | Start | Finish | Predecessors | Total slack | Cost |
| --- | --- | --- | --- | --- | --- | --- | --- | --- |
| 463 | 2.16.2 | **MOVIMIENTO DE TIERRAS** | 2d | 2026-05-02 | 2026-05-03 |  | 85d | 36.22 |
| 464 | 2.16.2.1 | EXCAVACION MANUAL EN TERRENO NORMAL | 1d | 2026-05-02 | 2026-05-02 | 461 | 85d | 18.86 |
| 465 | 2.16.2.2 | RELLENO COMPACTADO CON MATERIAL PROPIO SELECCIONADO | 1d | 2026-05-03 | 2026-05-03 | 462 | 87d | 14.4 |
| 466 | 2.16.2.3 | ACARREO Y ELIMINACION DE MAT. EXCEDENTE Dmax=60 m | 1d | 2026-05-03 | 2026-05-03 | 462 | 87d | 2.96 |
| 467 | 2.16.3 | **OBRAS DE CONCRETO SIMPLE** | 2d | 2026-05-02 | 2026-05-03 |  | 85d | 630.37 |
| 468 | 2.16.3.1 | CONCRETO CICLOPEO 1:10 + 30% PM | 1d | 2026-05-02 | 2026-05-02 | 464SS | 85d | 30.95 |
| 469 | 2.16.3.2 | CONCRETO f'c=140 Kg/cm2 EN VEREDA | 1d | 2026-05-03 | 2026-05-03 | 471SS | 85d | 269.52 |
| 470 | 2.16.3.3 | CONCRETO f'c=175 kg/cm2 EN LAVADERO INFERIOR | 1d | 2026-05-03 | 2026-05-03 | 471SS | 87d | 218.66 |
| 471 | 2.16.3.4 | ENCOFRADO Y DESENCOFRADO DE VEREDA Y CIMIENTO | 1d | 2026-05-03 | 2026-05-03 | 468 | 85d | 111.24 |
| 472 | 2.16.4 | **OBRAS DE CONCRETO ARMADO** | 2d | 2026-05-04 | 2026-05-05 |  | 85d | 628.61 |
| 473 | 2.16.4.1 | CONCRETO f'c=210 kg/cm2 EN MUROS | 1d | 2026-05-04 | 2026-05-04 | 475SS | 85d | 95.97 |
| 474 | 2.16.4.2 | CONCRETO f'c=210 kg/cm2 EN LOSA | 1d | 2026-05-05 | 2026-05-05 | 476SS | 85d | 52.35 |
| 475 | 2.16.4.3 | ENCOFRADO Y DESENCOFRADO / PARA LAVADEROS - MUROS | 1d | 2026-05-04 | 2026-05-04 | 469 | 85d | 356.58 |
| 476 | 2.16.4.4 | ENCOFRADO Y DESENCOFRADO / PARA LAVADEROS - LOSAS | 1d | 2026-05-05 | 2026-05-05 | 475 | 85d | 40.35 |
| 477 | 2.16.4.5 | ACERO CORRUGADO f'y=4200 kg/cm2 G-60 | 2d | 2026-05-04 | 2026-05-05 | 469 | 85d | 83.36 |
| 478 | 2.16.5 | **REVOQUES Y ENLUCIDOS** | 2d | 2026-05-04 | 2026-05-05 |  | 85d | 363.42 |
| 479 | 2.16.5.1 | TARRAJEO CON IMPERMEABILIZANTE PULIDO C:A 1:2 / PARA LAVADEROS INST. EDUCATIVO | 2d | 2026-05-04 | 2026-05-05 | 473SS | 85d | 163.07 |
| 480 | 2.16.5.2 | TARRAJEO EXTERIOR MEZCLA C:A 1:4, e=1.5 cm / PARA LAVADEROS | 2d | 2026-05-04 | 2026-05-05 | 479SS | 85d | 200.35 |
| 481 | 2.16.6 | **INSTALACIONES SANITARIAS** | 1d | 2026-05-05 | 2026-05-05 |  | 85d | 694.5 |
| 482 | 2.16.6.1 | SUMINISTRO Y COLOC. DE ACCESORIOS EN LAVADERO I. E. PRIMARIA | 1d | 2026-05-05 | 2026-05-05 | 479SS+1d | 85d | 694.5 |
| 483 | 2.17 | **FLETE AGUA POTABLE** | 61d | 2026-05-02 | 2026-07-01 |  | 28d | 20,883.49 |
| 484 | 2.17.1 | FLETE TERRESTRE EN SISTEMA DE AGUA POTABLE | 10d | 2026-05-02 | 2026-06-03 | 5 | 28d | 5,097.96 |
| 485 | 2.17.2 | FLETE RURAL EN SISTEMA DE AGUA POTABLE | 22d | 2026-05-10 | 2026-07-01 | 484SS+8d | 28d | 15,785.53 |
| 486 | 3 | **SISTEMA DE SANEAMIENTO** | 46d | 2026-06-11 | 2026-07-26 |  | 3d | 340,070.73 |
| 487 | 3.1 | **UBS AH PARA VIVIENDAS ( 13 und )** | 41d | 2026-06-16 | 2026-07-26 |  |  | 253,685.54 |
| 488 | 3.1.1 | **CASETA DE UBS PARA VIVIENDAS (13 Und)** | 17d | 2026-06-16 | 2026-07-02 |  |  | 158,694.67 |
| 489 | 3.1.1.1 | **ESTRUCTURAS** | 9d | 2026-06-16 | 2026-06-24 |  |  | 32,697.16 |
| 490 | 3.1.1.1.1 | **TRABAJOS PRELIMINARES** | 1d | 2026-06-16 | 2026-06-16 |  |  | 437.13 |
| 491 | 3.1.1.1.1.1 | LIMPIEZA DE TERRENO MANUAL | 1d | 2026-06-16 | 2026-06-16 | 406FS-15d |  | 133.99 |
| 492 | 3.1.1.1.1.2 | TRAZO Y REPLANTEO INICIAL EN ESTRUCTURAS DE CASETA | 1d | 2026-06-16 | 2026-06-16 | 491SS |  | 71.27 |
| 493 | 3.1.1.1.1.3 | TRAZO Y REPLANTEO DURANTE PROCESO EN ESTRUCTURAS DE CASETA | 1d | 2026-06-16 | 2026-06-16 | 492SS |  | 231.87 |

| ID | WBS | Task | Duration | Start | Finish | Predecessors | Total slack | Cost |
| --- | --- | --- | --- | --- | --- | --- | --- | --- |
| 494 | 3.1.1.1.2 | **MOVIMIENTO DE TIERRAS** | 5d | 2026-06-17 | 2026-06-21 |  |  | 3,913.29 |
| 495 | 3.1.1.1.2.1 | EXCAVACION MANUAL EN TERRENO NORMAL | 4d | 2026-06-17 | 2026-06-20 | 493 |  | 1,647.14 |
| 496 | 3.1.1.1.2.2 | NIVELACION INTERIOR Y APISONADO (MANUAL) | 4d | 2026-06-17 | 2026-06-20 | 495SS |  | 485.6 |
| 497 | 3.1.1.1.2.3 | RELLENO CON MATERIAL PROPIO SELECCIONADO | 4d | 2026-06-18 | 2026-06-21 | 502FS-3d | 38d | 666.55 |
| 498 | 3.1.1.1.2.4 | ACARREO Y ELIMINACION DE MAT. EXCEDENTE Dmax=30 m | 2d | 2026-06-20 | 2026-06-21 | 501FS-2d | 38d | 1,114 |
| 499 | 3.1.1.1.3 | **OBRAS DE CONCRETO SIMPLE** | 8d | 2026-06-17 | 2026-06-24 |  |  | 12,973.56 |
| 500 | 3.1.1.1.3.1 | CONCRETO EN CIMIENTOS C:H 1:10+30% PG | 4d | 2026-06-17 | 2026-06-20 | 496SS | 39d | 7,886.45 |
| 501 | 3.1.1.1.3.2 | CONCRETO EN SOBRECIMIENTOS C:H 1:8+25% PM | 4d | 2026-06-18 | 2026-06-21 | 503SS | 38d | 1,318.2 |
| 502 | 3.1.1.1.3.3 | SOLADO f'c=100 Kg/cm2, e=10 cm | 4d | 2026-06-17 | 2026-06-20 | 496SS |  | 441.29 |
| 503 | 3.1.1.1.3.4 | ENCOFRADO Y DESENCOFRADO PARA SOBRECIMIENTOS | 4d | 2026-06-18 | 2026-06-21 | 502FS-3d |  | 2,793.52 |
| 504 | 3.1.1.1.3.5 | CONCRETO f'c=175 kg/cm2 EN FALSA COLUMNA | 4d | 2026-06-21 | 2026-06-24 | 505SS | 35d | 130.93 |
| 505 | 3.1.1.1.3.6 | ENCOFRADO Y DESENCOFRADO PARA FALSA COLUMNA | 4d | 2026-06-21 | 2026-06-24 | 514FS-2d | 35d | 403.17 |
| 506 | 3.1.1.1.4 | **OBRAS DE CONCRETO ARMADO** | 6d | 2026-06-19 | 2026-06-24 |  | 1d | 15,373.18 |
| 507 | 3.1.1.1.4.1 | CONCRETO f'c=175 kg/cm2 EN COLUMNAS | 4d | 2026-06-20 | 2026-06-23 | 509SS |  | 1,553.7 |
| 508 | 3.1.1.1.4.2 | CONCRETO f'c=175 kg/cm2 EN VIGAS | 4d | 2026-06-21 | 2026-06-24 | 510SS |  | 1,500.02 |
| 509 | 3.1.1.1.4.3 | ENCOFRADO Y DESENCOFRADO EN COLUMNAS | 4d | 2026-06-20 | 2026-06-23 | 514FS-3d |  | 2,909.15 |
| 510 | 3.1.1.1.4.4 | ENCOFRADO Y DESENCOFRADO EN VIGAS | 4d | 2026-06-21 | 2026-06-24 | 507FS-3d |  | 1,644.1 |
| 511 | 3.1.1.1.4.5 | ACERO CORRUGADO f'y=4200 kg/cm2 G-60 EN CASETA DE UBS | 4d | 2026-06-19 | 2026-06-22 | 503FS-3d | 37d | 7,766.21 |
| 512 | 3.1.1.2 | **ARQUITECTURA** | 14d | 2026-06-19 | 2026-07-02 |  |  | 89,076.59 |
| 513 | 3.1.1.2.1 | **MUROS Y TABIQUES DE ALBAÑILERIA** | 4d | 2026-06-19 | 2026-06-22 |  |  | 19,150.59 |
| 514 | 3.1.1.2.1.1 | MURO DE LADRILLO KK 18 HUECOS INDUSTRIAL DE SOGA ACABADO CARAVISTA, C:A 1:4, e=1.50 cm | 4d | 2026-06-19 | 2026-06-22 | 503FS-3d |  | 19,150.59 |
| 515 | 3.1.1.2.2 | **REVOQUES Y ENLUCIDOS** | 4d | 2026-06-23 | 2026-06-26 |  |  | 11,739.19 |
| 516 | 3.1.1.2.2.1 | TARRAJEO DE MUROS INTERIORES C/IMPERMEABILIZANTE Y CEMENTO PULIDO C:A=1:5, e =1.5 cm. | 4d | 2026-06-23 | 2026-06-26 | 508FS-2d |  | 5,975.49 |
| 517 | 3.1.1.2.2.2 | TARRAJEO INTERIOR DE MURO CEMENTO FROTACHADO C:A=1:5, e =1.5 cm. | 4d | 2026-06-23 | 2026-06-26 | 516SS | 33d | 1,654.34 |
| 518 | 3.1.1.2.2.3 | TARRAJEO EXTERIOR EN COLUMNAS Y VIGAS / ACABADO FR0TACHADO E=1.5CM | 4d | 2026-06-23 | 2026-06-26 | 517SS | 33d | 2,961.28 |
| 519 | 3.1.1.2.2.4 | BRUÑA 1 cm. | 4d | 2026-06-23 | 2026-06-26 | 518SS | 33d | 1,148.08 |

| ID | WBS | Task | Duration | Start | Finish | Predecessors | Total slack | Cost |
| --- | --- | --- | --- | --- | --- | --- | --- | --- |
| 520 | 3.1.1.2.3 | **ZOCALOS Y CONTRAZOCALOS** | 4d | 2026-06-25 | 2026-06-28 |  | 31d | 982.3 |
| 521 | 3.1.1.2.3.1 | CONTRAZOCALO EXTERIOR C/CEMENTO PULIDO C:A=1:4, e =1.5 cm. | 4d | 2026-06-25 | 2026-06-28 | 516FS-2d | 31d | 982.3 |
| 522 | 3.1.1.2.4 | **PISOS Y PAVIMENTOS** | 5d | 2026-06-25 | 2026-06-29 |  |  | 6,843.5 |
| 523 | 3.1.1.2.4.1 | CONCRETO F'C=175 KG/CM2 PARA PISO E=0.10 M ACABADO Y PULIDO COLOREADO | 4d | 2026-06-25 | 2026-06-28 | 516FS-2d |  | 2,013.95 |
| 524 | 3.1.1.2.4.2 | CONCRETO F'C=175 KG/CM2 PARA VEREDA, E=0.10 M | 4d | 2026-06-26 | 2026-06-29 | 525SS |  | 2,587.73 |
| 525 | 3.1.1.2.4.3 | ENCOFRADO Y DESENCOFRADO PARA VEREDAS | 4d | 2026-06-26 | 2026-06-29 | 523FS-3d |  | 825.83 |
| 526 | 3.1.1.2.4.4 | JUNTAS CON TEKNOPORT DE E=1" | 4d | 2026-06-26 | 2026-06-29 | 525SS | 30d | 381.94 |
| 527 | 3.1.1.2.4.5 | BRUÑA 1 cm. | 4d | 2026-06-26 | 2026-06-29 | 525SS | 30d | 700.05 |
| 528 | 3.1.1.2.4.6 | JUNTAS ASFALTICAS EN VEREDAS E=1" | 4d | 2026-06-26 | 2026-06-29 | 525SS | 30d | 334 |
| 529 | 3.1.1.2.5 | **COBERTURAS** | 4d | 2026-06-27 | 2026-06-30 |  |  | 23,239.8 |
| 530 | 3.1.1.2.5.1 | COBERTURA METALICA DE CALAMINA ALUZINC TR4 E=0.40MM | 4d | 2026-06-27 | 2026-06-30 | 524FS-3d |  | 6,000.27 |
| 531 | 3.1.1.2.5.2 | VIGA DE TUBO RECTANGULAR METALICO 2"x3"x10´ | 4d | 2026-06-27 | 2026-06-30 | 530SS | 29d | 8,401.74 |
| 532 | 3.1.1.2.5.3 | CORREAS DE TUBO CUADRADO METALICO 2"x2"x10´ | 4d | 2026-06-27 | 2026-06-30 | 530SS |  | 8,837.79 |
| 533 | 3.1.1.2.6 | **CARPINTERIA METALICA** | 4d | 2026-06-29 | 2026-07-02 |  | 27d | 13,792.22 |
| 534 | 3.1.1.2.6.1 | PUERTA METALICA (0.80m x 2.15m), CON MARCO METALICO | 4d | 2026-06-29 | 2026-07-02 | 530FS-2d | 27d | 10,711.87 |
| 535 | 3.1.1.2.6.2 | VENTANA METALICA V-1 (0.50x0.80m) CON VIDRIO 6MM | 4d | 2026-06-29 | 2026-07-02 | 534SS | 27d | 3,080.35 |
| 536 | 3.1.1.2.7 | **CERRAJERIA** | 4d | 2026-06-29 | 2026-07-02 |  | 27d | 3,226.6 |
| 537 | 3.1.1.2.7.1 | CERROJO DE FIERRO DE 2" PARA PUERTA DE UBS | 1d | 2026-07-02 | 2026-07-02 | 539FS-1d | 27d | 246.87 |
| 538 | 3.1.1.2.7.2 | BISAGRA PARA PUERTA DE 3"x3" | 4d | 2026-06-29 | 2026-07-02 | 534SS | 27d | 1,180.53 |
| 539 | 3.1.1.2.7.3 | SUMINISTRO E INSTALACION DE ANGULO DE 2X2cm CON PERNOS DE 1/4"x4" | 4d | 2026-06-29 | 2026-07-02 | 534SS | 27d | 1,799.2 |
| 540 | 3.1.1.2.8 | **PINTURA** | 2d | 2026-07-01 | 2026-07-02 |  | 27d | 10,102.39 |
| 541 | 3.1.1.2.8.1 | PINTURA LATEX EN INTERIORES C/IMPERMEABILIZANTE (DOS MANOS) | 2d | 2026-07-01 | 2026-07-02 | 530 | 27d | 4,177.74 |
| 542 | 3.1.1.2.8.2 | PINTURA LATEX EN EXTERIORES (DOS MANOS) | 2d | 2026-07-01 | 2026-07-02 | 541SS | 27d | 1,584 |
| 543 | 3.1.1.2.8.3 | PINTURA ESMALTE EN EXTERIORES DE CONTRAZOCALOS | 2d | 2026-07-01 | 2026-07-02 | 541SS | 27d | 467.64 |
| 544 | 3.1.1.2.8.4 | PINTURA EN MURO DE LADRILLO EXTERIOR CON BARNIZ | 2d | 2026-07-01 | 2026-07-02 | 541SS | 27d | 3,873.01 |

| ID | WBS | Task | Duration | Start | Finish | Predecessors | Total slack | Cost |
| --- | --- | --- | --- | --- | --- | --- | --- | --- |
| 545 | 3.1.1.3 | **INSTALACIONES SANITARIAS** | 5d | 2026-06-20 | 2026-06-24 |  | 34d | 28,943.2 |
| 546 | 3.1.1.3.1 | **SISTEMA DE DESAGUE** | 4d | 2026-06-20 | 2026-06-23 |  | 34d | 11,742.38 |
| 547 | 3.1.1.3.1.1 | SUMINISTRO E INST. DE SALIDA DE TUBERIA DE VENTILACION PVC SAL 2" | 4d | 2026-06-20 | 2026-06-23 | 514FS-3d | 34d | 1,691.56 |
| 548 | 3.1.1.3.1.2 | SUMINISTRO E INST. DE SALIDA PVC P/INODORO Ø4" | 4d | 2026-06-20 | 2026-06-23 | 547SS | 36d | 889.33 |
| 549 | 3.1.1.3.1.3 | SUMINISTRO E INST. DE SALIDA PVC P/SUMIDERO Ø2" | 4d | 2026-06-20 | 2026-06-23 | 547SS | 36d | 1,281.54 |
| 550 | 3.1.1.3.1.4 | SUMINISTRO E INST. DE SALIDA PVC P/RR Ø2" | 4d | 2026-06-20 | 2026-06-23 | 547SS | 36d | 1,220.31 |
| 551 | 3.1.1.3.1.5 | SUMINISTRO E INST. DE SALIDA PVC P/DUCHA Ø2" | 4d | 2026-06-20 | 2026-06-23 | 547SS | 36d | 1,281.54 |
| 552 | 3.1.1.3.1.6 | SUMINISTRO E INST. DE SALIDA PVC P/LAVAMANOS Ø2" | 4d | 2026-06-20 | 2026-06-23 | 547SS | 36d | 921.83 |
| 553 | 3.1.1.3.1.7 | SUMINISTRO E INST. DE SALIDA PVC P/LAVADERO MULTIUSO Ø2" | 4d | 2026-06-20 | 2026-06-23 | 547SS | 36d | 1,065.61 |
| 554 | 3.1.1.3.1.8 | SUMINISTRO E INST. DE TUBERIA Y ACCESORIOS DE Ø4" Y Ø2" | 4d | 2026-06-20 | 2026-06-23 | 547SS | 36d | 3,390.66 |
| 555 | 3.1.1.3.2 | **APARATOS Y ACCESORIOS SANITARIOS** | 4d | 2026-06-21 | 2026-06-24 |  | 35d | 11,332.49 |
| 556 | 3.1.1.3.2.1 | SUMINISTRO E INSTALACION DE INODORO TANQUE BAJO BLANCO | 4d | 2026-06-21 | 2026-06-24 | 547FS-3d | 35d | 5,528.77 |
| 557 | 3.1.1.3.2.2 | SUMINISTRO E INSTALACION DE LAVATORIO TIPO FONTANA DE LOSA VITRIFICADA INC. ACCESORIOS | 4d | 2026-06-21 | 2026-06-24 | 556SS | 35d | 3,708.12 |
| 558 | 3.1.1.3.2.3 | SUMINISTRO E INSTALACION DE DUCHA CROMADA INC. ACCESORIOS | 4d | 2026-06-21 | 2026-06-24 | 556SS | 35d | 2,095.6 |
| 559 | 3.1.1.3.3 | **SISTEMA DE AGUA FRÍA** | 4d | 2026-06-21 | 2026-06-24 |  | 35d | 5,868.33 |
| 560 | 3.1.1.3.3.1 | SUMINISTRO E INST. SALIDA PVC P/INODORO Ø1/2" | 4d | 2026-06-21 | 2026-06-24 | 547FS-3d | 35d | 723.45 |
| 561 | 3.1.1.3.3.2 | SUMINISTRO E INST. SALIDA PVC P/DUCHA Ø1/2" | 4d | 2026-06-21 | 2026-06-24 | 560SS | 35d | 543.66 |
| 562 | 3.1.1.3.3.3 | SUMININISTRO E INST. SALIDA PVC P/LAVATORIO Ø1/2 | 4d | 2026-06-21 | 2026-06-24 | 560SS | 35d | 723.45 |
| 563 | 3.1.1.3.3.4 | SUMINISTRO E INST. DE TUBERIA Y ACCESORIOS DE RED INTERNA AGUA | 4d | 2026-06-21 | 2026-06-24 | 560SS | 35d | 3,538.47 |
| 564 | 3.1.1.3.3.5 | PRUEBA HIDRAULICA Y DESINFECCION DE LA TUBERIA | 4d | 2026-06-21 | 2026-06-24 | 560SS | 35d | 339.3 |
| 565 | 3.1.1.4 | **INSTALACIONES ELECTRICAS** | 4d | 2026-06-22 | 2026-06-25 |  | 34d | 7,977.72 |
| 566 | 3.1.1.4.1 | SUMINISTRO E INSTALACIÓN DE TUBERIA PVC-P DE Ø 20 mm | 4d | 2026-06-22 | 2026-06-25 | 547FS-2d | 34d | 288.95 |
| 567 | 3.1.1.4.2 | SUMINISTRO E INSTALACIÓN DE CABLE 2.5 MM2 THW | 4d | 2026-06-22 | 2026-06-25 | 566SS | 34d | 2,085.12 |
| 568 | 3.1.1.4.3 | SALIDA PARA INTERRUPTOR SIMPLE | 4d | 2026-06-22 | 2026-06-25 | 566SS | 34d | 1,366.17 |
| 569 | 3.1.1.4.4 | SALIDA DE TECHO PARA CENTRO DE LUZ | 4d | 2026-06-22 | 2026-06-25 | 566SS | 34d | 3,060.46 |
| 570 | 3.1.1.4.5 | SUMINISTRO E INSTALACION DE TABLERO ELECTRICO (INC. CAJAS Y ACCESORIOS) | 4d | 2026-06-22 | 2026-06-25 | 566SS | 34d | 1,177.02 |

| ID | WBS | Task | Duration | Start | Finish | Predecessors | Total slack | Cost |
| --- | --- | --- | --- | --- | --- | --- | --- | --- |
| 571 | 3.1.2 | **BIODIGESTOR 700 LTS PARA VIVIENDAS(13 Und.)** | 7d | 2026-06-29 | 2026-07-05 |  |  | 25,173.5 |
| 572 | 3.1.2.1 | **TRABAJOS PRELIMINARES** | 5d | 2026-06-29 | 2026-07-03 |  |  | 739.91 |
| 573 | 3.1.2.1.1 | LIMPIEZA Y DESBROCE DE TERRENO MANUAL | 1d | 2026-06-29 | 2026-06-29 | 532FS-2d |  | 85.23 |
| 574 | 3.1.2.1.2 | TRAZO Y REPLANTEO PRELIMINAR PARA ESTRUCTURAS | 1d | 2026-06-29 | 2026-06-29 | 573SS |  | 177.12 |
| 575 | 3.1.2.1.3 | TRAZO Y REPLANTEO DURANTE EL PROCESO PARA ESTRUCTURAS | 5d | 2026-06-29 | 2026-07-03 | 573SS | 26d | 477.56 |
| 576 | 3.1.2.2 | **MOVIMIENTO DE TIERRAS** | 6d | 2026-06-30 | 2026-07-05 |  |  | 4,441.76 |
| 577 | 3.1.2.2.1 | EXCAVACION MANUAL EN TERRENO NORMAL | 4d | 2026-06-30 | 2026-07-03 | 574 |  | 2,194.09 |
| 578 | 3.1.2.2.2 | REFINE Y COMPACTACION DE FONDOS | 4d | 2026-06-30 | 2026-07-03 | 577SS |  | 290.76 |
| 579 | 3.1.2.2.3 | RELLENO COMPACTADO CON MATERIAL PROPIO SELECCIONADO | 2d | 2026-07-04 | 2026-07-05 | 582 | 24d | 1,279.23 |
| 580 | 3.1.2.2.4 | ACARREO Y ELIMINACION DE MAT. EXCEDENTE Dmax=30 m | 1d | 2026-07-05 | 2026-07-05 | 587FS-1d | 24d | 677.68 |
| 581 | 3.1.2.3 | **OBRAS DE CONCRETO SIMPLE** | 3d | 2026-07-01 | 2026-07-03 |  |  | 655.04 |
| 582 | 3.1.2.3.1 | SOLADO f'c=100 Kg/cm2, e=10 cm | 3d | 2026-07-01 | 2026-07-03 | 578FS-3d |  | 655.04 |
| 583 | 3.1.2.4 | **SUMINISTRO E INSTALACION DE TUBERIAS** | 4d | 2026-07-02 | 2026-07-05 |  |  | 648.51 |
| 584 | 3.1.2.4.1 | SUMINISTRO E INSTALACION DE TUBERÍA DE PVC SAL Ø 2" | 4d | 2026-07-02 | 2026-07-05 | 582FS-2d |  | 169.85 |
| 585 | 3.1.2.4.2 | SUMINISTRO E INSTALACION DE TUBERIA DE PVC SAL Ø 4" | 4d | 2026-07-02 | 2026-07-05 | 584SS |  | 478.66 |
| 586 | 3.1.2.5 | **SUMINISTRO E INSTALACION DE BIODIGESTOR** | 3d | 2026-07-03 | 2026-07-05 |  | 24d | 18,688.28 |
| 587 | 3.1.2.5.1 | SUMINISTRO E INSTALACION DE BIODIGESTOR Y ACCESORIOS (700L) | 3d | 2026-07-03 | 2026-07-05 | 585FS-3d | 24d | 18,688.28 |
| 588 | 3.1.3 | **CAJA DE REGISTRO DE LODOS (0.80 x 0.80 m)** | 6d | 2026-07-06 | 2026-07-11 |  |  | 18,489.62 |
| 589 | 3.1.3.1 | **TRABAJOS PRELIMINARES** | 5d | 2026-07-06 | 2026-07-10 |  |  | 104.17 |
| 590 | 3.1.3.1.1 | LIMPIEZA Y DESBROCE DE TERRENO MANUAL | 1d | 2026-07-06 | 2026-07-06 | 585 |  | 14.06 |
| 591 | 3.1.3.1.2 | TRAZO Y REPLANTEO PRELIMINAR PARA ESTRUCTURAS | 1d | 2026-07-06 | 2026-07-06 | 590SS |  | 24.38 |
| 592 | 3.1.3.1.3 | TRAZO Y REPLANTEO DURANTE EL PROCESO PARA ESTRUCTURAS | 5d | 2026-07-06 | 2026-07-10 | 590SS | 19d | 65.73 |
| 593 | 3.1.3.2 | **MOVIMIENTO DE TIERRAS** | 5d | 2026-07-07 | 2026-07-11 |  |  | 896.88 |
| 594 | 3.1.3.2.1 | EXCAVACION MANUAL EN TERRENO NORMAL | 3d | 2026-07-07 | 2026-07-09 | 591 |  | 465.22 |
| 595 | 3.1.3.2.2 | REFINE Y COMPACTACION DE FONDOS | 3d | 2026-07-07 | 2026-07-09 | 594SS |  | 40.02 |
| 596 | 3.1.3.2.3 | ACARREO Y ELIMINACION DE MAT. EXCEDENTE Dmax=30 m | 2d | 2026-07-10 | 2026-07-11 | 599FS-1d | 18d | 391.64 |

| ID | WBS | Task | Duration | Start | Finish | Predecessors | Total slack | Cost |
| --- | --- | --- | --- | --- | --- | --- | --- | --- |
| 597 | 3.1.3.3 | **OBRAS DE CONCRETO ARMADO** | 3d | 2026-07-08 | 2026-07-10 |  |  | 7,892.96 |
| 598 | 3.1.3.3.1 | CONCRETO f'c=175 kg/cm2 EN MUROS | 3d | 2026-07-08 | 2026-07-10 | 599SS |  | 2,094.93 |
| 599 | 3.1.3.3.2 | ENCOFRADO Y DESENCOFRADO EN MUROS | 3d | 2026-07-08 | 2026-07-10 | 600SS |  | 5,030.21 |
| 600 | 3.1.3.3.3 | ACERO CORRUGADO f'y=4200 kg/cm2 G-60 | 3d | 2026-07-08 | 2026-07-10 | 595FS-2d |  | 767.82 |
| 601 | 3.1.3.4 | **REVOQUES, ENLUCIDOS** | 3d | 2026-07-09 | 2026-07-11 |  | 18d | 1,889.08 |
| 602 | 3.1.3.4.1 | TARRAJEO INTERIOR C/IMPERMEBILIZANTE MEZCLA C:A 1:2 C:A E=2.0 cm | 3d | 2026-07-09 | 2026-07-11 | 600FS-2d | 18d | 1,889.08 |
| 603 | 3.1.3.5 | **SUMINISTRO E INSTALACION DE ACCESORIOS** | 3d | 2026-07-09 | 2026-07-11 |  | 18d | 1,806.35 |
| 604 | 3.1.3.5.1 | SUMINISTRO E INSTALACION DE VÁLVULAS Y ACCESORIO DE Ø 2" | 3d | 2026-07-09 | 2026-07-11 | 602SS | 18d | 1,806.35 |
| 605 | 3.1.3.6 | **CARPINTERIA METALICA** | 2d | 2026-07-10 | 2026-07-11 |  | 18d | 5,900.18 |
| 606 | 3.1.3.6.1 | SUMINISTRO E INST. DE TAPA METALICA DE 0.60 x 0.60 m e=1/8" INC. ACCESORIOS + PINTURA | 2d | 2026-07-10 | 2026-07-11 | 604FS-2d | 18d | 5,900.18 |
| 607 | 3.1.4 | **POZO DE ABSORCION - DISPOSICION FINAL** | 13d | 2026-07-08 | 2026-07-20 |  |  | 37,904.5 |
| 608 | 3.1.4.1 | **TRABAJOS PRELIMINARES** | 3d | 2026-07-08 | 2026-07-10 |  |  | 449.22 |
| 609 | 3.1.4.1.1 | LIMPIEZA Y DESBROCE DE TERRENO MANUAL | 1d | 2026-07-08 | 2026-07-08 | 598FS-3d |  | 60.64 |
| 610 | 3.1.4.1.2 | TRAZO Y REPLANTEO PRELIMINAR PARA ESTRUCTURAS | 1d | 2026-07-09 | 2026-07-09 | 609 |  | 105.13 |
| 611 | 3.1.4.1.3 | TRAZO Y REPLANTEO DURANTE EL PROCESO PARA ESTRUCTURAS | 1d | 2026-07-10 | 2026-07-10 | 610 |  | 283.45 |
| 612 | 3.1.4.2 | **MOVIMIENTO DE TIERRAS** | 8d | 2026-07-11 | 2026-07-18 |  |  | 14,952.46 |
| 613 | 3.1.4.2.1 | EXCAVACION MANUAL EN TERRENO NORMAL | 3d | 2026-07-11 | 2026-07-13 | 611 |  | 4,077.72 |
| 614 | 3.1.4.2.2 | REFINE Y COMPACTACION DE FONDOS | 3d | 2026-07-11 | 2026-07-13 | 613SS |  | 172.58 |
| 615 | 3.1.4.2.3 | ACARREO Y ELIMINACION DE MAT. EXCEDENTE Dmax=30 m | 2d | 2026-07-16 | 2026-07-17 | 619FS-1d | 12d | 3,423.59 |
| 616 | 3.1.4.2.4 | RELLENO CON GRAVA GRUESA DE 1/2" | 3d | 2026-07-16 | 2026-07-18 | 617SS | 11d | 7,017.65 |
| 617 | 3.1.4.2.5 | RELLENO CON GRAVA GRUESA DE 2" | 3d | 2026-07-16 | 2026-07-18 | 625FS-2d |  | 260.92 |
| 618 | 3.1.4.3 | **OBRAS DE CONCRETO SIMPLE** | 3d | 2026-07-14 | 2026-07-16 |  | 12d | 2,541.18 |
| 619 | 3.1.4.3.1 | CONCRETO f'c=175 kg/cm2 EN ANILLO DE CIMENTACION | 3d | 2026-07-14 | 2026-07-16 | 620SS | 12d | 1,440.27 |
| 620 | 3.1.4.3.2 | ENCOFRADO Y DESENCOFRADO EN ANILLO DE CIMENTACION | 3d | 2026-07-14 | 2026-07-16 | 614 | 12d | 1,100.91 |

| ID | WBS | Task | Duration | Start | Finish | Predecessors | Total slack | Cost |
| --- | --- | --- | --- | --- | --- | --- | --- | --- |
| 621 | 3.1.4.4 | **OBRAS DE CONCRETO ARMADO** | 3d | 2026-07-15 | 2026-07-17 |  | 12d | 6,850.37 |
| 622 | 3.1.4.4.1 | CONCRETO f'c=175 kg/cm2 EN LOSA SUPERIOR | 3d | 2026-07-15 | 2026-07-17 | 623SS | 12d | 2,654.23 |
| 623 | 3.1.4.4.2 | ACERO CORRUGADO f'y=4200 kg/cm2 G-60 | 3d | 2026-07-15 | 2026-07-17 | 619FS-2d | 12d | 4,196.14 |
| 624 | 3.1.4.5 | **ALBAÑILERIA** | 6d | 2026-07-12 | 2026-07-17 |  |  | 12,004.06 |
| 625 | 3.1.4.5.1 | MURO DE LADRILLO KK ARTESANAL DE CABEZA, C:A 1:4, e=1.50cm / PARA POZO PERCOLADOR e=5cm | 6d | 2026-07-12 | 2026-07-17 | 614FS-2d |  | 12,004.06 |
| 626 | 3.1.4.6 | **CARPINTERIA METALICA** | 1d | 2026-07-20 | 2026-07-20 |  | 9d | 608.66 |
| 627 | 3.1.4.6.1 | ASA DE FIERRO CORRUGADO Ø 3/8" | 1d | 2026-07-20 | 2026-07-20 | 629 | 9d | 608.66 |
| 628 | 3.1.4.7 | **ACCESORIOS** | 3d | 2026-07-17 | 2026-07-19 |  | 9d | 498.55 |
| 629 | 3.1.4.7.1 | SUMINISTRO E INSTALACION DE TUBERIA DE PVC SAL Ø 4" | 3d | 2026-07-17 | 2026-07-19 | 625FS-1d | 9d | 226.46 |
| 630 | 3.1.4.7.2 | SUMINISTRO E INSTALACION DE TEE SANITARIA DE Ø 2" PVC SAL | 3d | 2026-07-17 | 2026-07-19 | 629SS | 10d | 272.09 |
| 631 | 3.1.5 | **OBRAS EXTERIORES** | 8d | 2026-07-19 | 2026-07-26 |  |  | 13,423.25 |
| 632 | 3.1.5.1 | **TRABAJOS PRELIMINARES** | 7d | 2026-07-19 | 2026-07-25 |  |  | 311.05 |
| 633 | 3.1.5.1.1 | LIMPIEZA Y DESBROCE DE TERRENO MANUAL | 2d | 2026-07-19 | 2026-07-20 | 617 |  | 38.72 |
| 634 | 3.1.5.1.2 | TRAZO Y REPLANTEO PRELIMINAR EN LINEAS Y REDES | 2d | 2026-07-19 | 2026-07-20 | 633SS |  | 46.12 |
| 635 | 3.1.5.1.3 | TRAZO Y REPLANTEO DURANTE EL PROCESO EN LINEAS Y REDES | 5d | 2026-07-19 | 2026-07-23 | 633SS | 6d | 56.94 |
| 636 | 3.1.5.1.4 | LIMPIEZA Y DESBROCE DE TERRENO MANUAL | 2d | 2026-07-21 | 2026-07-22 | 634 | 4d | 22.85 |
| 637 | 3.1.5.1.5 | TRAZO Y REPLANTEO PRELIMINAR PARA ESTRUCTURAS | 2d | 2026-07-21 | 2026-07-22 | 636SS | 4d | 39.61 |
| 638 | 3.1.5.1.6 | TRAZO Y REPLANTEO DURANTE EL PROCESO PARA ESTRUCTURAS | 5d | 2026-07-21 | 2026-07-25 | 636SS | 4d | 106.81 |
| 639 | 3.1.5.2 | **MOVIMIENTO DE TIERRAS** | 5d | 2026-07-21 | 2026-07-25 |  |  | 1,837.31 |
| 640 | 3.1.5.2.1 | EXCAVACION MANUAL DE ZANJA P/TUB. T-NORMAL PROF. HASTA 0.60M | 3d | 2026-07-21 | 2026-07-23 | 634 |  | 462.05 |
| 641 | 3.1.5.2.2 | REFINE Y NIVELACION DE ZANJAS T. NORMAL P/TUBERIA | 3d | 2026-07-21 | 2026-07-23 | 640SS |  | 35.72 |
| 642 | 3.1.5.2.3 | RELLENO COMPACTADO CON MATERIAL PROPIO SELECCIONADO | 3d | 2026-07-22 | 2026-07-24 | 647FS-2d | 5d | 595.55 |
| 643 | 3.1.5.2.4 | EXCAVACION MANUAL EN TERRENO NORMAL | 3d | 2026-07-23 | 2026-07-25 | 637 | 4d | 370.92 |
| 644 | 3.1.5.2.5 | REFINE Y COMPACTACION DE FONDOS | 3d | 2026-07-23 | 2026-07-25 | 643SS | 4d | 65.03 |
| 645 | 3.1.5.2.6 | ACARREO Y ELIMINACION DE MAT. EXCEDENTE Dmax=30 m | 2d | 2026-07-23 | 2026-07-24 | 647FS-1d | 5d | 308.04 |

| ID | WBS | Task | Duration | Start | Finish | Predecessors | Total slack | Cost |
| --- | --- | --- | --- | --- | --- | --- | --- | --- |
| 646 | 3.1.5.3 | **OBRAS DE CONCRETO SIMPLE** | 3d | 2026-07-21 | 2026-07-23 |  |  | 389.78 |
| 647 | 3.1.5.3.1 | SOLADO f´c=100 Kg/cm2, e=5 cm | 3d | 2026-07-21 | 2026-07-23 | 641SS |  | 389.78 |
| 648 | 3.1.5.4 | **REVOQUES, ENLUCIDOS** | 3d | 2026-07-24 | 2026-07-26 |  | 3d | 1,238.85 |
| 649 | 3.1.5.4.1 | TARRAJEO INTERIOR C/IMPERMEBILIZANTE MEZCLA C:A 1:2 C:A E=2.0 cm | 3d | 2026-07-24 | 2026-07-26 | 658FS-2d | 3d | 1,238.85 |
| 650 | 3.1.5.5 | **SUMINISTRO E INSTALACION DE TUBERIAS** | 3d | 2026-07-23 | 2026-07-25 |  | 4d | 775.97 |
| 651 | 3.1.5.5.1 | SUMINISTRO E INSTALACION DE TUBERÍA DE PVC SAL Ø 2" | 3d | 2026-07-23 | 2026-07-25 | 647FS-1d | 4d | 495.95 |
| 652 | 3.1.5.5.2 | SUMINISTRO E INSTALACION DE YEE REDUCCION SANITARIA DE Ø 4" A 2" PVC SAL | 3d | 2026-07-23 | 2026-07-25 | 651SS | 4d | 280.02 |
| 653 | 3.1.5.6 | **SUMINISTRO E INSTALACION DE ACCESORIOS** | 3d | 2026-07-23 | 2026-07-25 |  |  | 8,870.29 |
| 654 | 3.1.5.6.1 | SUMINISTRO E INSTALACION DE CODO DE Ø 2"x 45° PVC CLASE LIVIANA | 3d | 2026-07-23 | 2026-07-25 | 647FS-1d |  | 430.04 |
| 655 | 3.1.5.6.2 | SUMINISTRO E INSTALACION DE VÁLVULAS Y ACCESORIO DE Ø 2" | 3d | 2026-07-23 | 2026-07-25 | 654SS | 4d | 1,779.44 |
| 656 | 3.1.5.6.3 | SUMINISTRO E INSTALACION DE CAJA DE REGISTRO PREFABRICADO 0.40x0.70m | 3d | 2026-07-23 | 2026-07-25 | 654SS | 4d | 2,350.27 |
| 657 | 3.1.5.6.4 | SUMINISTRO E INSTALACION DE CAJA PREFABRICADO 0.50x0.80M TRAMPA DE NATAS Y SÓLIDOS | 3d | 2026-07-23 | 2026-07-25 | 654SS | 4d | 2,610.27 |
| 658 | 3.1.5.6.5 | SUMINISTRO E INSTALACION DE CAJA DE VÁLVULAS PREFABRICADO 0.60x0.60m | 3d | 2026-07-23 | 2026-07-25 | 654SS |  | 1,700.27 |
| 659 | 3.2 | **UBS AH PARA I.E. INICIAL ( 01 und )** | 16d | 2026-06-17 | 2026-07-02 |  | 23d | 36,235.62 |
| 660 | 3.2.1 | **CASETA DE UBS PARA I..E.INICIAL (01 Und)** | 11d | 2026-06-17 | 2026-06-27 |  | 23d | 27,318.01 |
| 661 | 3.2.1.1 | **ESTRUCTURAS** | 6d | 2026-06-17 | 2026-06-22 |  | 23d | 5,380.8 |
| 662 | 3.2.1.1.1 | **TRABAJOS PRELIMINARES** | 1d | 2026-06-17 | 2026-06-17 |  | 23d | 85.19 |
| 663 | 3.2.1.1.1.1 | LIMPIEZA DE TERRENO MANUAL | 1d | 2026-06-17 | 2026-06-17 | 493 | 23d | 26.11 |
| 664 | 3.2.1.1.1.2 | TRAZO Y REPLANTEO INICIAL EN ESTRUCTURAS DE CASETA | 1d | 2026-06-17 | 2026-06-17 | 663SS | 23d | 13.89 |
| 665 | 3.2.1.1.1.3 | TRAZO Y REPLANTEO DURANTE PROCESO EN ESTRUCTURAS DE CASETA | 1d | 2026-06-17 | 2026-06-17 | 663SS | 42d | 45.19 |
| 666 | 3.2.1.1.2 | **MOVIMIENTO DE TIERRAS** | 4d | 2026-06-17 | 2026-06-20 |  | 23d | 690.38 |
| 667 | 3.2.1.1.2.1 | EXCAVACION MANUAL EN TERRENO NORMAL | 1d | 2026-06-17 | 2026-06-17 | 664SS | 23d | 282.42 |
| 668 | 3.2.1.1.2.2 | NIVELACION INTERIOR Y APISONADO (MANUAL) | 1d | 2026-06-17 | 2026-06-17 | 667SS | 23d | 94.64 |
| 669 | 3.2.1.1.2.3 | RELLENO CON MATERIAL PROPIO SELECCIONADO | 1d | 2026-06-19 | 2026-06-19 | 674 | 39d | 126.47 |
| 670 | 3.2.1.1.2.4 | ACARREO Y ELIMINACION DE MAT. EXCEDENTE Dmax=30 m | 1d | 2026-06-20 | 2026-06-20 | 669 | 39d | 186.85 |

| ID | WBS | Task | Duration | Start | Finish | Predecessors | Total slack | Cost |
| --- | --- | --- | --- | --- | --- | --- | --- | --- |
| 671 | 3.2.1.1.3 | **OBRAS DE CONCRETO SIMPLE** | 2d | 2026-06-18 | 2026-06-19 |  | 23d | 1,851.26 |
| 672 | 3.2.1.1.3.1 | CONCRETO EN CIMIENTOS C:H 1:10+30% PG | 1d | 2026-06-18 | 2026-06-18 | 668 | 41d | 1,103.88 |
| 673 | 3.2.1.1.3.2 | CONCRETO EN SOBRECIMIENTOS C:H 1:8+25% PM | 1d | 2026-06-19 | 2026-06-19 | 675SS | 23d | 177.82 |
| 674 | 3.2.1.1.3.3 | SOLADO f'c=100 Kg/cm2, e=10 cm | 1d | 2026-06-18 | 2026-06-18 | 668 | 23d | 67.89 |
| 675 | 3.2.1.1.3.4 | ENCOFRADO Y DESENCOFRADO PARA SOBRECIMIENTOS | 1d | 2026-06-19 | 2026-06-19 | 674 | 23d | 404.03 |
| 676 | 3.2.1.1.3.5 | CONCRETO f'c=175 kg/cm2 EN FALSA COLUMNA | 1d | 2026-06-19 | 2026-06-19 | 677SS | 40d | 10.07 |
| 677 | 3.2.1.1.3.6 | ENCOFRADO Y DESENCOFRADO PARA FALSA COLUMNA | 1d | 2026-06-19 | 2026-06-19 | 674 | 40d | 87.57 |
| 678 | 3.2.1.1.4 | **OBRAS DE CONCRETO ARMADO** | 2d | 2026-06-21 | 2026-06-22 |  | 23d | 2,753.97 |
| 679 | 3.2.1.1.4.1 | CONCRETO f'c=175 kg/cm2 EN COLUMNAS | 1d | 2026-06-21 | 2026-06-21 | 681SS | 38d | 212.34 |
| 680 | 3.2.1.1.4.2 | CONCRETO f'c=175 kg/cm2 EN VIGAS | 1d | 2026-06-22 | 2026-06-22 | 682SS | 27d | 214.29 |
| 681 | 3.2.1.1.4.3 | ENCOFRADO Y DESENCOFRADO EN COLUMNAS | 1d | 2026-06-21 | 2026-06-21 | 686FS-1d | 27d | 665.26 |
| 682 | 3.2.1.1.4.4 | ENCOFRADO Y DESENCOFRADO EN VIGAS | 1d | 2026-06-22 | 2026-06-22 | 681 | 27d | 403.47 |
| 683 | 3.2.1.1.4.5 | ACERO CORRUGADO f'y=4200 kg/cm2 G-60 EN CASETA DE UBS | 2d | 2026-06-21 | 2026-06-22 | 673FS+1d | 23d | 1,258.61 |
| 684 | 3.2.1.2 | **ARQUITECTURA** | 7d | 2026-06-20 | 2026-06-26 |  | 27d | 15,732.3 |
| 685 | 3.2.1.2.1 | **MUROS Y TABIQUES DE ALBAÑILERIA** | 2d | 2026-06-20 | 2026-06-21 |  | 27d | 2,535.08 |
| 686 | 3.2.1.2.1.1 | MURO DE LADRILLO KK 18 HUECOS DE SOGA , C:A 1:4, e=1.50 cm | 2d | 2026-06-20 | 2026-06-21 | 673 | 27d | 2,535.08 |
| 687 | 3.2.1.2.2 | **REVOQUES Y ENLUCIDOS** | 1d | 2026-06-23 | 2026-06-23 |  | 27d | 3,166.89 |
| 688 | 3.2.1.2.2.1 | TARRAJEO DE MUROS INTERIORES C/IMPERMEABILIZANTE Y CEMENTO PULIDO C:A=1:5, e =1.5 cm. | 1d | 2026-06-23 | 2026-06-23 | 680 | 27d | 774.24 |
| 689 | 3.2.1.2.2.2 | TARRAJEO INTERIOR DE MURO CEMENTO FROTACHADO C:A=1:5, e =1.5 cm. | 1d | 2026-06-23 | 2026-06-23 | 688SS | 36d | 684.25 |
| 690 | 3.2.1.2.2.3 | TARRAJEO EXTERIOR MEZCLA C:A 1:4, e=1.5 cm | 1d | 2026-06-23 | 2026-06-23 | 688SS | 36d | 613.72 |
| 691 | 3.2.1.2.2.4 | TARRAJEO EXTERIOR EN COLUMNAS Y VIGAS / ACABADO FR0TACHADO E=1.5CM | 1d | 2026-06-23 | 2026-06-23 | 688SS | 36d | 477.24 |
| 692 | 3.2.1.2.2.5 | BRUÑA 1 cm. | 1d | 2026-06-23 | 2026-06-23 | 688SS | 27d | 617.44 |
| 693 | 3.2.1.2.3 | **ZOCALOS Y CONTRAZOCALOS** | 1d | 2026-06-24 | 2026-06-24 |  | 27d | 78.55 |
| 694 | 3.2.1.2.3.1 | CONTRAZOCALO EXTERIOR C/CEMENTO PULIDO C:A=1:4, e =1.5 cm. | 1d | 2026-06-24 | 2026-06-24 | 692 | 27d | 78.55 |

| ID | WBS | Task | Duration | Start | Finish | Predecessors | Total slack | Cost |
| --- | --- | --- | --- | --- | --- | --- | --- | --- |
| 695 | 3.2.1.2.4 | **PISOS Y PAVIMENTOS** | 2d | 2026-06-25 | 2026-06-26 |  | 27d | 1,510.46 |
| 696 | 3.2.1.2.4.1 | CONCRETO F'C=175 KG/CM2 PARA PISO E=0.10 M ACABADO Y PULIDO COLOREADO | 1d | 2026-06-25 | 2026-06-25 | 698SS | 27d | 294.85 |
| 697 | 3.2.1.2.4.2 | CONCRETO F'C=175 KG/CM2 PARA VEREDA, E=0.10 M | 1d | 2026-06-25 | 2026-06-25 | 698SS | 34d | 641.96 |
| 698 | 3.2.1.2.4.3 | ENCOFRADO Y DESENCOFRADO PARA VEREDAS | 1d | 2026-06-25 | 2026-06-25 | 694 | 27d | 220.47 |
| 699 | 3.2.1.2.4.4 | JUNTAS CON TEKNOPORT DE E=1" | 1d | 2026-06-25 | 2026-06-25 | 698SS | 34d | 151.42 |
| 700 | 3.2.1.2.4.5 | BRUÑA 1 cm. | 1d | 2026-06-26 | 2026-06-26 | 696 | 33d | 172.86 |
| 701 | 3.2.1.2.4.6 | JUNTAS ASFALTICAS EN VEREDAS E=1" | 1d | 2026-06-26 | 2026-06-26 | 700SS | 33d | 28.9 |
| 702 | 3.2.1.2.5 | **COBERTURAS** | 1d | 2026-06-23 | 2026-06-23 |  | 36d | 3,418.8 |
| 703 | 3.2.1.2.5.1 | COBERTURA METALICA DE CALAMINA ALUZINC TR4 E=0.40MM | 1d | 2026-06-23 | 2026-06-23 | 680 | 36d | 934.18 |
| 704 | 3.2.1.2.5.2 | VIGA DE TUBO RECTANGULAR METALICO 2"x3"x10´ | 1d | 2026-06-23 | 2026-06-23 | 703SS | 36d | 1,168.82 |
| 705 | 3.2.1.2.5.3 | CORREAS DE TUBO CUADRADO METALICO 2"x2"x10´ | 1d | 2026-06-23 | 2026-06-23 | 703SS | 36d | 1,315.8 |
| 706 | 3.2.1.2.6 | **CARPINTERIA METALICA** | 1d | 2026-06-23 | 2026-06-23 |  | 36d | 3,182.82 |
| 707 | 3.2.1.2.6.1 | PUERTA METALICA (0.80m x 2.15m), CON MARCO METALICO | 1d | 2026-06-23 | 2026-06-23 | 705SS | 36d | 2,471.97 |
| 708 | 3.2.1.2.6.2 | VENTANA METALICA V-1 (0.50x0.80m) CON VIDRIO 6MM | 1d | 2026-06-23 | 2026-06-23 | 705SS | 36d | 710.85 |
| 709 | 3.2.1.2.7 | **CERRAJERIA** | 1d | 2026-06-23 | 2026-06-23 |  | 36d | 640.8 |
| 710 | 3.2.1.2.7.1 | CERROJO DE FIERRO DE 2" PARA PUERTA DE UBS | 1d | 2026-06-23 | 2026-06-23 | 708SS | 36d | 56.97 |
| 711 | 3.2.1.2.7.2 | BISAGRA PARA PUERTA DE 3"x3" | 1d | 2026-06-23 | 2026-06-23 | 708SS | 36d | 272.43 |
| 712 | 3.2.1.2.7.3 | SUMINISTRO E INSTALACION DE ANGULO DE 2X2cm CON PERNOS DE 1/4"x4" | 1d | 2026-06-23 | 2026-06-23 | 708SS | 36d | 311.4 |
| 713 | 3.2.1.2.8 | **PINTURA** | 1d | 2026-06-26 | 2026-06-26 |  | 27d | 1,198.9 |
| 714 | 3.2.1.2.8.1 | PINTURA LATEX EN INTERIORES C/IMPERMEABILIZANTE (DOS MANOS) | 1d | 2026-06-26 | 2026-06-26 | 696 | 27d | 568.43 |
| 715 | 3.2.1.2.8.2 | PINTURA LATEX EN EXTERIORES (DOS MANOS) | 1d | 2026-06-26 | 2026-06-26 | 714SS | 33d | 596.87 |
| 716 | 3.2.1.2.8.3 | PINTURA ESMALTE EN EXTERIORES DE CONTRAZOCALOS | 1d | 2026-06-26 | 2026-06-26 | 714SS | 27d | 33.6 |
| 717 | 3.2.1.3 | **INSTALACIONES SANITARIAS** | 6d | 2026-06-22 | 2026-06-27 |  | 32d | 4,398.54 |
| 718 | 3.2.1.3.1 | **SISTEMA DE DESAGUE** | 1d | 2026-06-22 | 2026-06-22 |  | 36d | 1,348.16 |
| 719 | 3.2.1.3.1.1 | SUMINISTRO E INST. DE SALIDA DE TUBERIA DE VENTILACION PVC SAL 2" | 1d | 2026-06-22 | 2026-06-22 | 686 | 36d | 130.12 |
| 720 | 3.2.1.3.1.2 | SUMINISTRO E INST. DE SALIDA PVC P/INODORO Ø4" | 1d | 2026-06-22 | 2026-06-22 | 719SS | 37d | 205.23 |
| 721 | 3.2.1.3.1.3 | SUMINISTRO E INST. DE SALIDA PVC P/SUMIDERO Ø2" | 1d | 2026-06-22 | 2026-06-22 | 719SS | 37d | 295.74 |
| 722 | 3.2.1.3.1.4 | SUMINISTRO E INST. DE SALIDA PVC P/RR Ø2" | 1d | 2026-06-22 | 2026-06-22 | 719SS | 37d | 93.87 |
| 723 | 3.2.1.3.1.5 | SUMINISTRO E INST. DE SALIDA PVC P/RR Ø2" | 1d | 2026-06-22 | 2026-06-22 | 719SS | 37d | 67.68 |
| 724 | 3.2.1.3.1.6 | SUMINISTRO E INST. DE SALIDA PVC P/LAVAMANOS Ø2" | 1d | 2026-06-22 | 2026-06-22 | 719SS | 37d | 212.73 |
| 725 | 3.2.1.3.1.7 | SUMINISTRO E INST. DE SALIDA PVC P/LAVADERO MULTIUSO Ø2" | 1d | 2026-06-22 | 2026-06-22 | 719SS | 37d | 81.97 |
| 726 | 3.2.1.3.1.8 | SUMINISTRO E INST. DE TUBERIA Y ACCESORIOS DE Ø4" Y Ø2" | 1d | 2026-06-22 | 2026-06-22 | 719SS | 36d | 260.82 |

| ID | WBS | Task | Duration | Start | Finish | Predecessors | Total slack | Cost |
| --- | --- | --- | --- | --- | --- | --- | --- | --- |
| 727 | 3.2.1.3.2 | **APARATOS Y ACCESORIOS SANITARIOS** | 1d | 2026-06-27 | 2026-06-27 |  | 32d | 2,404.27 |
| 728 | 3.2.1.3.2.1 | SUMINISTRO E INSTALACION DE INODORO TANQUE BAJO BLANCO | 1d | 2026-06-27 | 2026-06-27 | 716 | 32d | 425.29 |
| 729 | 3.2.1.3.2.2 | SUMINISTRO E INSTALACION DE INODORO TANQUE BAJO BABY BLANCO | 1d | 2026-06-27 | 2026-06-27 | 728SS | 32d | 816.72 |
| 730 | 3.2.1.3.2.3 | SUMINISTRO E INSTALACION DE LAVATORIO TIPO FONTANA DE LOSA VITRIFICADA INC. ACCESORIOS | 1d | 2026-06-27 | 2026-06-27 | 728SS | 32d | 855.72 |
| 731 | 3.2.1.3.2.4 | SUMIN. E INST. DE GRIFO PARA LAVADERO | 1d | 2026-06-27 | 2026-06-27 | 728SS | 32d | 306.54 |
| 732 | 3.2.1.3.3 | **SISTEMA DE AGUA FRÍA** | 1d | 2026-06-27 | 2026-06-27 |  | 32d | 646.11 |
| 733 | 3.2.1.3.3.1 | SUMINISTRO E INST. SALIDA PVC P/INODORO Ø1/2" | 1d | 2026-06-27 | 2026-06-27 | 716 | 32d | 166.95 |
| 734 | 3.2.1.3.3.2 | SUMININISTRO E INST. SALIDA PVC P/LAVATORIO Ø1/2 | 1d | 2026-06-27 | 2026-06-27 | 733SS | 32d | 166.95 |
| 735 | 3.2.1.3.3.3 | SUMINISTRO E INST. DE TUBERIA Y ACCESORIOS DE RED INTERNA AGUA | 1d | 2026-06-27 | 2026-06-27 | 733SS | 32d | 272.19 |
| 736 | 3.2.1.3.3.4 | PRUEBA HIDRAULICA Y DESINFECCION DE LA TUBERIA | 1d | 2026-06-27 | 2026-06-27 | 733SS | 32d | 40.02 |
| 737 | 3.2.1.4 | **INSTALACIONES ELECTRICAS** | 1d | 2026-06-23 | 2026-06-23 |  | 36d | 1,806.37 |
| 738 | 3.2.1.4.1 | SUMINISTRO E INSTALACIÓN DE TUBERIA PVC-P DE Ø 20 mm | 1d | 2026-06-23 | 2026-06-23 | 726 | 36d | 86.04 |
| 739 | 3.2.1.4.2 | SUMINISTRO E INSTALACIÓN DE CABLE 2.5 MM2 THW | 1d | 2026-06-23 | 2026-06-23 | 738SS | 36d | 620.88 |
| 740 | 3.2.1.4.3 | SALIDA PARA INTERRUPTOR SIMPLE | 1d | 2026-06-23 | 2026-06-23 | 738SS | 36d | 420.36 |
| 741 | 3.2.1.4.4 | SALIDA DE TECHO PARA CENTRO DE LUZ | 1d | 2026-06-23 | 2026-06-23 | 738SS | 36d | 588.55 |
| 742 | 3.2.1.4.5 | SUMINISTRO E INSTALACION DE TABLERO ELECTRICO (INC. CAJAS Y ACCESORIOS) | 1d | 2026-06-23 | 2026-06-23 | 738SS | 36d | 90.54 |
| 743 | 3.2.2 | **BIODIGESTOR 1300 LTS PARA I.E. INICIAL(01 Und.)** | 4d | 2026-06-24 | 2026-06-27 |  | 27d | 2,760.79 |
| 744 | 3.2.2.1 | **TRABAJOS PRELIMINARES** | 1d | 2026-06-24 | 2026-06-24 |  | 27d | 50.8 |
| 745 | 3.2.2.1.1 | LIMPIEZA Y DESBROCE DE TERRENO MANUAL | 1d | 2026-06-24 | 2026-06-24 | 716FS-3d | 27d | 5.85 |
| 746 | 3.2.2.1.2 | TRAZO Y REPLANTEO PRELIMINAR PARA ESTRUCTURAS | 1d | 2026-06-24 | 2026-06-24 | 745SS | 35d | 12.16 |
| 747 | 3.2.2.1.3 | TRAZO Y REPLANTEO DURANTE EL PROCESO PARA ESTRUCTURAS | 1d | 2026-06-24 | 2026-06-24 | 745SS | 27d | 32.79 |
| 748 | 3.2.2.2 | **MOVIMIENTO DE TIERRAS** | 3d | 2026-06-25 | 2026-06-27 |  | 32d | 498.07 |
| 749 | 3.2.2.2.1 | EXCAVACION MANUAL EN TERRENO NORMAL | 1d | 2026-06-25 | 2026-06-25 | 747 | 32d | 259.69 |
| 750 | 3.2.2.2.2 | REFINE Y COMPACTACION DE FONDOS | 1d | 2026-06-25 | 2026-06-25 | 749SS | 32d | 7.46 |
| 751 | 3.2.2.2.3 | RELLENO COMPACTADO CON MATERIAL PROPIO SELECCIONADO | 1d | 2026-06-26 | 2026-06-26 | 754 | 33d | 122.6 |
| 752 | 3.2.2.2.4 | ACARREO Y ELIMINACION DE MAT. EXCEDENTE Dmax=30 m | 1d | 2026-06-27 | 2026-06-27 | 756 | 32d | 108.32 |

| ID | WBS | Task | Duration | Start | Finish | Predecessors | Total slack | Cost |
| --- | --- | --- | --- | --- | --- | --- | --- | --- |
| 753 | 3.2.2.3 | **OBRAS DE CONCRETO SIMPLE** | 1d | 2026-06-25 | 2026-06-25 |  | 32d | 220.12 |
| 754 | 3.2.2.3.1 | SOLADO f'c=100 Kg/cm2, e=10 cm | 1d | 2026-06-25 | 2026-06-25 | 750SS | 32d | 220.12 |
| 755 | 3.2.2.4 | **SUMINISTRO E INSTALACION DE TUBERIAS** | 1d | 2026-06-26 | 2026-06-26 |  | 32d | 54.24 |
| 756 | 3.2.2.4.1 | SUMINISTRO E INSTALACION DE TUBERÍA DE PVC SAL Ø 2" | 1d | 2026-06-26 | 2026-06-26 | 754 | 32d | 17.42 |
| 757 | 3.2.2.4.2 | SUMINISTRO E INSTALACION DE TUBERIA DE PVC SAL Ø 4" | 1d | 2026-06-26 | 2026-06-26 | 756SS | 33d | 36.82 |
| 758 | 3.2.2.5 | **SUMINISTRO E INSTALACION DE BIODIGESTOR** | 1d | 2026-06-27 | 2026-06-27 |  | 32d | 1,937.56 |
| 759 | 3.2.2.5.1 | SUMINISTRO E INSTALACION DE BIODIGESTOR Y ACCESORIOS (1300L) | 1d | 2026-06-27 | 2026-06-27 | 756 | 32d | 1,937.56 |
| 760 | 3.2.3 | **CAJA DE REGISTRO DE LODOS (0.80 x 0.80 m)** | 3d | 2026-06-25 | 2026-06-27 |  | 27d | 1,501.67 |
| 761 | 3.2.3.1 | **TRABAJOS PRELIMINARES** | 2d | 2026-06-25 | 2026-06-26 |  | 27d | 8.02 |
| 762 | 3.2.3.1.1 | LIMPIEZA Y DESBROCE DE TERRENO MANUAL | 1d | 2026-06-25 | 2026-06-25 | 747 | 27d | 1.08 |
| 763 | 3.2.3.1.2 | TRAZO Y REPLANTEO PRELIMINAR PARA ESTRUCTURAS | 1d | 2026-06-25 | 2026-06-25 | 762SS | 27d | 1.88 |
| 764 | 3.2.3.1.3 | TRAZO Y REPLANTEO DURANTE EL PROCESO PARA ESTRUCTURAS | 2d | 2026-06-25 | 2026-06-26 | 762SS | 33d | 5.06 |
| 765 | 3.2.3.2 | **MOVIMIENTO DE TIERRAS** | 3d | 2026-06-25 | 2026-06-27 |  | 27d | 75.62 |
| 766 | 3.2.3.2.1 | EXCAVACION MANUAL EN TERRENO NORMAL | 1d | 2026-06-25 | 2026-06-25 | 763SS | 27d | 38.69 |
| 767 | 3.2.3.2.2 | REFINE Y COMPACTACION DE FONDOS | 1d | 2026-06-25 | 2026-06-25 | 766SS | 27d | 3.08 |
| 768 | 3.2.3.2.3 | ACARREO Y ELIMINACION DE MAT. EXCEDENTE Dmax=30 m | 1d | 2026-06-27 | 2026-06-27 | 770 | 32d | 33.85 |
| 769 | 3.2.3.3 | **OBRAS DE CONCRETO ARMADO** | 1d | 2026-06-26 | 2026-06-26 |  | 27d | 667.27 |
| 770 | 3.2.3.3.1 | CONCRETO f'c=175 kg/cm2 EN MUROS | 1d | 2026-06-26 | 2026-06-26 | 771SS | 27d | 176.26 |
| 771 | 3.2.3.3.2 | ENCOFRADO Y DESENCOFRADO EN MUROS | 1d | 2026-06-26 | 2026-06-26 | 772SS | 27d | 420.57 |
| 772 | 3.2.3.3.3 | ACERO CORRUGADO f'y=4200 kg/cm2 G-60 | 1d | 2026-06-26 | 2026-06-26 | 767 | 27d | 70.44 |
| 773 | 3.2.3.4 | **REVOQUES, ENLUCIDOS** | 1d | 2026-06-27 | 2026-06-27 |  | 27d | 157.95 |
| 774 | 3.2.3.4.1 | TARRAJEO INTERIOR C/IMPERMEBILIZANTE MEZCLA C:A 1:2 C:A E=2.0 cm | 1d | 2026-06-27 | 2026-06-27 | 770 | 27d | 157.95 |
| 775 | 3.2.3.5 | **SUMINISTRO E INSTALACION DE ACCESORIOS** | 1d | 2026-06-27 | 2026-06-27 |  | 32d | 138.95 |
| 776 | 3.2.3.5.1 | SUMINISTRO E INSTALACION DE VÁLVULAS Y ACCESORIO DE Ø 2" | 1d | 2026-06-27 | 2026-06-27 | 774SS | 32d | 138.95 |

| ID | WBS | Task | Duration | Start | Finish | Predecessors | Total slack | Cost |
| --- | --- | --- | --- | --- | --- | --- | --- | --- |
| 777 | 3.2.3.6 | **CARPINTERIA METALICA** | 1d | 2026-06-27 | 2026-06-27 |  | 32d | 453.86 |
| 778 | 3.2.3.6.1 | SUMINISTRO E INST. DE TAPA METALICA DE 0.60 x 0.60 m e=1/8" INC. ACCESORIOS + PINTURA | 1d | 2026-06-27 | 2026-06-27 | 776SS | 32d | 453.86 |
| 779 | 3.2.4 | **POZO DE ABSORCION - DISPOSICION FINAL** | 5d | 2026-06-28 | 2026-07-02 |  | 27d | 3,513.67 |
| 780 | 3.2.4.1 | **TRABAJOS PRELIMINARES** | 1d | 2026-06-28 | 2026-06-28 |  | 27d | 39.44 |
| 781 | 3.2.4.1.1 | LIMPIEZA Y DESBROCE DE TERRENO MANUAL | 1d | 2026-06-28 | 2026-06-28 | 774 | 27d | 5.32 |
| 782 | 3.2.4.1.2 | TRAZO Y REPLANTEO PRELIMINAR PARA ESTRUCTURAS | 1d | 2026-06-28 | 2026-06-28 | 781SS | 27d | 9.23 |
| 783 | 3.2.4.1.3 | TRAZO Y REPLANTEO DURANTE EL PROCESO PARA ESTRUCTURAS | 1d | 2026-06-28 | 2026-06-28 | 781SS | 31d | 24.89 |
| 784 | 3.2.4.2 | **MOVIMIENTO DE TIERRAS** | 3d | 2026-06-29 | 2026-07-01 |  | 27d | 1,313.72 |
| 785 | 3.2.4.2.1 | EXCAVACION MANUAL EN TERRENO NORMAL | 1d | 2026-06-29 | 2026-06-29 | 782 | 27d | 418.8 |
| 786 | 3.2.4.2.2 | REFINE Y COMPACTACION DE FONDOS | 1d | 2026-06-29 | 2026-06-29 | 785SS | 27d | 41.65 |
| 787 | 3.2.4.2.3 | ACARREO Y ELIMINACION DE MAT. EXCEDENTE Dmax=30 m | 1d | 2026-07-01 | 2026-07-01 | 791 | 28d | 352.04 |
| 788 | 3.2.4.2.4 | RELLENO CON GRAVA GRUESA DE 1/2" | 1d | 2026-06-29 | 2026-06-29 | 786SS | 30d | 477.64 |
| 789 | 3.2.4.2.5 | RELLENO CON GRAVA GRUESA DE 2" | 1d | 2026-06-29 | 2026-06-29 | 786SS | 30d | 23.59 |
| 790 | 3.2.4.3 | **OBRAS DE CONCRETO SIMPLE** | 1d | 2026-06-30 | 2026-06-30 |  | 27d | 214.13 |
| 791 | 3.2.4.3.1 | CONCRETO f'c=175 kg/cm2 EN ANILLO DE CIMENTACION | 1d | 2026-06-30 | 2026-06-30 | 792SS | 27d | 120.86 |
| 792 | 3.2.4.3.2 | ENCOFRADO Y DESENCOFRADO EN ANILLO DE CIMENTACION | 1d | 2026-06-30 | 2026-06-30 | 786 | 27d | 93.27 |
| 793 | 3.2.4.4 | **OBRAS DE CONCRETO ARMADO** | 1d | 2026-07-01 | 2026-07-01 |  | 27d | 581.38 |
| 794 | 3.2.4.4.1 | CONCRETO f'c=175 kg/cm2 EN LOSA SUPERIOR | 1d | 2026-07-01 | 2026-07-01 | 795SS | 27d | 248.99 |
| 795 | 3.2.4.4.2 | ACERO CORRUGADO f'y=4200 kg/cm2 G-60 | 1d | 2026-07-01 | 2026-07-01 | 797SS | 27d | 332.39 |
| 796 | 3.2.4.5 | **ALBAÑILERIA** | 1d | 2026-07-01 | 2026-07-01 |  | 27d | 1,279.83 |
| 797 | 3.2.4.5.1 | MURO DE LADRILLO KK ARTESANAL DE CABEZA, C:A 1:4, e=1.50cm / PARA POZO PERCOLADOR e=5cm | 1d | 2026-07-01 | 2026-07-01 | 791 | 27d | 1,279.83 |
| 798 | 3.2.4.6 | **CARPINTERIA METALICA** | 1d | 2026-07-02 | 2026-07-02 |  | 27d | 46.82 |
| 799 | 3.2.4.6.1 | ASA DE FIERRO CORRUGADO Ø 3/8" | 1d | 2026-07-02 | 2026-07-02 | 801SS | 27d | 46.82 |
| 800 | 3.2.4.7 | **ACCESORIOS** | 1d | 2026-07-02 | 2026-07-02 |  | 27d | 38.35 |
| 801 | 3.2.4.7.1 | SUMINISTRO E INSTALACION DE TUBERIA DE PVC SAL Ø 4" | 1d | 2026-07-02 | 2026-07-02 | 794 | 27d | 17.42 |
| 802 | 3.2.4.7.2 | SUMINISTRO E INSTALACION DE TEE SANITARIA DE Ø 2" PVC SAL | 1d | 2026-07-02 | 2026-07-02 | 801SS | 27d | 20.93 |

| ID | WBS | Task | Duration | Start | Finish | Predecessors | Total slack | Cost |
| --- | --- | --- | --- | --- | --- | --- | --- | --- |
| 803 | 3.2.5 | **OBRAS EXTERIORES** | 5d | 2026-06-27 | 2026-07-01 |  | 28d | 1,141.48 |
| 804 | 3.2.5.1 | **TRABAJOS PRELIMINARES** | 4d | 2026-06-27 | 2026-06-30 |  | 28d | 34.2 |
| 805 | 3.2.5.1.1 | LIMPIEZA Y DESBROCE DE TERRENO MANUAL | 1d | 2026-06-27 | 2026-06-27 | 781FS-2d | 28d | 5.78 |
| 806 | 3.2.5.1.2 | TRAZO Y REPLANTEO PRELIMINAR EN LINEAS Y REDES | 1d | 2026-06-27 | 2026-06-27 | 805SS | 28d | 6.89 |
| 807 | 3.2.5.1.3 | TRAZO Y REPLANTEO DURANTE EL PROCESO EN LINEAS Y REDES | 3d | 2026-06-27 | 2026-06-29 | 805SS | 30d | 8.5 |
| 808 | 3.2.5.1.4 | LIMPIEZA Y DESBROCE DE TERRENO MANUAL | 1d | 2026-06-28 | 2026-06-28 | 806 | 28d | 1.76 |
| 809 | 3.2.5.1.5 | TRAZO Y REPLANTEO PRELIMINAR PARA ESTRUCTURAS | 1d | 2026-06-28 | 2026-06-28 | 808SS | 28d | 3.05 |
| 810 | 3.2.5.1.6 | TRAZO Y REPLANTEO DURANTE EL PROCESO PARA ESTRUCTURAS | 3d | 2026-06-28 | 2026-06-30 | 808SS | 29d | 8.22 |
| 811 | 3.2.5.2 | **MOVIMIENTO DE TIERRAS** | 3d | 2026-06-29 | 2026-07-01 |  | 28d | 220.63 |
| 812 | 3.2.5.2.1 | EXCAVACION MANUAL DE ZANJA P/TUB. T-NORMAL PROF. HASTA 0.60M | 1d | 2026-06-29 | 2026-06-29 | 806, 809 | 28d | 69.05 |
| 813 | 3.2.5.2.2 | REFINE Y NIVELACION DE ZANJAS T. NORMAL P/TUBERIA | 1d | 2026-06-29 | 2026-06-29 | 812SS | 28d | 5.34 |
| 814 | 3.2.5.2.3 | RELLENO COMPACTADO CON MATERIAL PROPIO SELECCIONADO | 1d | 2026-07-01 | 2026-07-01 | 819 | 28d | 89.01 |
| 815 | 3.2.5.2.4 | EXCAVACION MANUAL EN TERRENO NORMAL | 1d | 2026-06-30 | 2026-06-30 | 813 | 29d | 28.53 |
| 816 | 3.2.5.2.5 | REFINE Y COMPACTACION DE FONDOS | 1d | 2026-06-30 | 2026-06-30 | 815SS | 29d | 5 |
| 817 | 3.2.5.2.6 | ACARREO Y ELIMINACION DE MAT. EXCEDENTE Dmax=30 m | 1d | 2026-07-01 | 2026-07-01 | 819 | 28d | 23.7 |
| 818 | 3.2.5.3 | **OBRAS DE CONCRETO SIMPLE** | 1d | 2026-06-30 | 2026-06-30 |  | 28d | 29.98 |
| 819 | 3.2.5.3.1 | SOLADO f´c=100 Kg/cm2, e=5 cm | 1d | 2026-06-30 | 2026-06-30 | 813 | 28d | 29.98 |
| 820 | 3.2.5.4 | **REVOQUES, ENLUCIDOS** | 1d | 2026-07-01 | 2026-07-01 |  | 28d | 95.3 |
| 821 | 3.2.5.4.1 | TARRAJEO INTERIOR C/IMPERMEBILIZANTE MEZCLA C:A 1:2 C:A E=2.0 cm | 1d | 2026-07-01 | 2026-07-01 | 819 | 28d | 95.3 |
| 822 | 3.2.5.5 | **SUMINISTRO E INSTALACION DE TUBERIAS** | 1d | 2026-06-30 | 2026-06-30 |  | 29d | 95.58 |
| 823 | 3.2.5.5.1 | SUMINISTRO E INSTALACION DE TUBERÍA DE PVC SAL Ø 2" | 1d | 2026-06-30 | 2026-06-30 | 813 | 29d | 74.04 |
| 824 | 3.2.5.5.2 | SUMINISTRO E INSTALACION DE YEE DE Ø 2" PVC CLASE LIVIANA | 1d | 2026-06-30 | 2026-06-30 | 823SS | 29d | 21.54 |
| 825 | 3.2.5.6 | **SUMINISTRO E INSTALACION DE ACCESORIOS** | 1d | 2026-06-30 | 2026-06-30 |  | 29d | 665.79 |
| 826 | 3.2.5.6.1 | SUMINISTRO E INSTALACION DE CODO DE Ø 2"x 45° PVC CLASE LIVIANA | 1d | 2026-06-30 | 2026-06-30 | 823SS | 29d | 16.54 |
| 827 | 3.2.5.6.2 | SUMINISTRO E INSTALACION DE VÁLVULAS Y ACCESORIO DE Ø 2" | 1d | 2026-06-30 | 2026-06-30 | 826SS | 29d | 136.88 |
| 828 | 3.2.5.6.3 | SUMINISTRO E INSTALACION DE CAJA DE REGISTRO PREFABRICADO 0.40x0.70m | 1d | 2026-06-30 | 2026-06-30 | 826SS | 29d | 180.79 |
| 829 | 3.2.5.6.4 | SUMINISTRO E INSTALACION DE CAJA PREFABRICADO 0.50x0.80M TRAMPA DE NATAS Y SÓLIDOS | 1d | 2026-06-30 | 2026-06-30 | 826SS | 29d | 200.79 |
| 830 | 3.2.5.6.5 | SUMINISTRO E INSTALACION DE CAJA DE VÁLVULAS PREFABRICADO 0.60x0.60m | 1d | 2026-06-30 | 2026-06-30 | 826SS | 29d | 130.79 |

| ID | WBS | Task | Duration | Start | Finish | Predecessors | Total slack | Cost |
| --- | --- | --- | --- | --- | --- | --- | --- | --- |
| 831 | 3.3 | **UBS AH PARA I.E. PRIMARIA ( 01 und )** | 14d | 2026-06-23 | 2026-07-06 |  | 23d | 36,320.6 |
| 832 | 3.3.1 | **CASETA DE UBS PARA I..E.PRIMARIA (01 Und)** | 12d | 2026-06-23 | 2026-07-04 |  | 23d | 27,433.84 |
| 833 | 3.3.1.1 | **ESTRUCTURAS** | 7d | 2026-06-23 | 2026-06-29 |  | 23d | 5,380.8 |
| 834 | 3.3.1.1.1 | **TRABAJOS PRELIMINARES** | 4d | 2026-06-23 | 2026-06-26 |  | 23d | 85.19 |
| 835 | 3.3.1.1.1.1 | LIMPIEZA DE TERRENO MANUAL | 1d | 2026-06-23 | 2026-06-23 | 683 | 23d | 26.11 |
| 836 | 3.3.1.1.1.2 | TRAZO Y REPLANTEO INICIAL EN ESTRUCTURAS DE CASETA | 1d | 2026-06-23 | 2026-06-23 | 835SS | 23d | 13.89 |
| 837 | 3.3.1.1.1.3 | TRAZO Y REPLANTEO DURANTE PROCESO EN ESTRUCTURAS DE CASETA | 4d | 2026-06-23 | 2026-06-26 | 836SS | 33d | 45.19 |
| 838 | 3.3.1.1.2 | **MOVIMIENTO DE TIERRAS** | 4d | 2026-06-24 | 2026-06-27 |  | 23d | 690.38 |
| 839 | 3.3.1.1.2.1 | EXCAVACION MANUAL EN TERRENO NORMAL | 1d | 2026-06-24 | 2026-06-24 | 836 | 23d | 282.42 |
| 840 | 3.3.1.1.2.2 | NIVELACION INTERIOR Y APISONADO (MANUAL) | 1d | 2026-06-24 | 2026-06-24 | 839SS | 23d | 94.64 |
| 841 | 3.3.1.1.2.3 | RELLENO CON MATERIAL PROPIO SELECCIONADO | 1d | 2026-06-27 | 2026-06-27 | 844 | 32d | 126.47 |
| 842 | 3.3.1.1.2.4 | ACARREO Y ELIMINACION DE MAT. EXCEDENTE Dmax=30 m | 1d | 2026-06-26 | 2026-06-26 | 846 | 33d | 186.85 |
| 843 | 3.3.1.1.3 | **OBRAS DE CONCRETO SIMPLE** | 4d | 2026-06-25 | 2026-06-28 |  | 24d | 1,851.26 |
| 844 | 3.3.1.1.3.1 | CONCRETO EN CIMIENTOS C:H 1:10+30% PG | 1d | 2026-06-26 | 2026-06-26 | 846 | 31d | 1,103.88 |
| 845 | 3.3.1.1.3.2 | CONCRETO EN SOBRECIMIENTOS C:H 1:8+25% PM | 1d | 2026-06-28 | 2026-06-28 | 847 | 31d | 177.82 |
| 846 | 3.3.1.1.3.3 | SOLADO f'c=100 Kg/cm2, e=10 cm | 1d | 2026-06-25 | 2026-06-25 | 840 | 31d | 67.89 |
| 847 | 3.3.1.1.3.4 | ENCOFRADO Y DESENCOFRADO PARA SOBRECIMIENTOS | 1d | 2026-06-27 | 2026-06-27 | 844 | 31d | 404.03 |
| 848 | 3.3.1.1.3.5 | CONCRETO f'c=175 kg/cm2 EN FALSA COLUMNA | 1d | 2026-06-26 | 2026-06-26 | 849SS | 33d | 10.07 |
| 849 | 3.3.1.1.3.6 | ENCOFRADO Y DESENCOFRADO PARA FALSA COLUMNA | 1d | 2026-06-26 | 2026-06-26 | 858FS-1d | 23d | 87.57 |
| 850 | 3.3.1.1.4 | **OBRAS DE CONCRETO ARMADO** | 3d | 2026-06-27 | 2026-06-29 |  | 23d | 2,753.97 |
| 851 | 3.3.1.1.4.1 | CONCRETO f'c=175 kg/cm2 EN COLUMNAS | 1d | 2026-06-28 | 2026-06-28 | 853SS | 23d | 212.34 |
| 852 | 3.3.1.1.4.2 | CONCRETO f'c=175 kg/cm2 EN VIGAS | 1d | 2026-06-29 | 2026-06-29 | 854SS | 23d | 214.29 |
| 853 | 3.3.1.1.4.3 | ENCOFRADO Y DESENCOFRADO EN COLUMNAS | 1d | 2026-06-28 | 2026-06-28 | 855FS-2d | 23d | 665.26 |
| 854 | 3.3.1.1.4.4 | ENCOFRADO Y DESENCOFRADO EN VIGAS | 1d | 2026-06-29 | 2026-06-29 | 851 | 23d | 403.47 |
| 855 | 3.3.1.1.4.5 | ACERO CORRUGADO f'y=4200 kg/cm2 G-60 EN CASETA DE UBS | 3d | 2026-06-27 | 2026-06-29 | 849 | 23d | 1,258.61 |

| ID | WBS | Task | Duration | Start | Finish | Predecessors | Total slack | Cost |
| --- | --- | --- | --- | --- | --- | --- | --- | --- |
| 856 | 3.3.1.2 | **ARQUITECTURA** | 9d | 2026-06-25 | 2026-07-03 |  | 23d | 15,732.3 |
| 857 | 3.3.1.2.1 | **MUROS Y TABIQUES DE ALBAÑILERIA** | 2d | 2026-06-25 | 2026-06-26 |  | 23d | 2,535.08 |
| 858 | 3.3.1.2.1.1 | MURO DE LADRILLO KK 18 HUECOS DE SOGA , C:A 1:4, e=1.50 cm | 2d | 2026-06-25 | 2026-06-26 | 840 | 23d | 2,535.08 |
| 859 | 3.3.1.2.2 | **REVOQUES Y ENLUCIDOS** | 1d | 2026-06-30 | 2026-06-30 |  | 23d | 3,166.89 |
| 860 | 3.3.1.2.2.1 | TARRAJEO DE MUROS INTERIORES C/IMPERMEABILIZANTE Y CEMENTO PULIDO C:A=1:5, e =1.5 cm. | 1d | 2026-06-30 | 2026-06-30 | 852 | 23d | 774.24 |
| 861 | 3.3.1.2.2.2 | TARRAJEO INTERIOR DE MURO CEMENTO FROTACHADO C:A=1:5, e =1.5 cm. | 1d | 2026-06-30 | 2026-06-30 | 860SS | 29d | 684.25 |
| 862 | 3.3.1.2.2.3 | TARRAJEO EXTERIOR MEZCLA C:A 1:4, e=1.5 cm | 1d | 2026-06-30 | 2026-06-30 | 860SS | 29d | 613.72 |
| 863 | 3.3.1.2.2.4 | TARRAJEO EXTERIOR EN COLUMNAS Y VIGAS / ACABADO FR0TACHADO E=1.5CM | 1d | 2026-06-30 | 2026-06-30 | 860SS | 29d | 477.24 |
| 864 | 3.3.1.2.2.5 | BRUÑA 1 cm. | 1d | 2026-06-30 | 2026-06-30 | 860SS | 23d | 617.44 |
| 865 | 3.3.1.2.3 | **ZOCALOS Y CONTRAZOCALOS** | 1d | 2026-07-01 | 2026-07-01 |  | 28d | 78.55 |
| 866 | 3.3.1.2.3.1 | CONTRAZOCALO EXTERIOR C/CEMENTO PULIDO C:A=1:4, e =1.5 cm. | 1d | 2026-07-01 | 2026-07-01 | 864 | 28d | 78.55 |
| 867 | 3.3.1.2.4 | **PISOS Y PAVIMENTOS** | 2d | 2026-07-01 | 2026-07-02 |  | 23d | 1,510.46 |
| 868 | 3.3.1.2.4.1 | CONCRETO F'C=175 KG/CM2 PARA PISO E=0.10 M ACABADO Y PULIDO COLOREADO | 1d | 2026-07-01 | 2026-07-01 | 870SS | 28d | 294.85 |
| 869 | 3.3.1.2.4.2 | CONCRETO F'C=175 KG/CM2 PARA VEREDA, E=0.10 M | 1d | 2026-07-01 | 2026-07-01 | 870SS | 23d | 641.96 |
| 870 | 3.3.1.2.4.3 | ENCOFRADO Y DESENCOFRADO PARA VEREDAS | 1d | 2026-07-01 | 2026-07-01 | 864 | 23d | 220.47 |
| 871 | 3.3.1.2.4.4 | JUNTAS CON TEKNOPORT DE E=1" | 1d | 2026-07-02 | 2026-07-02 | 869 | 27d | 151.42 |
| 872 | 3.3.1.2.4.5 | BRUÑA 1 cm. | 1d | 2026-07-02 | 2026-07-02 | 869 | 27d | 172.86 |
| 873 | 3.3.1.2.4.6 | JUNTAS ASFALTICAS EN VEREDAS E=1" | 1d | 2026-07-02 | 2026-07-02 | 869 | 23d | 28.9 |
| 874 | 3.3.1.2.5 | **COBERTURAS** | 1d | 2026-07-01 | 2026-07-01 |  | 28d | 3,418.8 |
| 875 | 3.3.1.2.5.1 | COBERTURA METALICA DE CALAMINA ALUZINC TR4 E=0.40MM | 1d | 2026-07-01 | 2026-07-01 | 860 | 28d | 934.18 |
| 876 | 3.3.1.2.5.2 | VIGA DE TUBO RECTANGULAR METALICO 2"x3"x10´ | 1d | 2026-07-01 | 2026-07-01 | 875SS | 28d | 1,168.82 |
| 877 | 3.3.1.2.5.3 | CORREAS DE TUBO CUADRADO METALICO 2"x2"x10´ | 1d | 2026-07-01 | 2026-07-01 | 875SS | 28d | 1,315.8 |
| 878 | 3.3.1.2.6 | **CARPINTERIA METALICA** | 1d | 2026-07-03 | 2026-07-03 |  | 26d | 3,182.82 |
| 879 | 3.3.1.2.6.1 | PUERTA METALICA (0.80m x 2.15m), CON MARCO METALICO | 1d | 2026-07-03 | 2026-07-03 | 873 | 26d | 2,471.97 |
| 880 | 3.3.1.2.6.2 | VENTANA METALICA V-1 (0.50x0.80m) CON VIDRIO 6MM | 1d | 2026-07-03 | 2026-07-03 | 879SS | 26d | 710.85 |

| ID | WBS | Task | Duration | Start | Finish | Predecessors | Total slack | Cost |
| --- | --- | --- | --- | --- | --- | --- | --- | --- |
| 881 | 3.3.1.2.7 | **CERRAJERIA** | 1d | 2026-07-03 | 2026-07-03 |  | 26d | 640.8 |
| 882 | 3.3.1.2.7.1 | CERROJO DE FIERRO DE 2" PARA PUERTA DE UBS | 1d | 2026-07-03 | 2026-07-03 | 879SS | 26d | 56.97 |
| 883 | 3.3.1.2.7.2 | BISAGRA PARA PUERTA DE 3"x3" | 1d | 2026-07-03 | 2026-07-03 | 879SS | 26d | 272.43 |
| 884 | 3.3.1.2.7.3 | SUMINISTRO E INSTALACION DE ANGULO DE 2X2cm CON PERNOS DE 1/4"x4" | 1d | 2026-07-03 | 2026-07-03 | 879SS | 26d | 311.4 |
| 885 | 3.3.1.2.8 | **PINTURA** | 1d | 2026-07-03 | 2026-07-03 |  | 25d | 1,198.9 |
| 886 | 3.3.1.2.8.1 | PINTURA LATEX EN INTERIORES C/IMPERMEABILIZANTE (DOS MANOS) | 1d | 2026-07-03 | 2026-07-03 | 873 | 25d | 568.43 |
| 887 | 3.3.1.2.8.2 | PINTURA LATEX EN EXTERIORES (DOS MANOS) | 1d | 2026-07-03 | 2026-07-03 | 886SS | 26d | 596.87 |
| 888 | 3.3.1.2.8.3 | PINTURA ESMALTE EN EXTERIORES DE CONTRAZOCALOS | 1d | 2026-07-03 | 2026-07-03 | 886SS | 25d | 33.6 |
| 889 | 3.3.1.3 | **INSTALACIONES SANITARIAS** | 8d | 2026-06-27 | 2026-07-04 |  | 25d | 4,514.37 |
| 890 | 3.3.1.3.1 | **SISTEMA DE DESAGUE** | 1d | 2026-06-27 | 2026-06-27 |  | 32d | 1,430.13 |
| 891 | 3.3.1.3.1.1 | SUMINISTRO E INST. DE SALIDA DE TUBERIA DE VENTILACION PVC SAL 2" | 1d | 2026-06-27 | 2026-06-27 | 858 | 32d | 130.12 |
| 892 | 3.3.1.3.1.2 | SUMINISTRO E INST. DE SALIDA PVC P/INODORO Ø4" | 1d | 2026-06-27 | 2026-06-27 | 891SS | 32d | 205.23 |
| 893 | 3.3.1.3.1.3 | SUMINISTRO E INST. DE SALIDA PVC P/SUMIDERO Ø2" | 1d | 2026-06-27 | 2026-06-27 | 891SS | 32d | 295.74 |
| 894 | 3.3.1.3.1.4 | SUMINISTRO E INST. DE SALIDA PVC P/RR Ø2" | 1d | 2026-06-27 | 2026-06-27 | 891SS | 32d | 93.87 |
| 895 | 3.3.1.3.1.5 | SUMINISTRO E INST. DE SALIDA PVC P/RR Ø4" | 1d | 2026-06-27 | 2026-06-27 | 891SS | 32d | 67.68 |
| 896 | 3.3.1.3.1.6 | SUMINISTRO E INST. DE SALIDA PVC P/LAVAMANOS Ø2" | 1d | 2026-06-27 | 2026-06-27 | 891SS | 32d | 212.73 |
| 897 | 3.3.1.3.1.7 | SUMINISTRO E INST. DE SALIDA PVC P/LAVADERO MULTIUSO Ø2" | 1d | 2026-06-27 | 2026-06-27 | 891SS | 32d | 163.94 |
| 898 | 3.3.1.3.1.8 | SUMINISTRO E INST. DE TUBERIA Y ACCESORIOS DE Ø4" Y Ø2" | 1d | 2026-06-27 | 2026-06-27 | 891SS | 32d | 260.82 |
| 899 | 3.3.1.3.2 | **APARATOS Y ACCESORIOS SANITARIOS** | 1d | 2026-07-04 | 2026-07-04 |  | 25d | 2,438.13 |
| 900 | 3.3.1.3.2.1 | SUMINISTRO E INSTALACION DE INODORO TANQUE BAJO BLANCO | 1d | 2026-07-04 | 2026-07-04 | 888 | 25d | 1,275.87 |
| 901 | 3.3.1.3.2.2 | SUMINISTRO E INSTALACION DE LAVATORIO TIPO FONTANA DE LOSA VITRIFICADA INC. ACCESORIOS | 1d | 2026-07-04 | 2026-07-04 | 900SS | 25d | 855.72 |
| 902 | 3.3.1.3.2.3 | SUMIN. E INST. DE GRIFO PARA LAVADERO | 1d | 2026-07-04 | 2026-07-04 | 900SS | 25d | 306.54 |
| 903 | 3.3.1.3.3 | **SISTEMA DE AGUA FRÍA** | 1d | 2026-06-27 | 2026-06-27 |  | 32d | 646.11 |
| 904 | 3.3.1.3.3.1 | SUMINISTRO E INST. SALIDA PVC P/INODORO Ø1/2" | 1d | 2026-06-27 | 2026-06-27 | 858 | 32d | 166.95 |
| 905 | 3.3.1.3.3.2 | SUMININISTRO E INST. SALIDA PVC P/LAVATORIO Ø1/2 | 1d | 2026-06-27 | 2026-06-27 | 904SS | 32d | 166.95 |
| 906 | 3.3.1.3.3.3 | SUMINISTRO E INST. DE TUBERIA Y ACCESORIOS DE RED INTERNA AGUA | 1d | 2026-06-27 | 2026-06-27 | 904SS | 32d | 272.19 |
| 907 | 3.3.1.3.3.4 | PRUEBA HIDRAULICA Y DESINFECCION DE LA TUBERIA | 1d | 2026-06-27 | 2026-06-27 | 904SS | 32d | 40.02 |

| ID | WBS | Task | Duration | Start | Finish | Predecessors | Total slack | Cost |
| --- | --- | --- | --- | --- | --- | --- | --- | --- |
| 908 | 3.3.1.4 | **INSTALACIONES ELECTRICAS** | 1d | 2026-06-27 | 2026-06-27 |  | 32d | 1,806.37 |
| 909 | 3.3.1.4.1 | SUMINISTRO E INSTALACIÓN DE TUBERIA PVC-P DE Ø 20 mm | 1d | 2026-06-27 | 2026-06-27 | 858 | 32d | 86.04 |
| 910 | 3.3.1.4.2 | SUMINISTRO E INSTALACIÓN DE CABLE 2.5 MM2 THW | 1d | 2026-06-27 | 2026-06-27 | 909SS | 32d | 620.88 |
| 911 | 3.3.1.4.3 | SALIDA PARA INTERRUPTOR SIMPLE | 1d | 2026-06-27 | 2026-06-27 | 909SS | 32d | 420.36 |
| 912 | 3.3.1.4.4 | SALIDA DE TECHO PARA CENTRO DE LUZ | 1d | 2026-06-27 | 2026-06-27 | 909SS | 32d | 588.55 |
| 913 | 3.3.1.4.5 | SUMINISTRO E INSTALACION DE TABLERO ELECTRICO (INC. CAJAS Y ACCESORIOS) | 1d | 2026-06-27 | 2026-06-27 | 909SS | 32d | 90.54 |
| 914 | 3.3.2 | **BIODIGESTOR 1300 LTS PARA I.E. PRIMARIA (01 Und.)** | 5d | 2026-06-30 | 2026-07-04 |  | 23d | 2,756.44 |
| 915 | 3.3.2.1 | **TRABAJOS PRELIMINARES** | 3d | 2026-06-30 | 2026-07-02 |  | 23d | 50.8 |
| 916 | 3.3.2.1.1 | LIMPIEZA Y DESBROCE DE TERRENO MANUAL | 1d | 2026-06-30 | 2026-06-30 | 873FS-3d | 23d | 5.85 |
| 917 | 3.3.2.1.2 | TRAZO Y REPLANTEO PRELIMINAR PARA ESTRUCTURAS | 1d | 2026-06-30 | 2026-06-30 | 916SS | 23d | 12.16 |
| 918 | 3.3.2.1.3 | TRAZO Y REPLANTEO DURANTE EL PROCESO PARA ESTRUCTURAS | 3d | 2026-06-30 | 2026-07-02 | 916SS | 27d | 32.79 |
| 919 | 3.3.2.2 | **MOVIMIENTO DE TIERRAS** | 3d | 2026-07-01 | 2026-07-03 |  | 23d | 498.07 |
| 920 | 3.3.2.2.1 | EXCAVACION MANUAL EN TERRENO NORMAL | 1d | 2026-07-01 | 2026-07-01 | 917 | 23d | 259.69 |
| 921 | 3.3.2.2.2 | REFINE Y COMPACTACION DE FONDOS | 1d | 2026-07-01 | 2026-07-01 | 920SS | 23d | 7.46 |
| 922 | 3.3.2.2.3 | RELLENO COMPACTADO CON MATERIAL PROPIO SELECCIONADO | 1d | 2026-07-03 | 2026-07-03 | 925 | 25d | 122.6 |
| 923 | 3.3.2.2.4 | ACARREO Y ELIMINACION DE MAT. EXCEDENTE Dmax=30 m | 1d | 2026-07-03 | 2026-07-03 | 922SS | 26d | 108.32 |
| 924 | 3.3.2.3 | **OBRAS DE CONCRETO SIMPLE** | 1d | 2026-07-02 | 2026-07-02 |  | 23d | 220.12 |
| 925 | 3.3.2.3.1 | SOLADO f'c=100 Kg/cm2, e=10 cm | 1d | 2026-07-02 | 2026-07-02 | 921 | 23d | 220.12 |
| 926 | 3.3.2.4 | **SUMINISTRO E INSTALACION DE TUBERIAS** | 1d | 2026-07-04 | 2026-07-04 |  | 25d | 49.89 |
| 927 | 3.3.2.4.1 | SUMINISTRO E INSTALACION DE TUBERÍA DE PVC SAL Ø 2" | 1d | 2026-07-04 | 2026-07-04 | 928SS | 25d | 13.07 |
| 928 | 3.3.2.4.2 | SUMINISTRO E INSTALACION DE TUBERIA DE PVC SAL Ø 4" | 1d | 2026-07-04 | 2026-07-04 | 930SS | 25d | 36.82 |
| 929 | 3.3.2.5 | **SUMINISTRO E INSTALACION DE BIODIGESTOR** | 1d | 2026-07-04 | 2026-07-04 |  | 25d | 1,937.56 |
| 930 | 3.3.2.5.1 | SUMINISTRO E INSTALACION DE BIODIGESTOR Y ACCESORIOS (1300L) | 1d | 2026-07-04 | 2026-07-04 | 922 | 25d | 1,937.56 |
| 931 | 3.3.3 | **CAJA DE REGISTRO DE LODOS (0.80 x 0.80 m)** | 4d | 2026-07-03 | 2026-07-06 |  | 23d | 1,501.67 |
| 932 | 3.3.3.1 | **TRABAJOS PRELIMINARES** | 3d | 2026-07-03 | 2026-07-05 |  | 23d | 8.02 |
| 933 | 3.3.3.1.1 | LIMPIEZA Y DESBROCE DE TERRENO MANUAL | 1d | 2026-07-03 | 2026-07-03 | 925 | 23d | 1.08 |
| 934 | 3.3.3.1.2 | TRAZO Y REPLANTEO PRELIMINAR PARA ESTRUCTURAS | 1d | 2026-07-03 | 2026-07-03 | 933SS | 23d | 1.88 |
| 935 | 3.3.3.1.3 | TRAZO Y REPLANTEO DURANTE EL PROCESO PARA ESTRUCTURAS | 3d | 2026-07-03 | 2026-07-05 | 933SS | 24d | 5.06 |

| ID | WBS | Task | Duration | Start | Finish | Predecessors | Total slack | Cost |
| --- | --- | --- | --- | --- | --- | --- | --- | --- |
| 936 | 3.3.3.2 | **MOVIMIENTO DE TIERRAS** | 3d | 2026-07-04 | 2026-07-06 |  | 23d | 75.62 |
| 937 | 3.3.3.2.1 | EXCAVACION MANUAL EN TERRENO NORMAL | 1d | 2026-07-04 | 2026-07-04 | 934 | 23d | 38.69 |
| 938 | 3.3.3.2.2 | REFINE Y COMPACTACION DE FONDOS | 1d | 2026-07-04 | 2026-07-04 | 937SS | 23d | 3.08 |
| 939 | 3.3.3.2.3 | ACARREO Y ELIMINACION DE MAT. EXCEDENTE Dmax=30 m | 1d | 2026-07-06 | 2026-07-06 | 941 | 23d | 33.85 |
| 940 | 3.3.3.3 | **OBRAS DE CONCRETO ARMADO** | 1d | 2026-07-05 | 2026-07-05 |  | 23d | 667.27 |
| 941 | 3.3.3.3.1 | CONCRETO f'c=175 kg/cm2 EN MUROS | 1d | 2026-07-05 | 2026-07-05 | 942SS | 23d | 176.26 |
| 942 | 3.3.3.3.2 | ENCOFRADO Y DESENCOFRADO EN MUROS | 1d | 2026-07-05 | 2026-07-05 | 943SS | 23d | 420.57 |
| 943 | 3.3.3.3.3 | ACERO CORRUGADO f'y=4200 kg/cm2 G-60 | 1d | 2026-07-05 | 2026-07-05 | 938 | 23d | 70.44 |
| 944 | 3.3.3.4 | **REVOQUES, ENLUCIDOS** | 1d | 2026-07-06 | 2026-07-06 |  | 23d | 157.95 |
| 945 | 3.3.3.4.1 | TARRAJEO INTERIOR C/IMPERMEBILIZANTE MEZCLA C:A 1:2 C:A E=2.0 cm | 1d | 2026-07-06 | 2026-07-06 | 941 | 23d | 157.95 |
| 946 | 3.3.3.5 | **SUMINISTRO E INSTALACION DE ACCESORIOS** | 1d | 2026-07-06 | 2026-07-06 |  | 23d | 138.95 |
| 947 | 3.3.3.5.1 | SUMINISTRO E INSTALACION DE VÁLVULAS Y ACCESORIO DE Ø 2" | 1d | 2026-07-06 | 2026-07-06 | 941 | 23d | 138.95 |
| 948 | 3.3.3.6 | **CARPINTERIA METALICA** | 1d | 2026-07-06 | 2026-07-06 |  | 23d | 453.86 |
| 949 | 3.3.3.6.1 | SUMINISTRO E INST. DE TAPA METALICA DE 0.60 x 0.60 m e=1/8" INC. ACCESORIOS + PINTURA | 1d | 2026-07-06 | 2026-07-06 | 941 | 23d | 453.86 |
| 950 | 3.3.4 | **POZO DE ABSORCION - DISPOSICION FINAL** | 5d | 2026-07-02 | 2026-07-06 |  | 23d | 3,487.17 |
| 951 | 3.3.4.1 | **TRABAJOS PRELIMINARES** | 3d | 2026-07-02 | 2026-07-04 |  | 23d | 39.44 |
| 952 | 3.3.4.1.1 | LIMPIEZA Y DESBROCE DE TERRENO MANUAL | 1d | 2026-07-02 | 2026-07-02 | 938FS-3d | 23d | 5.32 |
| 953 | 3.3.4.1.2 | TRAZO Y REPLANTEO PRELIMINAR PARA ESTRUCTURAS | 1d | 2026-07-02 | 2026-07-02 | 952SS | 23d | 9.23 |
| 954 | 3.3.4.1.3 | TRAZO Y REPLANTEO DURANTE EL PROCESO PARA ESTRUCTURAS | 3d | 2026-07-02 | 2026-07-04 | 952SS | 25d | 24.89 |
| 955 | 3.3.4.2 | **MOVIMIENTO DE TIERRAS** | 3d | 2026-07-03 | 2026-07-05 |  | 23d | 1,287.22 |
| 956 | 3.3.4.2.1 | EXCAVACION MANUAL EN TERRENO NORMAL | 1d | 2026-07-03 | 2026-07-03 | 953 | 23d | 418.8 |
| 957 | 3.3.4.2.2 | REFINE Y COMPACTACION DE FONDOS | 1d | 2026-07-03 | 2026-07-03 | 956SS | 23d | 15.15 |
| 958 | 3.3.4.2.3 | ACARREO Y ELIMINACION DE MAT. EXCEDENTE Dmax=30 m | 1d | 2026-07-05 | 2026-07-05 | 959 | 24d | 352.04 |
| 959 | 3.3.4.2.4 | RELLENO CON GRAVA GRUESA DE 1/2" | 1d | 2026-07-04 | 2026-07-04 | 962SS | 23d | 477.64 |
| 960 | 3.3.4.2.5 | RELLENO CON GRAVA GRUESA DE 2" | 1d | 2026-07-04 | 2026-07-04 | 959SS | 25d | 23.59 |

| ID | WBS | Task | Duration | Start | Finish | Predecessors | Total slack | Cost |
| --- | --- | --- | --- | --- | --- | --- | --- | --- |
| 961 | 3.3.4.3 | **OBRAS DE CONCRETO SIMPLE** | 1d | 2026-07-04 | 2026-07-04 |  | 23d | 214.13 |
| 962 | 3.3.4.3.1 | CONCRETO f'c=175 kg/cm2 EN ANILLO DE CIMENTACION | 1d | 2026-07-04 | 2026-07-04 | 963SS | 23d | 120.86 |
| 963 | 3.3.4.3.2 | ENCOFRADO Y DESENCOFRADO EN ANILLO DE CIMENTACION | 1d | 2026-07-04 | 2026-07-04 | 957 | 23d | 93.27 |
| 964 | 3.3.4.4 | **OBRAS DE CONCRETO ARMADO** | 1d | 2026-07-06 | 2026-07-06 |  | 23d | 581.38 |
| 965 | 3.3.4.4.1 | CONCRETO f'c=175 kg/cm2 EN LOSA SUPERIOR | 1d | 2026-07-06 | 2026-07-06 | 966SS | 23d | 248.99 |
| 966 | 3.3.4.4.2 | ACERO CORRUGADO f'y=4200 kg/cm2 G-60 | 1d | 2026-07-06 | 2026-07-06 | 968 | 23d | 332.39 |
| 967 | 3.3.4.5 | **ALBAÑILERIA** | 1d | 2026-07-05 | 2026-07-05 |  | 23d | 1,279.83 |
| 968 | 3.3.4.5.1 | MURO DE LADRILLO KK ARTESANAL DE CABEZA, C:A 1:4, e=1.50cm / PARA POZO PERCOLADOR e=5cm | 1d | 2026-07-05 | 2026-07-05 | 959 | 23d | 1,279.83 |
| 969 | 3.3.4.6 | **CARPINTERIA METALICA** | 1d | 2026-07-06 | 2026-07-06 |  | 23d | 46.82 |
| 970 | 3.3.4.6.1 | ASA DE FIERRO CORRUGADO Ø 3/8" | 1d | 2026-07-06 | 2026-07-06 | 972SS | 23d | 46.82 |
| 971 | 3.3.4.7 | **ACCESORIOS** | 1d | 2026-07-06 | 2026-07-06 |  | 23d | 38.35 |
| 972 | 3.3.4.7.1 | SUMINISTRO E INSTALACION DE TUBERIA DE PVC SAL Ø 2" | 1d | 2026-07-06 | 2026-07-06 | 973SS | 23d | 17.42 |
| 973 | 3.3.4.7.2 | SUMINISTRO E INSTALACION DE TEE SANITARIA DE Ø 2" PVC SAL | 1d | 2026-07-06 | 2026-07-06 | 968 | 23d | 20.93 |
| 974 | 3.3.5 | **OBRAS EXTERIORES** | 6d | 2026-06-29 | 2026-07-04 |  | 25d | 1,141.48 |
| 975 | 3.3.5.1 | **TRABAJOS PRELIMINARES** | 4d | 2026-06-29 | 2026-07-02 |  | 25d | 34.2 |
| 976 | 3.3.5.1.1 | LIMPIEZA Y DESBROCE DE TERRENO MANUAL | 1d | 2026-06-29 | 2026-06-29 | 916FS-2d | 25d | 5.78 |
| 977 | 3.3.5.1.2 | TRAZO Y REPLANTEO PRELIMINAR EN LINEAS Y REDES | 1d | 2026-06-29 | 2026-06-29 | 976SS | 25d | 6.89 |
| 978 | 3.3.5.1.3 | TRAZO Y REPLANTEO DURANTE EL PROCESO EN LINEAS Y REDES | 3d | 2026-06-29 | 2026-07-01 | 976SS | 28d | 8.5 |
| 979 | 3.3.5.1.4 | LIMPIEZA Y DESBROCE DE TERRENO MANUAL | 1d | 2026-06-30 | 2026-06-30 | 977 | 25d | 1.76 |
| 980 | 3.3.5.1.5 | TRAZO Y REPLANTEO PRELIMINAR PARA ESTRUCTURAS | 1d | 2026-06-30 | 2026-06-30 | 979SS | 25d | 3.05 |
| 981 | 3.3.5.1.6 | TRAZO Y REPLANTEO DURANTE EL PROCESO PARA ESTRUCTURAS | 3d | 2026-06-30 | 2026-07-02 | 979SS | 27d | 8.22 |
| 982 | 3.3.5.2 | **MOVIMIENTO DE TIERRAS** | 3d | 2026-07-01 | 2026-07-03 |  | 25d | 220.63 |
| 983 | 3.3.5.2.1 | EXCAVACION MANUAL DE ZANJA P/TUB. T-NORMAL PROF. HASTA 0.60M | 1d | 2026-07-01 | 2026-07-01 | 977, 980 | 25d | 69.05 |
| 984 | 3.3.5.2.2 | REFINE Y NIVELACION DE ZANJAS T. NORMAL P/TUBERIA | 1d | 2026-07-01 | 2026-07-01 | 983SS | 25d | 5.34 |
| 985 | 3.3.5.2.3 | RELLENO COMPACTADO CON MATERIAL PROPIO SELECCIONADO | 1d | 2026-07-02 | 2026-07-02 | 990SS | 25d | 89.01 |
| 986 | 3.3.5.2.4 | EXCAVACION MANUAL EN TERRENO NORMAL | 1d | 2026-07-01 | 2026-07-01 | 980 | 25d | 28.53 |
| 987 | 3.3.5.2.5 | REFINE Y COMPACTACION DE FONDOS | 1d | 2026-07-01 | 2026-07-01 | 986SS | 25d | 5 |
| 988 | 3.3.5.2.6 | ACARREO Y ELIMINACION DE MAT. EXCEDENTE Dmax=30 m | 1d | 2026-07-03 | 2026-07-03 | 985 | 26d | 23.7 |

| ID | WBS | Task | Duration | Start | Finish | Predecessors | Total slack | Cost |
| --- | --- | --- | --- | --- | --- | --- | --- | --- |
| 989 | 3.3.5.3 | **OBRAS DE CONCRETO SIMPLE** | 1d | 2026-07-02 | 2026-07-02 |  | 25d | 29.98 |
| 990 | 3.3.5.3.1 | SOLADO f´c=100 Kg/cm2, e=5 cm | 1d | 2026-07-02 | 2026-07-02 | 984, 987 | 25d | 29.98 |
| 991 | 3.3.5.4 | **REVOQUES, ENLUCIDOS** | 1d | 2026-07-03 | 2026-07-03 |  | 25d | 95.3 |
| 992 | 3.3.5.4.1 | TARRAJEO INTERIOR C/IMPERMEBILIZANTE MEZCLA C:A 1:2 C:A E=2.0 cm | 1d | 2026-07-03 | 2026-07-03 | 985 | 25d | 95.3 |
| 993 | 3.3.5.5 | **SUMINISTRO E INSTALACION DE TUBERIAS** | 1d | 2026-07-04 | 2026-07-04 |  | 25d | 95.58 |
| 994 | 3.3.5.5.1 | SUMINISTRO E INSTALACION DE TUBERÍA DE PVC SAL Ø 2" | 1d | 2026-07-04 | 2026-07-04 | 992 | 25d | 74.04 |
| 995 | 3.3.5.5.2 | SUMINISTRO E INSTALACION DE YEE DE Ø 2" PVC CLASE LIVIANA | 1d | 2026-07-04 | 2026-07-04 | 994SS | 25d | 21.54 |
| 996 | 3.3.5.6 | **SUMINISTRO E INSTALACION DE ACCESORIOS** | 1d | 2026-07-04 | 2026-07-04 |  | 25d | 665.79 |
| 997 | 3.3.5.6.1 | SUMINISTRO E INSTALACION DE CODO DE Ø 2"x 45° PVC CLASE LIVIANA | 1d | 2026-07-04 | 2026-07-04 | 994SS | 25d | 16.54 |
| 998 | 3.3.5.6.2 | SUMINISTRO E INSTALACION DE VÁLVULAS Y ACCESORIO DE Ø 2" | 1d | 2026-07-04 | 2026-07-04 | 997SS | 25d | 136.88 |
| 999 | 3.3.5.6.3 | SUMINISTRO E INSTALACION DE CAJA DE REGISTRO PREFABRICADO 0.40x0.70m | 1d | 2026-07-04 | 2026-07-04 | 997SS | 25d | 180.79 |
| 1000 | 3.3.5.6.4 | SUMINISTRO E INSTALACION DE CAJA PREFABRICADO 0.50x0.80M TRAMPA DE NATAS Y SÓLIDOS | 1d | 2026-07-04 | 2026-07-04 | 997SS | 25d | 200.79 |
| 1001 | 3.3.5.6.5 | SUMINISTRO E INSTALACION DE CAJA DE VÁLVULAS PREFABRICADO 0.60x0.60m | 1d | 2026-07-04 | 2026-07-04 | 997SS | 25d | 130.79 |
| 1002 | 3.4 | **FLETE SANEAMIENTO** | 21d | 2026-06-11 | 2026-07-01 |  | 28d | 13,828.97 |
| 1003 | 3.4.1 | FLETE TERRESTRE SANEAMIENTO | 10d | 2026-06-11 | 2026-07-01 | 192 | 28d | 13,828.97 |
| 1004 | 4 | **PLAN MITIGACION AMBIENTAL** | 89d | 2026-05-02 | 2026-07-29 |  |  | 16,498.96 |
| 1005 | 4.1 | **SEGURIDAD Y SALUD** | 79d | 2026-05-02 | 2026-07-19 |  | 10d | 4,627.46 |
| 1006 | 4.1.1 | ELABORACION, IMPLEMENTACION Y ADMINISTRACION DEL PLAN DE SEGURIDAD Y SALUD EN EL TRABAJO | 2d | 2026-05-02 | 2026-05-03 | 5 | 10d | 246 |
| 1007 | 4.1.2 | EQUIPOS DE PROTECCION PERSONAL | 70d | 2026-05-04 | 2026-07-12 | 1006 | 10d | 2,460 |
| 1008 | 4.1.3 | SEÑALIZACION TEMPORAL DE SEGURIDAD | 60d | 2026-05-04 | 2026-07-02 | 1007SS | 10d | 1,388.5 |
| 1009 | 4.1.4 | RECURSOS PARA RESPUESTAS ANTE EMERGENCIAS EN SEGURIDAD Y SALUD EN OBRA | 13d | 2026-05-04 | 2026-07-19 | 1008SS | 10d | 296 |
| 1010 | 4.1.5 | MATERIALES PARA CHARLAS EN SEGURIDAD Y SALUD EN EL TRABAJO | 10d | 2026-05-04 | 2026-05-13 | 1009SS | 77d | 236.96 |
| 1011 | 4.2 | **MITIGACION AMBIENTAL** | 87d | 2026-05-04 | 2026-07-29 |  |  | 11,871.5 |
| 1012 | 4.2.1 | **PROGRAMA DE MITIGACION AMBIENTAL** | 87d | 2026-05-04 | 2026-07-29 |  |  | 2,854 |
| 1013 | 4.2.1.1 | SERVICIO DE ALQUILER DE BAÑO | 1d | 2026-05-04 | 2026-05-04 | 1006 | 47d | 900 |
| 1014 | 4.2.1.2 | HUMEDECIMIENTO DE TERRENO Y AGREGADOS PARA EVITAR GENERAR POLVO | 15d | 2026-05-04 | 2026-06-12 | 1013SS | 47d | 1,500 |
| 1015 | 4.2.1.3 | PLANTULAS | 1d | 2026-07-29 | 2026-07-29 | 1028 |  | 300 |
| 1016 | 4.2.1.4 | CAPACITACION AMBIENTAL | 10d | 2026-05-04 | 2026-05-13 | 1014SS | 77d | 154 |

| ID | WBS | Task | Type | Duration | Start | Finish | Predecessors | Total slack | Cost |
| --- | --- | --- | --- | --- | --- | --- | --- | --- | --- |
| 1017 | 4.2.2 | **MANEJO DE RESIDUOS SOLIDOS** |  | 4d | 2026-05-05 | 2026-05-08 |  | 79d | 1,400 |
| 1018 | 4.2.2.1 | INSTALACION DE CONTENEDORES NO PELIGROSOS PARA FRENTE DE TRABAJO |  | 2d | 2026-05-05 | 2026-05-06 | 1013 | 79d | 1,200 |
| 1019 | 4.2.2.2 | INSTALACION DE CONTENEDORES PELIGROSOS PARA FRENTE DE TRABAJO |  | 2d | 2026-05-07 | 2026-05-08 | 1018 | 79d | 200 |
| 1020 | 4.2.3 | **PROGRAMA DE SEGUIMIENTO Y CONTROL AMBIENTAL** |  | 3d | 2026-05-09 | 2026-05-11 |  | 79d | 4,750 |
| 1021 | 4.2.3.1 | MONITOREO DE CALIDAD DE AIRE |  | 3d | 2026-05-09 | 2026-05-11 | 1019 | 79d | 2,300 |
| 1022 | 4.2.3.2 | MONITOREO DEL AGUA |  | 3d | 2026-05-09 | 2026-05-11 | 1021SS | 79d | 1,500 |
| 1023 | 4.2.3.3 | MONITOREO DE RUIDO AMBIENTAL |  | 3d | 2026-05-09 | 2026-05-11 | 1022SS | 79d | 400 |
| 1024 | 4.2.3.4 | MONITOREO DE CALIDAD DE SUELO |  | 3d | 2026-05-09 | 2026-05-11 | 1023SS | 79d | 550 |
| 1025 | 4.2.4 | **ETAPA DE CIERRE DE LA EJECUCION DE OBRA** |  | 4d | 2026-07-26 | 2026-07-29 |  |  | 2,867.5 |
| 1026 | 4.2.4.1 | DESMONTAJE DE OBRAS PROVISIONALES |  | 2d | 2026-07-26 | 2026-07-27 | 658 |  | 495 |
| 1027 | 4.2.4.2 | MANEJO DE RESIDUOS DE OBRA |  | 1d | 2026-07-28 | 2026-07-28 | 1026 |  | 1,000 |
| 1028 | 4.2.4.3 | REPOSICIÓN DE PATIOS DE MANIOBRA |  | 1d | 2026-07-28 | 2026-07-28 | 1027FS-1d |  | 750 |
| 1029 | 4.2.4.4 | LIMPIEZA FINAL |  | 1d | 2026-07-29 | 2026-07-29 | 1028 |  | 622.5 |
| 1030 | 5 | CULMINACION DE OBRA | milestone | 0d | 2026-07-29 | 2026-07-29 | 1029 |  |  |
